# Programa FCC II 2025 Rev 5 19-6 FALTA AFINAR PEM Y DETALLES

Schedule from MS Project, 2025-07-14 to 2025-08-16, 24 hours a day.

## Calendars

- CATA 24X7: Mon-Fri 09:00-13:00, 15:00-19:00; Sat-Sun off. Exceptions (off unless hours are given): 2025-07-14 to 2025-08-30 00:00-23:59 ([Sin nombre]).

## Schedule

| ID | WBS | Task | Type | Duration | Start | Finish | Predecessors | Baseline start | Baseline finish | Baseline duration | Total slack | Free slack |
| --- | --- | --- | --- | --- | --- | --- | --- | --- | --- | --- | --- | --- |
| 1 | 1 | **CRACKING CATALITICO II** |  | 33.94d | 2025-07-14 00:00 | 2025-08-16 23:02 |  |  |  |  | 0d |  |
| 2 | 1.1 | **PARO DE UNIDAD** |  | 3.75d | 2025-07-14 00:00 | 2025-07-17 18:00 |  | 2005-05-15 00:00 | 2005-05-15 00:00 | 0eh | 0d |  |
| 3 | 1.1.1 | INICIO DEL PARO DE UNIDAD |  | 1eh | 2025-07-14 00:00 | 2025-07-14 01:00 |  |  |  |  | 0d |  |
| 4 | 1.1.2 | BAJADA DE CARGA |  | 5eh | 2025-07-14 01:00 | 2025-07-14 06:00 | 3 |  |  |  | 0d |  |
| 5 | 1.1.3 | COLOCAR BC LB |  | 89eh | 2025-07-14 00:00 | 2025-07-17 17:00 | 3SS |  |  |  | 0.21d | 0d |
| 6 | 1.1.4 | ENTREGA DE EQUIP.GRAL. |  | 1eh | 2025-07-17 17:00 | 2025-07-17 18:00 | 5 |  |  |  | 0.21d | 0d |
| 7 | 1.2 | **MANTENIMIENTO** |  | 28.69d | 2025-07-15 06:00 | 2025-08-12 23:02 |  | 2005-05-15 00:00 | 2005-06-06 12:00 | 22.5d | 0d |  |
| 8 | 1.2.1 | **ZONA DE REACCION** |  | 28.69d | 2025-07-15 06:00 | 2025-08-12 23:02 |  |  |  |  | 0d |  |
| 9 | 1.2.1.1 | BC 48" | milestone | 12eh | 2025-07-15 06:00 | 2025-07-15 18:00 | 4FS+24eh |  |  |  | 0d |  |
| 10 | 1.2.1.2 | COLOCAR BC RX RG |  | 36eh | 2025-07-15 06:00 | 2025-07-16 18:00 | 9SS |  |  |  | 0d |  |
| 11 | 1.2.1.3 | **D-672 REGENERADOR** |  | 24.48d | 2025-07-15 06:00 | 2025-08-08 18:00 |  |  |  |  | 3.29d |  |
| 12 | 1.2.1.3.1 | RETIRAR ESPARRAGO POR MEDIO PH PLENUM |  | 6eh | 2025-07-15 06:00 | 2025-07-15 12:00 | 10SS | 2005-05-15 00:00 | 2005-05-15 06:00 | 6eh | 17.38d | 1.25d |
| 13 | 1.2.1.3.2 | RETIRAR ESPARRAGO POR MEDIO PH CICLONES Y STRIPPER |  | 6eh | 2025-07-15 06:00 | 2025-07-15 12:00 | 10SS |  |  |  | 3.54d | 1.25d |
| 14 | 5 | RETIRAR 4x1 ESPARRAGOS PH 96" |  | 12eh | 2025-07-15 06:00 | 2025-07-15 18:00 | 10SS | 2005-05-15 00:00 | 2005-05-15 08:00 | 8eh | 3.29d | 1d |
| 15 | 1.2.1.3.4 | RETIRAR ESPARRAGO POR MEDIO PH BAJO GRILLA |  | 12eh | 2025-07-15 06:00 | 2025-07-15 18:00 | 10SS |  |  |  | 10.21d | 0d |
| 16 | 1.2.1.3.5 | **PLENUM** |  | 19.65d | 2025-07-16 18:00 | 2025-08-05 10:00 |  | 2005-05-15 00:00 | 2005-05-15 00:00 | 0eh | 5.62d |  |
| 17 | 1.2.1.3.5.1 | APERTURA DE PH |  | 4eh | 2025-07-16 18:00 | 2025-07-16 22:00 | 12, 110, 10 |  |  |  | 16.13d | 0d |
| 18 | 1.2.1.3.5.2 | ROTURA DE TAPONES DE PH |  | 6eh | 2025-07-16 22:00 | 2025-07-17 04:00 | 17 |  |  |  | 16.13d | 0d |
| 19 | 1.2.1.3.5.3 | VENTILACION |  | 18eh | 2025-07-17 04:00 | 2025-07-17 22:00 | 18 | 2005-05-15 06:00 | 2005-05-15 18:00 | 12eh | 16.13d | 0d |
| 20 | 1.2.1.3.5.4 | MONTAR ACCESO E ILUMINACIÓN |  | 4eh | 2025-07-17 22:00 | 2025-07-18 02:00 | 19 | 2005-05-15 06:00 | 2005-05-15 10:00 | 4eh | 16.13d | 0d |
| 21 | 1.2.1.3.5.5 | MONTAR ACCESO A MANGA |  | 10eh | 2025-07-18 02:00 | 2025-07-18 12:00 | 20 | 2005-05-15 18:00 | 2005-05-16 10:00 | 16eh | 16.13d | 0d |
| 22 | 1.2.1.3.5.6 | INSPECCION VEE/PROCESOS |  | 8eh | 2025-07-18 12:00 | 2025-07-18 20:00 | 21 |  |  |  | 16.13d | 0d |
| 23 | 1.2.1.3.5.7 | **REPARAR REFRACTARIO PLENUM** |  | 17.57d | 2025-07-18 20:00 | 2025-08-05 10:00 |  |  |  |  | 5.62d |  |
| 24 | 1.2.1.3.5.7.1 | ROTURA Y CORTE DE MALLA |  | 36eh | 2025-07-18 20:00 | 2025-07-20 08:00 | 22 |  |  |  | 16.13d | 0d |
| 25 | 1.2.1.3.5.7.2 | DEMOLER ANTIEROSIVO Y AISLANTE |  | 18eh | 2025-07-20 08:00 | 2025-07-21 02:00 | 24 |  |  |  | 16.13d | 0d |
| 26 | 1.2.1.3.5.7.3 | LIMPIEZA Y SOLDADURA DE ANCLAJES/STUD BOLT |  | 24eh | 2025-07-21 02:00 | 2025-07-22 02:00 | 25 |  |  |  | 16.13d | 0d |
| 27 | 1.2.1.3.5.7.4 | GUNITAR ANTIEROSIVO F 2125 |  | 6eh | 2025-07-22 02:00 | 2025-07-22 08:00 | 26 |  |  |  | 16.13d | 0d |
| 28 | 1.2.1.3.5.7.5 | GUNITAR REFRACTARIO AISLANTE |  | 6eh | 2025-07-22 08:00 | 2025-07-22 14:00 | 27 |  |  |  | 16.13d | 0d |
| 29 | 1.2.1.3.5.7.6 | PRESENTAR Y SOLDAR MALLA |  | 24eh | 2025-07-22 14:00 | 2025-07-23 14:00 | 28 |  |  |  | 16.13d | 0d |
| 30 | 1.2.1.3.5.7.7 | APLICAR ANTIEROSIVO F 12L |  | 18eh | 2025-07-23 14:00 | 2025-07-24 08:00 | 29 |  |  |  | 16.13d | 0d |
| 31 | 1.2.1.3.5.7.8 | INSPECCIÓN VEE/CAUSEWAY |  | 4eh | 2025-07-24 08:00 | 2025-07-24 12:00 | 30 |  |  |  | 16.13d | 0d |
| 32 | 1.2.1.3.5.7.9 | LIMPIEZA |  | 6eh | 2025-07-24 12:00 | 2025-07-24 18:00 | 31 |  |  |  | 16.13d | 0d |
| 33 | 1.2.1.3.5.7.10 | RECEPCIÓN OPERACIONES/PROCESOS |  | 6eh | 2025-07-24 18:00 | 2025-07-25 00:00 | 32 |  |  |  | 16.13d | 0d |
| 34 | 1.2.1.3.5.7.11 | RETIRAR ACCESO |  | 6eh | 2025-07-25 00:00 | 2025-07-25 06:00 | 33 |  |  |  | 16.13d | 10.5d |
| 35 | 1.2.1.3.5.7.12 | TAPAR PH |  | 16eh | 2025-08-04 18:00 | 2025-08-05 10:00 | 73, 34 |  |  |  | 5.63d |  |

Notes:
- 23: REFRACTARIO PLENUM: PAREDES CON DOBLE CAPA Y TECHO CON 2125 / CONTEMPLA REPARACIONES EN MANGA HACIA C-671/672

| ID | WBS | Task | Duration | Start | Finish | Predecessors | Baseline start | Baseline finish | Baseline duration | Total slack | Free slack |
| --- | --- | --- | --- | --- | --- | --- | --- | --- | --- | --- | --- |
| 36 | 1.2.1.3.5.8 | **REPARAR CICLONES SECUNDARIOS 4** | 17.57d | 2025-07-18 20:00 | 2025-08-05 10:00 |  |  |  |  | 5.62d |  |
| 37 | 1.2.1.3.5.8.1 | ROTURA Y CORTE DE MALLA | 36eh | 2025-07-18 20:00 | 2025-07-20 08:00 | 22 |  |  |  | 16.38d | 0d |
| 38 | 1.2.1.3.5.8.2 | LIMPIEZA DE SUPERFICIE | 48eh | 2025-07-20 08:00 | 2025-07-22 08:00 | 37 |  |  |  | 16.38d | 0.25d |
| 39 | 1.2.1.3.5.8.3 | PRESENTAR Y SOLDAR MALLA | 24eh | 2025-07-22 14:00 | 2025-07-23 14:00 | 28, 38 |  |  |  | 16.13d | 0d |
| 40 | 1.2.1.3.5.8.4 | APLICAR ANTIEROSIVO F 12L | 18eh | 2025-07-23 14:00 | 2025-07-24 08:00 | 39 |  |  |  | 16.13d | 0d |
| 41 | 1.2.1.3.5.8.5 | INSPECCIÓN VEE/CAUSEWAY | 4eh | 2025-07-24 08:00 | 2025-07-24 12:00 | 40 |  |  |  | 16.13d | 0d |
| 42 | 1.2.1.3.5.8.6 | LIMPIEZA | 6eh | 2025-07-24 12:00 | 2025-07-24 18:00 | 41 |  |  |  | 16.13d | 0d |
| 43 | 1.2.1.3.5.8.7 | RECEPCIÓN OPERACIONES/PROCESOS | 6eh | 2025-07-24 18:00 | 2025-07-25 00:00 | 42 |  |  |  | 16.13d | 0d |
| 44 | 1.2.1.3.5.8.8 | RETIRAR ACCESO | 6eh | 2025-07-25 00:00 | 2025-07-25 06:00 | 43 |  |  |  | 16.13d | 10.5d |
| 45 | 1.2.1.3.5.8.9 | TAPAR PH | 16eh | 2025-08-04 18:00 | 2025-08-05 10:00 | 44, 73 |  |  |  | 5.63d |  |
| 46 | 1.2.1.3.6 | **ENVOLVENTE RG (96")** | 22.98d | 2025-07-16 18:00 | 2025-08-08 18:00 |  | 2005-05-15 00:00 | 2005-05-15 00:00 | 0eh | 2.29d |  |
| 47 | 1.2.1.3.6.1 | APERTURA PHs 96" y 24" | 12eh | 2025-07-16 18:00 | 2025-07-17 06:00 | 14, 13, 111, 112, 10 |  |  |  | 2.29d | 0d |
| 48 | 1.2.1.3.6.2 | VENTILACION | 24eh | 2025-07-17 06:00 | 2025-07-18 06:00 | 47 | 2005-05-15 12:00 | 2005-05-16 00:00 | 12eh | 2.29d | 0d |
| 49 | 1.2.1.3.6.3 | MONTAR ACCESO PH96 | 10eh | 2025-07-18 06:00 | 2025-07-18 16:00 | 48 | 2005-05-15 18:00 | 2005-05-16 00:00 | 6eh | 2.29d | 0d |
| 50 | 1.2.1.3.6.4 | RETIRAR CATALIZADOR GRILLA | 26eh | 2025-07-18 16:00 | 2025-07-19 18:00 | 49 |  |  |  | 2.29d | 0d |
| 51 | 1.2.1.3.6.5 | PRIMERA INSPECCIÓN PROCESOS/INSPECCIÓN | 4eh | 2025-07-18 16:00 | 2025-07-18 20:00 | 49 |  |  |  | 10.96d | 0d |
| 52 | 1.2.1.3.6.6 | TAPAR GRILLA SELLO HACIA ABAJO GRILLA | 6eh | 2025-07-18 20:00 | 2025-07-19 02:00 | 51 |  |  |  | 10.96d | 0.67d |
| 53 | 1.2.1.3.6.7 | MONTAR ANDAMIO COMPLETO E ILUMINACIÓN | 30eh | 2025-07-19 18:00 | 2025-07-21 00:00 | 50 | 2005-05-16 00:00 | 2005-05-16 20:00 | 20eh | 2.29d | 0d |
| 54 | 1.2.1.3.6.8 | INSPECCION DE REFRACTARIO | 12eh | 2025-07-21 00:00 | 2025-07-21 12:00 | 53 |  |  |  | 11.71d | 0d |
| 55 | 1.2.1.3.6.9 | MODIFICAR ANDAMIO Y COLOCAR "SELLO" | 8eh | 2025-07-21 12:00 | 2025-07-21 20:00 | 54 |  |  |  | 11.71d | 0d |
| 56 | 1.2.1.3.6.10 | DEMOLER DEFRACTARIO (20m2) | 36eh | 2025-07-21 20:00 | 2025-07-23 08:00 | 55 |  |  |  | 11.71d | 0d |
| 57 | 1.2.1.3.6.11 | SOLDAR ANCLAJES | 24eh | 2025-07-23 08:00 | 2025-07-24 08:00 | 56 |  |  |  | 11.71d | 0d |
| 58 | 1.2.1.3.6.12 | GUNITAR REFRACTARIO AISLANTE | 36eh | 2025-07-24 08:00 | 2025-07-25 20:00 | 57 |  |  |  | 11.71d | 0d |
| 59 | 1.2.1.3.6.13 | CAMBIO DE SPARGER | 24eh | 2025-07-25 20:00 | 2025-07-26 20:00 | 58 |  |  |  | 14.38d | 12.08d |
| 60 | 1.2.1.3.6.14 | CAMBIO DE COMPUERTAS (8) | 48eh | 2025-07-25 20:00 | 2025-07-27 20:00 | 58 |  |  |  | 11.71d | 9.42d |

Notes:
- 36: REPARACIONES EN CICLONES DESDE PLANUM
- 53: Andamio completo en envolvente para inspeccion
- 56: estimacion 10m2 por cada frente de demolicion
- 58: se estima por frente colocar 14 m2. / en 2010 se realizo virolar de 1,3mts de alturax 22mts de perimetro, en 15 hs inclutendo la limpieza, con dos maquinas.

| ID | WBS | Task | Duration | Start | Finish | Predecessors | Total slack | Free slack |
| --- | --- | --- | --- | --- | --- | --- | --- | --- |
| 61 | 1.2.1.3.6.15 | **ENVOLVENTE SUPERIOR/CICLONES PRIMARIOS 4** | 16.07d | 2025-07-21 00:00 | 2025-08-06 02:00 |  | 2.29d |  |
| 62 | 1.2.1.3.6.15.1 | ARMAR ANDAMIO EN CICLONES PRIMARIOS | 24eh | 2025-07-21 00:00 | 2025-07-22 00:00 | 53 | 2.29d | 0d |
| 63 | 1.2.1.3.6.15.2 | INSPECCION CICLONES INTERNO/EXTERNO | 38eh | 2025-07-22 00:00 | 2025-07-23 14:00 | 62 | 2.29d | 0d |
| 64 | 1.2.1.3.6.15.3 | DESMONTAJE DE BOCINAS (4) | 30eh | 2025-07-23 14:00 | 2025-07-24 20:00 | 63 | 2.29d | 0d |
| 65 | 1.2.1.3.6.15.4 | DESMONTAR ESCUDOS (8) | 36eh | 2025-07-21 00:00 | 2025-07-22 12:00 | 53 | 25.46d |  |
| 66 | 1.2.1.3.6.15.5 | MONTAR BOCINAS-SOLD.-REFRACTA | 70eh | 2025-07-24 20:00 | 2025-07-27 18:00 | 64 | 2.29d | 0d |
| 67 | 1.2.1.3.6.15.6 | MONTAR ESCUDOS | 48eh | 2025-07-25 20:00 | 2025-07-27 20:00 | 66SS+24eh | 20.13d |  |
| 68 | 1.2.1.3.6.15.7 | CEPILLAR COSTURAS DE SOPORTERIA | 70eh | 2025-07-21 00:00 | 2025-07-23 22:00 | 53 | 21.54d | 0d |
| 69 | 1.2.1.3.6.15.8 | REPARACION DE SOPORTERIA | 60eh | 2025-07-23 22:00 | 2025-07-26 10:00 | 68 | 21.54d |  |
| 70 | 1.2.1.3.6.15.9 | DEMOLER DEFRACTARIO (20m2) | 36eh | 2025-07-21 20:00 | 2025-07-23 08:00 | 55 | 12.29d | 0d |
| 71 | 1.2.1.3.6.15.10 | SOLDAR ANCLAJES | 24eh | 2025-07-23 08:00 | 2025-07-24 08:00 | 70 | 12.29d | 0d |
| 72 | 1.2.1.3.6.15.11 | GUNITAR REFRACTARIO AISLANTE | 36eh | 2025-07-24 08:00 | 2025-07-25 20:00 | 71 | 12.29d | 0d |
| 73 | 1.2.1.3.6.15.12 | REPARACION INTERNA DE CICLONES | 192eh | 2025-07-27 18:00 | 2025-08-04 18:00 | 66 | 2.29d | 0d |
| 74 | 1.2.1.3.6.15.13 | INSPECCION VEE Y PROCESOS | 12eh | 2025-08-04 18:00 | 2025-08-05 06:00 | 73 | 2.29d | 0d |
| 75 | 1.2.1.3.6.15.14 | DESMONTAR ACCESOS A CICLONES | 8eh | 2025-08-05 06:00 | 2025-08-05 14:00 | 74 | 2.29d | 0d |
| 76 | 1.2.1.3.6.15.15 | LIMPIEZA INSPECCION ENVOLVENTE Y SOPORTERÍA | 18eh | 2025-07-25 20:00 | 2025-07-26 14:00 | 72 | 12.29d | 10d |
| 77 | 1.2.1.3.6.15.16 | DESMONTAR ANDAMIO Y SELLO HASTA STAND PIPE | 12eh | 2025-08-05 14:00 | 2025-08-06 02:00 | 75, 76, 74 | 2.29d | 0d |
| 78 | 1.2.1.3.6.16 | RECEPCIÓN PROCESOS OPERACIONES STAND PIPE Y VÁLVULAS | 4eh | 2025-08-06 02:00 | 2025-08-06 06:00 | 77 | 2.29d | 0d |
| 79 | 1.2.1.3.6.17 | BAJAR ANDAMIO | 14eh | 2025-08-06 06:00 | 2025-08-06 20:00 | 78, 60 | 2.29d | 0d |
| 80 | 1.2.1.3.6.18 | CALAFATEAR CONTORNO DE GRILLA | 12eh | 2025-08-06 20:00 | 2025-08-07 08:00 | 79 | 2.29d | 0d |
| 81 | 1.2.1.3.6.19 | LIMPIEZA FINAL DE GRILLA RETIRO DE ACCESO | 14eh | 2025-08-07 08:00 | 2025-08-07 22:00 | 80, 79 | 2.29d | 0d |
| 82 | 1.2.1.3.6.20 | CERRAR PH 96" RG | 20eh | 2025-08-07 22:00 | 2025-08-08 18:00 | 81, 59 | 2.29d |  |
| 83 | 1.2.1.3.6.21 | **BAJO GRILLA** | 14.99d | 2025-07-16 18:00 | 2025-07-31 18:00 |  | 10.29d |  |
| 84 | 1.2.1.3.6.21.1 | ABRIR PH | 2d | 2025-07-16 18:00 | 2025-07-18 18:02 | 10, 15 | 11.28d | 1d |
| 85 | 1.2.1.3.6.21.2 | DESMONTAR QUEMADOR | 16eh | 2025-07-16 18:00 | 2025-07-17 10:00 | 10 | 21.29d | 0d |
| 86 | 1.2.1.3.6.21.3 | REALIZAR LIMPIEZA BAJO GRILLA | 36eh | 2025-07-19 18:00 | 2025-07-21 06:00 | 84, 50, 52 | 10.29d | 0d |
| 87 | 1.2.1.3.6.21.4 | INSPECCION | 12eh | 2025-07-21 06:00 | 2025-07-21 18:00 | 86 | 10.29d | 0d |
| 88 | 1.2.1.3.6.21.5 | REPARAR QUEMADOR | 72eh | 2025-07-17 10:00 | 2025-07-20 10:00 | 85 | 21.29d | 11d |
| 89 | 1.2.1.3.6.21.6 | ROTURA DE REFRACTARIO | 60eh | 2025-07-21 18:00 | 2025-07-24 06:00 | 87 | 10.29d | 0d |
| 90 | 1.2.1.3.6.21.7 | CAMBIO DE LADRILLOS | 24eh | 2025-07-24 06:00 | 2025-07-25 06:00 | 89 | 11.79d | 1.5d |
| 91 | 1.2.1.3.6.21.8 | SOLDADURA DE ANCLAJES | 36eh | 2025-07-24 06:00 | 2025-07-25 18:00 | 89 | 10.29d | 0d |
| 92 | 1.2.1.3.6.21.9 | LIMPIEZA Y CEPILLADO DE COSTURAS | 24eh | 2025-07-25 18:00 | 2025-07-26 18:00 | 91 | 10.29d | 0d |
| 93 | 1.2.1.3.6.21.10 | INSPECCION Y END | 12eh | 2025-07-26 18:00 | 2025-07-27 06:00 | 92, 90 | 10.29d | 0d |
| 94 | 1.2.1.3.6.21.11 | REPARACION DE SOPORTES Y ESCUDO | 60eh | 2025-07-27 06:00 | 2025-07-29 18:00 | 93 | 10.29d | 0d |
| 95 | 1.2.1.3.6.21.12 | GUNITADO REFRACTARIO | 36eh | 2025-07-29 18:00 | 2025-07-31 06:00 | 94 | 10.29d | 0d |
| 96 | 1.2.1.3.6.21.13 | INSPECCIÓN PROCESOS y VEE | 4eh | 2025-07-31 06:00 | 2025-07-31 10:00 | 94, 95 | 10.29d | 0d |
| 97 | 1.2.1.3.6.21.14 | MONTAR QUEMADOR | 8eh | 2025-07-31 10:00 | 2025-07-31 18:00 | 88, 96 | 10.29d |  |
| 98 | 1.2.1.3.6.21.15 | CERRAR PH | 8eh | 2025-07-31 10:00 | 2025-07-31 18:00 | 96 | 10.29d |  |

Notes:
- 70: SE ESTIMAN 7 M2 POR TURNO
- 80: SE DEBERÁ TENER CHAPA PARA CAJON

| ID | WBS | Task | Duration | Start | Finish | Predecessors | Baseline start | Baseline finish | Baseline duration | Total slack | Free slack |
| --- | --- | --- | --- | --- | --- | --- | --- | --- | --- | --- | --- |
| 99 | 1.2.1.3.6.22 | **STAND PIPE** | 6.58d | 2025-07-21 00:00 | 2025-07-27 14:00 |  | 2005-05-15 00:00 | 2005-05-15 00:00 | 0eh | 8.29d |  |
| 100 | 1.2.1.3.6.22.1 | MONTAR AND. STAND PIPE | 12eh | 2025-07-21 00:00 | 2025-07-21 12:00 | 53 | 2005-05-17 12:00 | 2005-05-17 20:00 | 8eh | 8.29d | 0d |
| 101 | 1.2.1.3.6.22.2 | INSPECCION | 4eh | 2025-07-21 12:00 | 2025-07-21 16:00 | 100 | 2005-05-17 20:00 | 2005-05-18 02:00 | 6eh | 8.29d | 0d |
| 102 | 1.2.1.3.6.22.3 | ROTURA REFRACTARIO | 40eh | 2025-07-21 16:00 | 2025-07-23 08:00 | 101 | 2005-05-18 02:00 | 2005-05-19 14:00 | 36eh | 9.63d | 0d |
| 103 | 1.2.1.3.6.22.4 | REPELADO ANCLAJES | 30eh | 2025-07-23 08:00 | 2025-07-24 14:00 | 102 | 2005-05-19 14:00 | 2005-05-20 14:00 | 24eh | 9.63d | 0d |
| 104 | 1.2.1.3.6.22.5 | SOLDADURA ANCLAJES | 24eh | 2025-07-24 14:00 | 2025-07-25 14:00 | 103 | 2005-05-20 14:00 | 2005-05-21 14:00 | 24eh | 9.63d | 0d |
| 105 | 1.2.1.3.6.22.6 | HORMIGONADO | 24eh | 2025-07-25 14:00 | 2025-07-26 14:00 | 104 | 2005-05-21 14:00 | 2005-05-23 02:00 | 36eh | 9.63d | 0d |
| 106 | 1.2.1.3.6.22.7 | LIMPIEZA | 10eh | 2025-07-26 14:00 | 2025-07-27 00:00 | 105 |  |  |  | 9.63d | 0d |
| 107 | 1.2.1.3.6.22.8 | INSPECCION | 4eh | 2025-07-27 00:00 | 2025-07-27 04:00 | 106 |  |  |  | 9.63d | 0d |
| 108 | 1.2.1.3.6.22.9 | DESMONTAR ANDAMIO | 10eh | 2025-07-27 04:00 | 2025-07-27 14:00 | 107 |  |  |  | 9.63d | 1.33d |
| 109 | 1.2.1.4 | **D-671 REACTOR** | 26.77d | 2025-07-15 06:00 | 2025-08-11 01:02 |  |  |  |  | 0d |  |
| 110 | 1.2.1.4.1 | RETIRAR ESPARRAGO POR MEDIO PH PLENUM | 6eh | 2025-07-15 06:00 | 2025-07-15 12:00 | 10SS | 2005-05-15 00:00 | 2005-05-15 06:00 | 6eh | 17.38d | 1.25d |
| 111 | 1.2.1.4.2 | RETIRAR ESPARRAGO POR MEDIO PH CICLONES | 6eh | 2025-07-15 06:00 | 2025-07-15 12:00 | 10SS |  |  |  | 1.25d |  |
| 112 | 5 | RETIRAR 4x1 ESPARRAGOS PH 96" | 12eh | 2025-07-15 06:00 | 2025-07-15 18:00 | 10SS | 2005-05-15 00:00 | 2005-05-15 08:00 | 8eh | 1d |  |
| 113 | 1.2.1.4.4 | **ENVOLVENTE** | 25.27d | 2025-07-16 18:00 | 2025-08-11 01:02 |  |  |  |  | 0d |  |
| 114 | 1.2.1.4.4.1 | ABRIR PH 96" | 12eh | 2025-07-16 18:00 | 2025-07-17 06:00 | 112, 9, 10 |  |  |  | 0d |  |
| 115 | 1.2.1.4.4.2 | ABRIR PH 24 | 6eh | 2025-07-16 18:00 | 2025-07-17 00:00 | 111, 9, 10 |  |  |  | 0d |  |
| 116 | 1.2.1.4.4.3 | DEMOLER TAPÓN PH 24 | 6eh | 2025-07-17 00:00 | 2025-07-17 06:00 | 115 |  |  |  | 0d |  |
| 117 | 1.2.1.4.4.4 | VENTILACION | 24eh | 2025-07-17 06:00 | 2025-07-18 06:00 | 116, 114 |  |  |  | 0d |  |
| 118 | 1.2.1.4.4.5 | ARMAR ACCESO | 8eh | 2025-07-18 06:00 | 2025-07-18 14:00 | 117 |  |  |  | 0d |  |
| 119 | 1.2.1.4.4.6 | INSPECCIÓN PROCESOS | 4eh | 2025-07-18 14:00 | 2025-07-18 18:00 | 118 |  |  |  | 0d |  |
| 120 | 1.2.1.4.4.7 | COLOCAR SELLO CONTRA STRIPPER | 6eh | 2025-07-18 18:00 | 2025-07-19 00:00 | 119 |  |  |  | 0d |  |
| 121 | 1.2.1.4.4.8 | ARMAR ANDAMIO E ILUMINACIÓN | 30eh | 2025-07-19 00:00 | 2025-07-20 06:00 | 120 |  |  |  | 0d |  |
| 122 | 1.2.1.4.4.9 | RETIRO DE CARBON | 60eh | 2025-07-20 06:00 | 2025-07-22 18:00 | 121 |  |  |  | 1.54d | 0d |
| 123 | 1.2.1.4.4.10 | MODIFICAR ANDAMIO Y LIMPIEZA | 12eh | 2025-07-22 18:00 | 2025-07-23 06:00 | 122 |  |  |  | 1.54d | 0d |
| 124 | 1.2.1.4.4.11 | INSPECCION | 24eh | 2025-07-23 06:00 | 2025-07-24 06:00 | 123 |  |  |  | 1.54d | 0d |
| 125 | 1.2.1.4.4.12 | DEMOLER REFRACTARIO (20M2) | 60eh | 2025-07-24 06:00 | 2025-07-26 18:00 | 124 |  |  |  | 1.54d | 0d |
| 126 | 1.2.1.4.4.13 | LIMPIEZA DE CHAPA ENVOLVENTE | 34eh | 2025-07-26 18:00 | 2025-07-28 04:00 | 125 |  |  |  | 4.54d | 0d |
| 127 | 1.2.1.4.4.14 | SOLDAR ANCLAJES | 24eh | 2025-07-28 04:00 | 2025-07-29 04:00 | 126 |  |  |  | 4.54d | 3d |
| 128 | 1.2.1.4.4.15 | PROYECTAR HORMIGON | 48eh | 2025-08-01 04:00 | 2025-08-03 04:00 | 127, 131 |  |  |  | 1.54d | 0d |
| 129 | 1.2.1.4.4.16 | REVISION Y DESTAPADO DE TOMAS Y CAMBIO DE VÁLVULAS | 90eh | 2025-07-28 04:00 | 2025-07-31 22:00 | 126 |  |  |  | 9.29d |  |
| 130 | 1.2.1.4.4.17 | CEPILLAR COSTURAS DE SOPORTERIA | 70eh | 2025-07-26 18:00 | 2025-07-29 16:00 | 125 |  |  |  | 1.54d | 0d |
| 131 | 1.2.1.4.4.18 | REPARACION DE SOPORTERIA | 60eh | 2025-07-29 16:00 | 2025-08-01 04:00 | 130 |  |  |  | 1.54d | 0d |
| 132 | 1.2.1.4.4.19 | INSPECCION | 36eh | 2025-08-03 04:00 | 2025-08-04 16:00 | 128, 131 |  |  |  | 1.54d |  |
| 133 | 1.2.1.4.4.20 | DESMONTAR ANDAMIO | 24eh | 2025-08-06 05:02 | 2025-08-07 05:02 | 132, 171 |  |  |  | 0d |  |
| 134 | 1.2.1.4.4.21 | DESMONTAR SELLO | 6eh | 2025-08-07 05:02 | 2025-08-07 11:02 | 133 |  |  |  | 0d |  |
| 135 | 1.2.1.4.4.22 | REPARACION DE REFRACTARIO ZONA DEL SELLO (CONO) | 60eh | 2025-08-07 11:02 | 2025-08-09 23:02 | 134 |  |  |  | 0d |  |
| 136 | 1.2.1.4.4.23 | INSPECCION FINAL | 6eh | 2025-08-09 23:02 | 2025-08-10 05:02 | 135 |  |  |  | 0d |  |
| 137 | 1.2.1.4.4.24 | CIERRE DE PH 96 | 20eh | 2025-08-10 05:02 | 2025-08-11 01:02 | 136, 152, 129 |  |  |  | 0d |  |

Notes:
- 125: se estiman retirar 6m2 de refractario x turno con 2 frentes

| ID | WBS | Task | Duration | Start | Finish | Predecessors | Total slack | Free slack |
| --- | --- | --- | --- | --- | --- | --- | --- | --- |
| 138 | 1.2.1.4.5 | **STRIPPER D671** | 25.27d | 2025-07-16 18:00 | 2025-08-11 01:02 |  | 0d |  |
| 139 | 1.2.1.4.5.1 | ABRIR PHs (2) | 6eh | 2025-07-16 18:00 | 2025-07-17 00:00 | 13, 9, 10 | 9.42d | 0d |
| 140 | 1.2.1.4.5.2 | DEMOLER PHs (2) | 12eh | 2025-07-17 00:00 | 2025-07-17 12:00 | 139 | 9.42d | 0d |
| 141 | 1.2.1.4.5.3 | INGRESO E INSPECCIÓN INICIAL | 8eh | 2025-07-17 12:00 | 2025-07-17 20:00 | 140 | 9.42d | 0d |
| 142 | 1.2.1.4.5.4 | DESMONTAR FILTRO CORPIÑO | 8eh | 2025-07-17 20:00 | 2025-07-18 04:00 | 141 | 9.42d | 0d |
| 143 | 1.2.1.4.5.5 | DESMONTAJE DE TEJAS (4) | 24eh | 2025-07-18 04:00 | 2025-07-19 04:00 | 142 | 9.42d | 0d |
| 144 | 1.2.1.4.5.6 | CEPILLADO PARA END DE SOPORTES | 24eh | 2025-07-19 04:00 | 2025-07-20 04:00 | 143 | 9.42d | 0d |
| 145 | 1.2.1.4.5.7 | REPARACIÓN DE SOPORTES Y TRUÑON | 30eh | 2025-07-20 04:00 | 2025-07-21 10:00 | 144 | 9.42d | 0d |
| 146 | 1.2.1.4.5.8 | DEMOLER REFRACTARIO | 24eh | 2025-07-21 10:00 | 2025-07-22 10:00 | 145 | 9.42d | 0d |
| 147 | 1.2.1.4.5.9 | LIMPIEZA DE SUPERFICIE Y SOLDADURA DE ANCLAJES | 16eh | 2025-07-22 10:00 | 2025-07-23 02:00 | 146 | 9.42d | 0d |
| 148 | 1.2.1.4.5.10 | GUNITAR AISLANTE | 16eh | 2025-07-23 02:00 | 2025-07-23 18:00 | 147 | 9.42d | 0d |
| 149 | 1.2.1.4.5.11 | CAMBIO DE DISTRIBUIDORES DE VAPOR | 36eh | 2025-07-23 18:00 | 2025-07-25 06:00 | 148 | 9.42d | 0d |
| 150 | 1.2.1.4.5.12 | MONTAJE DE TEJAS | 20eh | 2025-07-25 06:00 | 2025-07-26 02:00 | 149 | 9.42d | 0d |
| 151 | 1.2.1.4.5.13 | MONTAJE DE FILTRO | 10eh | 2025-07-26 02:00 | 2025-07-26 12:00 | 150 | 9.42d | 0d |
| 152 | 1.2.1.4.5.14 | LIMPIEZA E INSPECCIÓN FINAL | 12eh | 2025-07-26 12:00 | 2025-07-27 00:00 | 151 | 9.42d | 0d |
| 153 | 1.2.1.4.5.15 | PROYECTAR HORMIGON EN PHs | 8eh | 2025-08-10 05:02 | 2025-08-10 13:02 | 152, 137SS | 0d |  |
| 154 | 1.2.1.4.5.16 | CERRRAR PHs (2) | 12eh | 2025-08-10 13:02 | 2025-08-11 01:02 | 153 | 0d |  |
| 155 | 1.2.1.4.6 | **RISER EXTERNO - INTERNO** | 21.11d | 2025-07-16 18:00 | 2025-08-06 21:02 |  | 3d |  |
| 156 | 1.2.1.4.6.1 | ABRIR Y DEMOLER PHs (2) | 12eh | 2025-07-16 18:00 | 2025-07-17 06:00 | 9, 10 | 3d |  |
| 157 | 1.2.1.4.6.2 | RETIRAR TAPA SUPERIOR | 12h | 2025-07-20 06:00 | 2025-07-20 18:00 | 156, 121 | 0d |  |
| 158 | 1.2.1.4.6.3 | VENTILACION | 6eh | 2025-07-20 18:00 | 2025-07-21 00:00 | 157 | 0d |  |
| 159 | 1.2.1.4.6.4 | ARMAR ACCESO | 48h | 2025-07-21 00:00 | 2025-07-23 00:02 | 158 | 0d |  |
| 160 | 1.2.1.4.6.5 | LIMPIEZA | 24eh | 2025-07-23 00:02 | 2025-07-24 00:02 | 159 | 0d |  |
| 161 | 1.2.1.4.6.6 | DETAPAR TOMAS | 80eh | 2025-07-21 00:00 | 2025-07-24 08:00 | 158 | 6.63d |  |
| 162 | 1.2.1.4.6.7 | INSPECCION | 18eh | 2025-07-24 00:02 | 2025-07-24 18:02 | 160 | 0d |  |
| 163 | 1.2.1.4.6.8 | RAPARACIÓN DE MALLA EXTERNA | 36eh | 2025-07-24 18:02 | 2025-07-26 06:02 | 162 | 0d |  |
| 164 | 1.2.1.4.6.9 | RAPARACIÓN DE MALLA INTERNA | 35eh | 2025-07-25 18:02 | 2025-07-27 05:02 | 163SS+24eh | 0d |  |
| 165 | 1.2.1.4.6.10 | REPARACION DE REFRACTARIO | 90eh | 2025-07-27 05:02 | 2025-07-30 23:02 | 164, 163 | 0d |  |
| 166 | 1.2.1.4.6.11 | INSPECCION | 14eh | 2025-07-30 23:02 | 2025-07-31 13:02 | 161, 165 | 0d |  |
| 167 | 1.2.1.4.6.12 | DESMONTAR ACCESO | 36eh | 2025-07-31 13:02 | 2025-08-02 01:02 | 166 | 0d |  |
| 168 | 1.2.1.4.6.13 | REPARACION REFRACTARIO TOBERAS | 60eh | 2025-08-02 01:02 | 2025-08-04 13:02 | 167 | 0d |  |
| 169 | 1.2.1.4.6.14 | RECEPCIÓN PROCESOS/OPERACIONES | 4eh | 2025-08-04 13:02 | 2025-08-04 17:02 | 168 | 0d |  |
| 170 | 1.2.1.4.6.15 | PROYECTAR HORMIGON EN PHs | 24eh | 2025-08-04 17:02 | 2025-08-05 17:02 | 169 | 0d |  |
| 171 | 1.2.1.4.6.16 | CERRAR TAPA SUPERIOR | 12eh | 2025-08-05 17:02 | 2025-08-06 05:02 | 170 | 0d |  |
| 172 | 1.2.1.4.6.17 | CERRRAR PHs (2) | 16eh | 2025-08-06 05:02 | 2025-08-06 21:02 | 171 | 4.17d |  |

Notes:
- 159: DESDE TOBERAS DE CARGA HASTA CAP RISER

| ID | WBS | Task | Duration | Start | Finish | Predecessors | Total slack | Free slack |
| --- | --- | --- | --- | --- | --- | --- | --- | --- |
| 173 | 1.2.1.4.7 | **PLENUM Y CICLONES** | 18.07d | 2025-07-18 06:00 | 2025-08-05 08:00 |  | 5.71d |  |
| 174 | 1.2.1.4.7.1 | COLOCAR ACCESO | 8eh | 2025-07-18 06:00 | 2025-07-18 14:00 | 117 | 5.71d | 0d |
| 175 | 1.2.1.4.7.2 | REALIZAR LIMPIEZA | 36eh | 2025-07-18 14:00 | 2025-07-20 02:00 | 174 | 5.71d | 0d |
| 176 | 1.2.1.4.7.3 | INSPECCION | 10eh | 2025-07-20 02:00 | 2025-07-20 12:00 | 175 | 14.88d | 0d |
| 177 | 1.2.1.4.7.4 | REPARACION DE REFRACTARIO | 90eh | 2025-07-20 12:00 | 2025-07-24 06:00 | 176 | 14.88d | 9.17d |
| 178 | 1.2.1.4.7.5 | LIMPIEZA E INSPECCION | 24eh | 2025-08-02 10:00 | 2025-08-03 10:00 | 177, 190 | 5.71d | 0d |
| 179 | 1.2.1.4.7.6 | RETIRO DE ACCESO | 10eh | 2025-08-03 10:00 | 2025-08-03 20:00 | 178 | 5.71d | 0d |
| 180 | 1.2.1.4.7.7 | TAPAR PH | 36eh | 2025-08-03 20:00 | 2025-08-05 08:00 | 179 | 5.71d |  |
| 181 | 1.2.1.4.7.8 | **CICLONES PRIMARIOS** | 13.32d | 2025-07-20 02:00 | 2025-08-02 10:00 |  | 5.71d |  |
| 182 | 1.2.1.4.7.8.1 | RETIRO DE TAPAS SOLDADAS | 12eh | 2025-07-20 02:00 | 2025-07-20 14:00 | 175 | 5.71d | 0d |
| 183 | 1.2.1.4.7.8.2 | ARMAR ACCESOS | 24eh | 2025-07-20 14:00 | 2025-07-21 14:00 | 182 | 5.71d | 0d |
| 184 | 1.2.1.4.7.8.3 | LIMPIEZA | 24eh | 2025-07-21 14:00 | 2025-07-22 14:00 | 183 | 6.63d | 0d |
| 185 | 1.2.1.4.7.8.4 | INSPECCION | 24eh | 2025-07-22 14:00 | 2025-07-23 14:00 | 184 | 6.63d | 0d |
| 186 | 1.2.1.4.7.8.5 | REPARACIONES | 100eh | 2025-07-23 14:00 | 2025-07-27 18:00 | 185 | 6.63d | 0d |
| 187 | 1.2.1.4.7.8.6 | INSPECCION | 6eh | 2025-07-27 18:00 | 2025-07-28 00:00 | 186 | 6.63d | 0d |
| 188 | 1.2.1.4.7.8.7 | PROBAR PASAJE | 24eh | 2025-07-28 00:00 | 2025-07-29 00:00 | 187 | 6.63d | 0.92d |
| 189 | 1.2.1.4.7.8.8 | RETIRO DE ACCESOS | 24eh | 2025-07-29 22:00 | 2025-07-30 22:00 | 188, 198 | 5.71d | 0d |
| 190 | 1.2.1.4.7.8.9 | COLOCAR TAPAS Y SOLDAR | 60eh | 2025-07-30 22:00 | 2025-08-02 10:00 | 189 | 5.71d | 0d |
| 191 | 1.2.1.4.7.9 | **CICLONES SECUNDARIOS** | 8.33d | 2025-07-21 14:00 | 2025-07-29 22:00 |  | 5.71d |  |
| 192 | 1.2.1.4.7.9.1 | ARMAR ACCESOS | 24eh | 2025-07-21 14:00 | 2025-07-22 14:00 | 183 | 5.71d | 0d |
| 193 | 1.2.1.4.7.9.2 | LIMPIEZA | 16eh | 2025-07-22 14:00 | 2025-07-23 06:00 | 192 | 5.71d | 0d |
| 194 | 1.2.1.4.7.9.3 | INSPECCION | 12eh | 2025-07-23 06:00 | 2025-07-23 18:00 | 193 | 5.71d | 0d |
| 195 | 1.2.1.4.7.9.4 | REPARACIONES | 100eh | 2025-07-23 18:00 | 2025-07-27 22:00 | 194 | 5.71d | 0d |
| 196 | 1.2.1.4.7.9.5 | INSPECCION | 12eh | 2025-07-27 22:00 | 2025-07-28 10:00 | 195 | 5.71d | 0d |
| 197 | 1.2.1.4.7.9.6 | PROBAR PASAJE | 24eh | 2025-07-28 10:00 | 2025-07-29 10:00 | 196 | 5.71d | 0d |
| 198 | 1.2.1.4.7.9.7 | RETIRO DE ACCESOS | 12eh | 2025-07-29 10:00 | 2025-07-29 22:00 | 197 | 5.71d | 0d |

| ID | WBS | Task | Duration | Start | Finish | Predecessors | Baseline start | Baseline finish | Baseline duration | Total slack | Free slack |
| --- | --- | --- | --- | --- | --- | --- | --- | --- | --- | --- | --- |
| 199 | 1.2.1.4.8 | **HICV606** | 16.49d | 2025-07-16 18:00 | 2025-08-02 06:00 |  | 2005-05-15 00:00 | 2005-05-15 00:00 | 0eh | 8.29d |  |
| 200 | 1.2.1.4.8.1 | DESMONTAR MECANISMO | 8eh | 2025-07-16 18:00 | 2025-07-17 02:00 | 10 | 2005-05-15 12:00 | 2005-05-15 16:00 | 4eh | 11.63d | 0d |
| 201 | 1.2.1.4.8.2 | DESMONTAR BONETE | 30eh | 2025-07-17 02:00 | 2025-07-18 08:00 | 200 | 2005-05-16 10:00 | 2005-05-16 18:00 | 8eh | 11.63d | 0d |
| 202 | 1.2.1.4.8.3 | INSPECCION | 6eh | 2025-07-21 16:00 | 2025-07-21 22:00 | 101, 201 |  |  |  | 8.29d | 0d |
| 203 | 1.2.1.4.8.4 | CAMBIO DE FLEJES CUERPO | 48eh | 2025-07-26 22:00 | 2025-07-28 22:00 | 202, 207 |  |  |  | 8.29d | 0d |
| 204 | 1.2.1.4.8.5 | REACONDICIONAR BONETE | 144eh | 2025-07-18 08:00 | 2025-07-24 08:00 | 201 |  |  |  | 12.88d | 4.58d |
| 205 | 1.2.1.4.8.6 | ROMPER REFRACTARIO | 24eh | 2025-07-21 22:00 | 2025-07-22 22:00 | 202 |  |  |  | 8.29d | 0d |
| 206 | 1.2.1.4.8.7 | CAMBIO DE INYECCIONES | 36eh | 2025-07-22 22:00 | 2025-07-24 10:00 | 205 |  |  |  | 8.29d | 0d |
| 207 | 1.2.1.4.8.8 | REPARAR REFRACTARIO | 60eh | 2025-07-24 10:00 | 2025-07-26 22:00 | 206 |  |  |  | 8.29d | 0d |
| 208 | 1.2.1.4.8.9 | MONTAR BONETE | 24eh | 2025-07-28 22:00 | 2025-07-29 22:00 | 108, 203, 204, 207 |  |  |  | 8.29d | 0d |
| 209 | 1.2.1.4.8.10 | SOLDAR DIAFRAGMA | 30eh | 2025-07-29 22:00 | 2025-07-31 04:00 | 208 |  |  |  | 8.29d | 0d |
| 210 | 1.2.1.4.8.11 | MONTAR MECANISMOS | 12eh | 2025-07-31 04:00 | 2025-07-31 16:00 | 209 |  |  |  | 8.29d | 0d |
| 211 | 1.2.1.4.8.12 | CALIBRAR | 30eh | 2025-07-31 16:00 | 2025-08-01 22:00 | 210 |  |  |  | 8.29d | 0d |
| 212 | 1.2.1.4.8.13 | ACCIONAR | 8eh | 2025-08-01 22:00 | 2025-08-02 06:00 | 211 |  |  |  | 8.29d | 0d |
| 213 | 1.2.1.4.9 | **LINEA "J"** | 18.49d | 2025-07-15 06:00 | 2025-08-02 18:00 |  | 2005-05-15 00:00 | 2005-05-15 00:00 | 0eh | 8.29d |  |
| 214 | 1.2.1.4.9.1 | DESTAPAR P.H. | 24eh | 2025-07-15 06:00 | 2025-07-16 06:00 | 10SS | 2005-05-15 00:00 | 2005-05-15 04:00 | 4eh | 15.63d | 0d |
| 215 | 1.2.1.4.9.2 | VENTILACION | 24eh | 2025-07-16 06:00 | 2025-07-17 06:00 | 214 | 2005-05-15 04:00 | 2005-05-15 12:00 | 8eh | 15.63d | 0d |
| 216 | 1.2.1.4.9.3 | LIMPIEZA | 36eh | 2025-07-17 06:00 | 2025-07-18 18:00 | 215 | 2005-05-15 12:00 | 2005-05-15 18:00 | 6eh | 15.63d | 0d |
| 217 | 1.2.1.4.9.4 | INSPECCION | 24eh | 2025-07-18 18:00 | 2025-07-19 18:00 | 216 |  |  |  | 15.63d | 7.17d |
| 218 | 1.2.1.4.9.5 | ROMPER REFRACTARIO | 48eh | 2025-07-26 22:00 | 2025-07-28 22:00 | 207, 217 | 2005-05-15 18:00 | 2005-05-16 10:00 | 16eh | 8.46d | 0d |
| 219 | 1.2.1.4.9.6 | REPONER ANCLAJES | 40eh | 2025-07-28 22:00 | 2025-07-30 14:00 | 218 |  |  |  | 8.46d | 0d |
| 220 | 1.2.1.4.9.7 | REPARAR FEFRACTARIO | 48eh | 2025-07-30 14:00 | 2025-08-01 14:00 | 219 | 2005-05-29 02:00 | 2005-05-30 02:00 | 24eh | 8.46d | 0d |
| 221 | 1.2.1.4.9.8 | LIMPIEZA / INSP./REC.HICV606 | 12eh | 2025-08-01 14:00 | 2025-08-02 02:00 | 208, 220 | 2005-05-30 02:00 | 2005-05-30 06:00 | 4eh | 8.46d | 0.17d |
| 222 | 1.2.1.4.9.9 | TAPAR PH | 12eh | 2025-08-02 06:00 | 2025-08-02 18:00 | 212, 221 | 2005-05-30 06:00 | 2005-05-30 14:00 | 8eh | 8.29d |  |

Notes:
- 201: CORTAR FLEJE SOLDADO
- 204: DESMONTAJE,RECUPERACION DE BASE Y SOLDAR NUEVO

| ID | WBS | Task | Duration | Start | Finish | Predecessors | Baseline start | Baseline finish | Baseline duration | Total slack | Free slack |
| --- | --- | --- | --- | --- | --- | --- | --- | --- | --- | --- | --- |
| 223 | 1.2.1.5 | **HCV-605** | 14.66d | 2025-07-16 18:00 | 2025-07-31 10:00 |  |  |  |  | 10.62d |  |
| 224 | 1.2.1.5.1 | DESCONECTAR | 12eh | 2025-07-16 18:00 | 2025-07-17 06:00 | 10 |  |  |  | 11.67d | 0d |
| 225 | 1.2.1.5.2 | DESMONTAR BONETES | 24eh | 2025-07-17 06:00 | 2025-07-18 06:00 | 224 |  |  |  | 11.67d | 0d |
| 226 | 1.2.1.5.3 | DESMONTAJE DE INTERNOS | 18eh | 2025-07-18 06:00 | 2025-07-19 00:00 | 225 |  |  |  | 11.67d | 0d |
| 227 | 1.2.1.5.4 | DESBRIDAR Y GIRAR CUERPO | 48eh | 2025-07-19 00:00 | 2025-07-21 00:00 | 226 |  |  |  | 11.67d | 0d |
| 228 | 1.2.1.5.5 | REPARACION | 90eh | 2025-07-21 00:00 | 2025-07-24 18:00 | 227 |  |  |  | 11.67d | 2.25d |
| 229 | 1.2.1.5.6 | MONTAJE DE INTERNOS | 22eh | 2025-07-27 00:00 | 2025-07-27 22:00 | 152, 228 |  |  |  | 9.42d | 0d |
| 230 | 1.2.1.5.7 | MONTAJE BONETE | 24eh | 2025-07-27 22:00 | 2025-07-28 22:00 | 229 |  |  |  | 10.63d | 0d |
| 231 | 1.2.1.5.8 | SOLDAR DIAFRAGMA | 24eh | 2025-07-28 22:00 | 2025-07-29 22:00 | 230 |  |  |  | 10.63d | 0d |
| 232 | 1.2.1.5.9 | CONECTAR INSTRUMENTAL | 36eh | 2025-07-29 22:00 | 2025-07-31 10:00 | 231 |  |  |  | 10.63d |  |
| 233 | 1.2.1.6 | **HCV-607** | 15.36d | 2025-07-17 06:00 | 2025-08-01 15:00 |  |  |  |  | 9.41d |  |
| 234 | 1.2.1.6.1 | DESCONECTAR | 12eh | 2025-07-17 06:00 | 2025-07-17 18:00 | 224 |  |  |  | 14.33d | 0d |
| 235 | 1.2.1.6.2 | DESMONTAR BONETE | 24eh | 2025-07-17 18:00 | 2025-07-18 18:00 | 234 |  |  |  | 14.33d | 0d |
| 236 | 1.2.1.6.3 | DESARME DE INTERNOS | 12eh | 2025-07-18 18:00 | 2025-07-19 06:00 | 235 |  |  |  | 14.33d | 0d |
| 237 | 1.2.1.6.4 | REPARACION | 90eh | 2025-07-19 06:00 | 2025-07-23 00:00 | 236 |  |  |  | 14.33d | 4.92d |
| 238 | 1.2.1.6.5 | MONTAJE DE INTERNOS | 24eh | 2025-07-27 22:00 | 2025-07-28 22:00 | 229, 237 |  |  |  | 9.42d | 0d |
| 239 | 1.2.1.6.6 | MONTAJE DE BONETE | 17eh | 2025-07-28 22:00 | 2025-07-29 15:00 | 238 |  |  |  | 9.42d | 0d |
| 240 | 1.2.1.6.7 | CONECTAR INSTRUMENTAL | 36eh | 2025-07-29 15:00 | 2025-07-31 03:00 | 239 |  |  |  | 9.42d | 0d |
| 241 | 1.2.1.6.8 | PRUEBA DE NUEVA CENTRALINA | 36eh | 2025-07-31 03:00 | 2025-08-01 15:00 | 240 |  |  |  | 9.42d |  |
| 242 | 1.2.1.7 | **F-673 (CICLONES TERCIARIO)** | 16.07d | 2025-07-15 18:00 | 2025-07-31 20:00 |  | 2005-05-24 12:00 | 2005-06-03 08:03 | 9.84d | 10.2d |  |
| 243 | 1.2.1.7.1 | COLOCAR BC | 12eh | 2025-07-15 18:00 | 2025-07-16 06:00 | 15 | 2005-05-24 12:00 | 2005-05-24 20:00 | 8eh | 10.21d | 0d |
| 244 | 1.2.1.7.2 | DESTAPAR PHs | 18eh | 2025-07-16 06:00 | 2025-07-17 00:00 | 243 | 2005-05-24 20:00 | 2005-05-25 04:02 | 8h | 10.21d | 0d |
| 245 | 1.2.1.7.3 | RETIRAR CATALIZADOR | 72eh | 2025-07-17 00:00 | 2025-07-20 00:00 | 244 | 2005-05-25 04:02 | 2005-05-26 16:02 | 36eh | 10.21d | 0d |
| 246 | 1.2.1.7.4 | MONTAR ANDAMIO INTERIOR | 12eh | 2025-07-20 00:00 | 2025-07-20 12:00 | 245 | 2005-05-26 16:02 | 2005-05-27 00:02 | 8eh | 10.21d | 0d |
| 247 | 1.2.1.7.5 | REALIZAR LPZA CICLONES | 24eh | 2025-07-20 12:00 | 2025-07-21 12:00 | 246 | 2005-05-27 00:02 | 2005-05-27 12:02 | 12eh | 10.21d | 0d |
| 248 | 1.2.1.7.6 | REALIZAR LPZA ENVOLV. | 48eh | 2025-07-21 12:00 | 2025-07-23 12:00 | 247 | 2005-05-27 12:02 | 2005-05-28 00:02 | 12eh | 10.21d | 0d |
| 249 | 1.2.1.7.7 | INSPECCION | 24eh | 2025-07-23 12:00 | 2025-07-24 12:00 | 248 | 2005-05-28 00:02 | 2005-05-28 02:02 | 2eh | 10.21d | 0d |
| 250 | 1.2.1.7.8 | REPARACIONES MET. | 72eh | 2025-07-24 12:00 | 2025-07-27 12:00 | 249 |  |  |  | 10.21d | 0d |
| 251 | 1.2.1.7.9 | RECEPCIÓN DE LIMPIEZA CICLONES PROCESOS/OPERACIONES | 6eh | 2025-07-27 12:00 | 2025-07-27 18:00 | 250 |  |  |  | 10.21d | 0d |
| 252 | 1.2.1.7.10 | DESMONTAR ANDAMIOS | 6eh | 2025-07-27 18:00 | 2025-07-28 00:00 | 251 |  |  |  | 10.21d | 0d |
| 253 | 1.2.1.7.11 | REPARAR REFRACTARIO CONO | 36eh | 2025-07-28 00:00 | 2025-07-29 12:00 | 252 | 2005-06-01 10:02 | 2005-06-02 10:02 | 24eh | 10.21d | 0d |
| 254 | 1.2.1.7.12 | LIMPIEZA FINA | 12eh | 2025-07-29 12:00 | 2025-07-30 00:00 | 253 | 2005-06-02 10:02 | 2005-06-02 18:03 | 8h | 10.21d | 0d |
| 255 | 1.2.1.7.13 | DESMONTAR ACCESO | 24eh | 2025-07-30 00:00 | 2025-07-31 00:00 | 254 | 2005-06-02 18:03 | 2005-06-03 00:03 | 6eh | 10.21d | 0d |
| 256 | 1.2.1.7.14 | TAPAR PHs | 20eh | 2025-07-31 00:00 | 2025-07-31 20:00 | 255 | 2005-06-03 00:03 | 2005-06-03 08:03 | 8eh | 10.21d |  |

| ID | WBS | Task | Type | Duration | Start | Finish | Predecessors | Total slack | Free slack |
| --- | --- | --- | --- | --- | --- | --- | --- | --- | --- |
| 257 | 1.2.1.8 | **CHIMENEA Y VALV. DESLIZANTES** |  | 13.95d | 2025-07-16 18:00 | 2025-07-30 17:00 |  | 3.62d |  |
| 258 | 1.2.1.8.1 | **G-614 CHIMENEA** |  | 13.07d | 2025-07-16 18:00 | 2025-07-29 20:00 |  | 12.2d |  |
| 259 | 1.2.1.8.1.1 | DESTAPAR PH (3) |  | 24eh | 2025-07-16 18:00 | 2025-07-17 18:00 | 10 | 12.21d | 0d |
| 260 | 1.2.1.8.1.2 | MONTAR ANDAMIOS INTERIOR |  | 48eh | 2025-07-17 18:00 | 2025-07-19 18:00 | 259 | 12.21d | 0d |
| 261 | 1.2.1.8.1.3 | LIMPIEZA INTERNA COMPLETA |  | 80eh | 2025-07-19 18:00 | 2025-07-23 02:00 | 260 | 12.21d | 0d |
| 262 | 1.2.1.8.1.4 | INSPECCION |  | 24eh | 2025-07-23 02:00 | 2025-07-24 02:00 | 261 | 12.21d | 0d |
| 263 | 1.2.1.8.1.5 | REPARACIONES |  | 90eh | 2025-07-24 02:00 | 2025-07-27 20:00 | 262 | 12.21d | 0d |
| 264 | 1.2.1.8.1.6 | DESARME DE ANDAMIO |  | 24eh | 2025-07-27 20:00 | 2025-07-28 20:00 | 263 | 12.21d | 0d |
| 265 | 1.2.1.8.1.7 | CIERRE DE PH |  | 24eh | 2025-07-28 20:00 | 2025-07-29 20:00 | 264 | 12.21d |  |
| 266 | 1.2.1.8.2 | **VALVULAS DESLIZANTES** |  | 12.95d | 2025-07-17 18:00 | 2025-07-30 17:00 |  | 2.62d |  |
| 267 | 1.2.1.8.2.1 | **HCV 621/622** |  | 8.79d | 2025-07-17 18:00 | 2025-07-26 13:00 |  | 2.62d |  |
| 268 | 1.2.1.8.2.1.1 | DESMONTAR BONETES |  | 24eh | 2025-07-17 18:00 | 2025-07-18 18:00 | 259 | 12.71d | 0d |
| 269 | 1.2.1.8.2.1.2 | INSPECCIÓN |  | 6eh | 2025-07-18 18:00 | 2025-07-19 00:00 | 268 | 12.71d | 0d |
| 270 | 1.2.1.8.2.1.3 | REPARACION DE REFRACTARIO | manual | 24eh | 2025-07-20 09:00 | 2025-07-21 09:00 | 269 |  |  |
| 271 | 1.2.1.8.2.1.4 | ENSAYOS |  | 24eh | 2025-07-21 09:00 | 2025-07-22 09:00 | 270 | 11.33d | 0d |
| 272 | 1.2.1.8.2.1.5 | ARMADO Y CONEXIÓN DE SISTEMA CENTRALINA |  | 100eh | 2025-07-22 09:00 | 2025-07-26 13:00 | 271 | 11.33d | 0d |
| 273 | 1.2.1.8.2.2 | **HCV 623/624** |  | 11.7d | 2025-07-19 00:00 | 2025-07-30 17:00 |  | 11.33d |  |
| 274 | 1.2.1.8.2.2.1 | DESMONTAR BONETES |  | 24eh | 2025-07-19 00:00 | 2025-07-20 00:00 | 269 | 12.88d | 0d |
| 275 | 1.2.1.8.2.2.2 | REEMPLAZO DE CUERPO |  | 96eh | 2025-07-20 00:00 | 2025-07-24 00:00 | 274 | 12.88d | 0d |
| 276 | 1.2.1.8.2.2.3 | ENSAYOS |  | 24eh | 2025-07-24 00:00 | 2025-07-25 00:00 | 271, 275 | 12.88d | 1.54d |
| 277 | 1.2.1.8.2.2.4 | ARMADO Y CONEXIÓN DE SISTEMA CENTRALINA |  | 100eh | 2025-07-26 13:00 | 2025-07-30 17:00 | 272, 276 | 11.33d |  |
| 278 | 1.2.1.9 | **LINEA TRANSFERENCIA** |  | 17.9d | 2025-07-16 18:00 | 2025-08-03 16:00 |  | 7.37d |  |
| 279 | 1.2.1.9.1 | ABRIR 2 PH |  | 36eh | 2025-07-16 18:00 | 2025-07-18 06:00 | 10 | 7.38d | 0d |
| 280 | 1.2.1.9.2 | VENTILACION |  | 24eh | 2025-07-18 06:00 | 2025-07-19 06:00 | 279 | 7.38d | 0d |
| 281 | 1.2.1.9.3 | MONTAR ACCESO |  | 72eh | 2025-07-19 06:00 | 2025-07-22 06:00 | 280 | 7.38d | 0d |
| 282 | 1.2.1.9.4 | LIMPIEZA |  | 60eh | 2025-07-22 06:00 | 2025-07-24 18:00 | 279, 281 | 7.38d | 0d |
| 283 | 1.2.1.9.5 | INSPECCION |  | 24eh | 2025-07-24 18:00 | 2025-07-25 18:00 | 282 | 7.38d | 0d |
| 284 | 1.2.1.9.6 | REPARACIONES DE REFRACTARIO |  | 70eh | 2025-07-25 18:00 | 2025-07-28 16:00 | 283 | 7.38d | 0d |
| 285 | 1.2.1.9.7 | INSPECCION |  | 24eh | 2025-07-28 16:00 | 2025-07-29 16:00 | 284 | 7.38d | 0d |
| 286 | 1.2.1.9.8 | DESARME DE ACCESO |  | 72eh | 2025-07-29 16:00 | 2025-08-01 16:00 | 285 | 7.38d | 0d |
| 287 | 1.2.1.9.9 | CIERRE DE TAPONES |  | 24eh | 2025-08-01 16:00 | 2025-08-02 16:00 | 286 | 7.38d | 0d |
| 288 | 1.2.1.9.10 | CERRA PH (2) |  | 24eh | 2025-08-02 16:00 | 2025-08-03 16:00 | 287 | 7.38d |  |

Notes:
- 257: 1-CONSTRUIR BALANCIN PARA DESMONTAR / 2-VERIFICAR ESTADO DE LA CHAPA / 3-MONTAR ANDAMO PARA DESBRIDAR Y CORTAR / 4-REALIZAR RELEVAMIENTO DE ZONA A CORTAR. / 5-GRUA / 6-MONTAR SOPORTES PROVISORIOS
- 278: 1-RELIZAR RELEVAMIENTO / 2-MONTAR ANDAMIOS NECESARIOS / 3-MONTAR SOPORTES PROVISORIOS / 4-MONTAR CANCAMOS / 5-SON 6 TRAMOS
- 279: SE DEBERÁ SOLDAAR P.P.
- 282: REALIZAR CORTE EN FRIO (HILO) / 2 CORTES

| ID | WBS | Task | Duration | Start | Finish | Predecessors | Total slack | Free slack |
| --- | --- | --- | --- | --- | --- | --- | --- | --- |
| 289 | 1.2.1.10 | **C671 FLUE GAS COOLER ALTA** | 18.49d | 2025-07-16 18:00 | 2025-08-04 06:00 |  | 6.79d |  |
| 290 | 1.2.1.10.1 | ABRIR PH | 24eh | 2025-07-16 18:00 | 2025-07-17 18:00 | 10 | 6.79d | 0d |
| 291 | 1.2.1.10.2 | COLOCAR BC | 24eh | 2025-07-17 18:00 | 2025-07-18 18:00 | 290 | 6.79d | 0d |
| 292 | 1.2.1.10.3 | VENTILACION | 24eh | 2025-07-18 18:00 | 2025-07-19 18:00 | 291 | 6.79d | 0d |
| 293 | 1.2.1.10.4 | MONTAR ACCESO | 8eh | 2025-07-19 18:00 | 2025-07-20 02:00 | 292 | 6.79d | 0d |
| 294 | 1.2.1.10.5 | RETIRO DE FERRULES | 60eh | 2025-07-20 02:00 | 2025-07-22 14:00 | 293 | 6.79d | 0d |
| 295 | 1.2.1.10.6 | RETIRO DE REFRACTARIO | 60eh | 2025-07-22 14:00 | 2025-07-25 02:00 | 294 | 6.79d | 0d |
| 296 | 1.2.1.10.7 | LIMPIEZA DE PLACA Y COSTURAS | 36eh | 2025-07-25 02:00 | 2025-07-26 14:00 | 295 | 6.79d | 0d |
| 297 | 1.2.1.10.8 | INSPECCION | 20eh | 2025-07-26 14:00 | 2025-07-27 10:00 | 296 | 6.79d | 0d |
| 298 | 1.2.1.10.9 | PRUEBA HIDRAULICA | 36eh | 2025-07-27 10:00 | 2025-07-28 22:00 | 291, 297 | 6.79d | 0d |
| 299 | 1.2.1.10.10 | COLOCAR FERRULES Y HORMIGON | 72eh | 2025-07-28 22:00 | 2025-07-31 22:00 | 298 | 6.79d | 0d |
| 300 | 1.2.1.10.11 | INSPECCION | 12eh | 2025-07-31 22:00 | 2025-08-01 10:00 | 299 | 6.79d | 0d |
| 301 | 1.2.1.10.12 | RETIRO DE ACCESO | 24eh | 2025-08-01 10:00 | 2025-08-02 10:00 | 300 | 6.79d | 0d |
| 302 | 1.2.1.10.13 | CERRAR PH | 36eh | 2025-08-02 10:00 | 2025-08-03 22:00 | 301 | 6.79d | 0d |
| 303 | 1.2.1.10.14 | RETIRO DE BC | 8eh | 2025-08-03 22:00 | 2025-08-04 06:00 | 302 | 6.79d |  |
| 304 | 1.2.1.11 | **C672 FLUE GAS COOLER BAJA** | 5.41d | 2025-07-16 18:00 | 2025-07-22 04:00 |  | 19.86d |  |
| 305 | 1.2.1.11.1 | ABRIR PH | 12eh | 2025-07-16 18:00 | 2025-07-17 06:00 | 10 | 19.88d | 0d |
| 306 | 1.2.1.11.2 | COLOCAR BC | 24eh | 2025-07-17 06:00 | 2025-07-18 06:00 | 305 | 19.88d | 0d |
| 307 | 1.2.1.11.3 | MONTAR ACCESO | 12eh | 2025-07-18 06:00 | 2025-07-18 18:00 | 306 | 19.88d | 0d |
| 308 | 1.2.1.11.4 | PRUEBA HIDRAULICA | 30eh | 2025-07-18 18:00 | 2025-07-20 00:00 | 307 | 19.88d | 0d |
| 309 | 1.2.1.11.5 | INSPECCION | 12eh | 2025-07-20 00:00 | 2025-07-20 12:00 | 308 | 19.88d | 0d |
| 310 | 1.2.1.11.6 | RETIRO DE ACCESO | 8eh | 2025-07-20 12:00 | 2025-07-20 20:00 | 309 | 19.88d | 0d |
| 311 | 1.2.1.11.7 | CERRAR PH | 24eh | 2025-07-20 20:00 | 2025-07-21 20:00 | 310 | 19.88d | 0d |
| 312 | 1.2.1.11.8 | RETIRO DE BC | 8eh | 2025-07-21 20:00 | 2025-07-22 04:00 | 311 | 19.88d |  |
| 313 | 1.2.1.12 | RETIRO BC RG RX | 46eh | 2025-08-11 01:02 | 2025-08-12 23:02 | 35, 82, 137, 154, 172, 180, 222, 256, 288, 1123, 1124, 45, 98, 209, 231, 241, 265, 272, 275, 97, 232, 277, 312, 303 | 0d |  |

| ID | WBS | Task | Duration | Start | Finish | Predecessors | Baseline start | Baseline finish | Baseline duration | Total slack | Free slack |
| --- | --- | --- | --- | --- | --- | --- | --- | --- | --- | --- | --- |
| 314 | 1.2.2 | **TORRES (8)** | 25.98d | 2025-07-17 18:00 | 2025-08-12 18:00 |  | 2005-05-24 12:00 | 2005-06-05 00:00 | 11.5d | 0.21d |  |
| 315 | 1.2.2.1 | **E-601** | 25.98d | 2025-07-17 18:00 | 2025-08-12 18:00 |  | 2005-05-24 12:00 | 2005-06-05 00:00 | 11.5d | 0.21d |  |
| 316 | 1.2.2.1.1 | CEGADO | 36eh | 2025-07-17 18:00 | 2025-07-19 06:00 | 6 |  |  |  | 0.21d | 0d |
| 317 | 1.2.2.1.2 | RETIRO ESPARRAGO POR MEDIO DE PHs | 6eh | 2025-07-17 18:00 | 2025-07-18 00:00 | 316SS |  |  |  | 1.46d | 1.25d |
| 318 | 1.2.2.1.3 | APERTURA DE PH | 8eh | 2025-07-19 06:00 | 2025-07-19 14:00 | 316, 317 |  |  |  | 0.21d | 0d |
| 319 | 1.2.2.1.4 | VENTILACIÓN | 12eh | 2025-07-19 14:00 | 2025-07-20 02:00 | 318 |  |  |  | 0.21d | 0d |
| 320 | 1.2.2.1.5 | INSPECCIÓN PROCESOS | 4eh | 2025-07-20 02:00 | 2025-07-20 06:00 | 319 |  |  |  | 0.21d | 0d |
| 321 | 1.2.2.1.6 | APERTURA DE PASAJES | 24eh | 2025-07-20 06:00 | 2025-07-21 06:00 | 319, 320 |  |  |  | 0.21d | 0d |
| 322 | 1.2.2.1.7 | INSPECCIÓN PROCESOS | 12eh | 2025-07-21 06:00 | 2025-07-21 18:00 | 321 |  |  |  | 0.21d | 0d |
| 323 | 1.2.2.1.8 | LIMPIEZA GRUESA | 72eh | 2025-07-21 18:00 | 2025-07-24 18:00 | 322 |  |  |  | 0.21d | 0d |
| 324 | 1.2.2.1.9 | CEPILLADO UNIÓN POLLERA-ENVOLVENTE Y SALIDA DE FONDO | 12eh | 2025-07-19 06:00 | 2025-07-19 18:00 | 316 |  |  |  | 22.71d | 0d |
| 325 | 1.2.2.1.10 | END EXTERIORES | 6eh | 2025-07-19 18:00 | 2025-07-20 00:00 | 324 |  |  |  | 22.71d | 22.5d |
| 326 | 1.2.2.1.11 | **PLATOS 32 AL 19** | 17.74d | 2025-07-24 18:00 | 2025-08-11 12:00 |  |  |  |  | 0.29d |  |
| 327 | 1.2.2.1.11.1 | MONTAJE DE SELLO | 4eh | 2025-07-24 18:00 | 2025-07-24 22:00 | 323 |  |  |  | 0.29d | 0d |
| 328 | 1.2.2.1.11.2 | LIMPIEZA FINA | 24eh | 2025-07-24 22:00 | 2025-07-25 22:00 | 327 |  |  |  | 0.29d | 0.08d |
| 329 | 1.2.2.1.11.3 | CEPILLADO SEGÚN ANEXO I | 36eh | 2025-07-26 00:00 | 2025-07-27 12:00 | 328, 344 |  |  |  | 0.21d | 0d |
| 330 | 1.2.2.1.11.4 | INSPECCIÓN Y END | 12eh | 2025-07-27 12:00 | 2025-07-28 00:00 | 329 |  |  |  | 0.21d | 0d |
| 331 | 1.2.2.1.11.5 | DESMONTAJE DE PLATOS 28-32 | 54eh | 2025-07-28 00:00 | 2025-07-30 06:00 | 330 |  |  |  | 0.21d | 0d |
| 332 | 1.2.2.1.11.6 | MONTAJE DE PLATOS 28-32 | 90eh | 2025-07-30 06:00 | 2025-08-03 00:00 | 331 |  |  |  | 0.21d | 0d |
| 333 | 1.2.2.1.11.7 | REPOSICIÓN CLAPETAS Y BULONERÍA (PLATOS 19-27) | 12eh | 2025-08-03 00:00 | 2025-08-03 12:00 | 332 |  |  |  | 0.21d | 0d |
| 334 | 1.2.2.1.11.8 | LIMPIEZA FINA | 36eh | 2025-08-03 12:00 | 2025-08-05 00:00 | 333 |  |  |  | 0.21d | 0d |
| 335 | 1.2.2.1.11.9 | INSPECCIÓN PROCESOS | 12eh | 2025-08-05 00:00 | 2025-08-05 12:00 | 334 |  |  |  | 0.21d | 0d |
| 336 | 1.2.2.1.11.10 | REPARACIONES METALURGICAS Y AJUSTE DE PLATOS | 96eh | 2025-08-05 12:00 | 2025-08-09 12:00 | 335 |  |  |  | 0.21d | 0d |
| 337 | 1.2.2.1.11.11 | DESTAPADO TOMA DE INSTRUMENTOS | 12eh | 2025-08-03 12:00 | 2025-08-04 00:00 | 333 |  |  |  | 5.71d | 0d |
| 338 | 1.2.2.1.11.12 | RECEPCIÓN TOMA DE INSTRUMENTOS | 8eh | 2025-08-04 00:00 | 2025-08-04 08:00 | 337 |  |  |  | 12.63d |  |
| 339 | 1.2.2.1.11.13 | RECEPCIÓN FINAL IEE Y PROCESOS | 18eh | 2025-08-09 12:00 | 2025-08-10 06:00 | 337, 336 |  |  |  | 0.21d | 0d |
| 340 | 1.2.2.1.11.14 | CIERRE DE PASAJES | 18eh | 2025-08-10 06:00 | 2025-08-11 00:00 | 339, 337 |  |  |  | 0.21d | 0d |
| 341 | 1.2.2.1.11.15 | CIERRE Y TORQUEO DE PH (M1) | 12eh | 2025-08-11 00:00 | 2025-08-11 12:00 | 340 |  |  |  | 0.21d | 0d |

Notes:
- 315: 32 PLATOS , P1 , P2, BAFLES 6, / DIA. 5650 mm (25 m2)

| ID | WBS | Task | Duration | Start | Finish | Predecessors | Total slack | Free slack |
| --- | --- | --- | --- | --- | --- | --- | --- | --- |
| 342 | 1.2.2.1.12 | **PLATOS 18 AL 7** | 15.74d | 2025-07-24 18:00 | 2025-08-09 12:00 |  | 0.21d |  |
| 343 | 1.2.2.1.12.1 | MONTAJE DE SELLO | 6eh | 2025-07-24 18:00 | 2025-07-25 00:00 | 323 | 0.21d | 0d |
| 344 | 1.2.2.1.12.2 | LIMPIEZA FINA | 24eh | 2025-07-25 00:00 | 2025-07-26 00:00 | 343 | 0.21d | 0d |
| 345 | 1.2.2.1.12.3 | CEPILLADO SEGÚN ANEXO I | 36eh | 2025-07-26 00:00 | 2025-07-27 12:00 | 344 | 0.54d | 0d |
| 346 | 1.2.2.1.12.4 | INSPECCIÓN Y END | 18eh | 2025-07-27 12:00 | 2025-07-28 06:00 | 345 | 0.54d | 0d |
| 347 | 1.2.2.1.12.5 | DESMONTAJE DE PLATOS | 72eh | 2025-07-28 06:00 | 2025-07-31 06:00 | 346 | 2.21d | 0d |
| 348 | 1.2.2.1.12.6 | MONTAJE DE PLATOS | 108eh | 2025-07-31 06:00 | 2025-08-04 18:00 | 347 | 2.21d | 0d |
| 349 | 1.2.2.1.12.7 | LIMPIEZA FINA | 24eh | 2025-08-04 18:00 | 2025-08-05 18:00 | 348 | 11.21d |  |
| 350 | 1.2.2.1.12.8 | INSPECCIÓN PROCESOS | 12eh | 2025-08-04 18:00 | 2025-08-05 06:00 | 348 | 2.21d | 0d |
| 351 | 1.2.2.1.12.9 | REPARACIONES METALURGICAS Y AJUSTE DE PLATOS | 60eh | 2025-08-05 06:00 | 2025-08-07 18:00 | 350 | 2.21d | 0d |
| 352 | 1.2.2.1.12.10 | DESTAPADO Y RECEPCIÓN TOMA DE INSTRUMENTOS | 4eh | 2025-08-07 18:00 | 2025-08-07 22:00 | 351 | 2.21d | 0d |
| 353 | 1.2.2.1.12.11 | RECEPCIÓN FINAL IEE Y PROCESOS | 18eh | 2025-08-07 22:00 | 2025-08-08 16:00 | 352 | 2.21d | 0d |
| 354 | 1.2.2.1.12.12 | CIERRE DE PASAJES | 12eh | 2025-08-08 16:00 | 2025-08-09 04:00 | 353 | 2.21d | 0d |
| 355 | 1.2.2.1.12.13 | CIERRE Y TORQUEO DE PH (M2) | 8eh | 2025-08-09 04:00 | 2025-08-09 12:00 | 354 | 2.21d | 2d |
| 356 | 1.2.2.1.13 | **PLATOS 6 AL P2** | 17.4d | 2025-07-24 18:00 | 2025-08-11 04:00 |  | 0.54d |  |
| 357 | 1.2.2.1.13.1 | CEPILLADO SEGÚN ANEXO I | 24eh | 2025-07-24 18:00 | 2025-07-25 18:00 | 323 | 3.04d | 2.5d |
| 358 | 1.2.2.1.13.2 | INSPECCIÓN Y END | 18eh | 2025-07-28 06:00 | 2025-07-29 00:00 | 330, 346, 357 | 0.54d | 0d |
| 359 | 1.2.2.1.13.3 | REPARACION DE CLADING ENVOLVENTE PLATO 4 | 220eh | 2025-07-29 00:00 | 2025-08-07 04:00 | 358 | 0.54d | 0d |
| 360 | 1.2.2.1.13.4 | REPOSICIÓN DE CLAPETAS Y BULONERÍA | 12eh | 2025-08-06 16:00 | 2025-08-07 04:00 | 359FF | 0.54d | 0d |
| 361 | 1.2.2.1.13.5 | INSPECCIÓN PROCESOS | 24eh | 2025-08-07 04:00 | 2025-08-08 04:00 | 360 | 0.54d | 0d |
| 362 | 1.2.2.1.13.6 | AJUSTE DE PLATOS | 24eh | 2025-08-08 04:00 | 2025-08-09 04:00 | 361 | 0.54d | 0d |
| 363 | 1.2.2.1.13.7 | DESTAPADO Y RECEPCIÓN TOMA DE INSTRUMENTOS | 4eh | 2025-08-09 04:00 | 2025-08-09 08:00 | 362 | 0.54d | 0d |
| 364 | 1.2.2.1.13.8 | RECEPCIÓN FINAL IEE Y PROCESOS | 18eh | 2025-08-09 08:00 | 2025-08-10 02:00 | 363 | 0.54d | 0d |
| 365 | 1.2.2.1.13.9 | PRUEBA DE ESTANQUEIDAD PLATO P2 | 6eh | 2025-08-10 02:00 | 2025-08-10 08:00 | 364 | 0.54d | 0d |
| 366 | 1.2.2.1.13.10 | CIERRE DE PASAJES | 12eh | 2025-08-10 08:00 | 2025-08-10 20:00 | 365 | 0.54d | 0d |
| 367 | 1.2.2.1.13.11 | CIERRE Y TORQUEO DE PH (M3 Y M4) | 8eh | 2025-08-10 20:00 | 2025-08-11 04:00 | 366 | 0.54d | 0.33d |

| ID | WBS | Task | Duration | Start | Finish | Predecessors | Total slack | Free slack |
| --- | --- | --- | --- | --- | --- | --- | --- | --- |
| 368 | 1.2.2.1.14 | **PLATOS 3 AL P1** | 14.49d | 2025-07-24 18:00 | 2025-08-08 06:00 |  | 1.38d |  |
| 369 | 1.2.2.1.14.1 | RETIRO DE CARBÓN PLATO P1 Y LIMPIEZA | 36eh | 2025-07-24 18:00 | 2025-07-26 06:00 | 323 | 1.38d | 0d |
| 370 | 1.2.2.1.14.2 | CEPILLADO SEGÚN ANEXO I | 24eh | 2025-07-26 06:00 | 2025-07-27 06:00 | 369 | 1.38d | 0d |
| 371 | 1.2.2.1.14.3 | INSPECCIÓN Y END | 12eh | 2025-07-27 06:00 | 2025-07-27 18:00 | 370 | 1.38d | 0d |
| 372 | 1.2.2.1.14.4 | DESMONTAJE DE PLATO 1 | 12eh | 2025-07-27 18:00 | 2025-07-28 06:00 | 371 | 1.38d | 0d |
| 373 | 1.2.2.1.14.5 | CORTE Y DESMONTAJE DE PLATO P1 | 36eh | 2025-07-28 06:00 | 2025-07-29 18:00 | 372 | 1.38d | 0d |
| 374 | 1.2.2.1.14.6 | PREPARACIÓN Y END EN ARO SOPORTE | 18eh | 2025-07-29 18:00 | 2025-07-30 12:00 | 373 | 1.38d | 0d |
| 375 | 1.2.2.1.14.7 | MONTAJE Y SOLDADURA DE PLATO P1 | 96eh | 2025-07-30 12:00 | 2025-08-03 12:00 | 374 | 1.38d | 0d |
| 376 | 1.2.2.1.14.8 | MONTAJE DE PLATO 1 | 12eh | 2025-08-03 12:00 | 2025-08-04 00:00 | 375 | 3.46d | 0d |
| 377 | 1.2.2.1.14.9 | REPOSICIÓN DE CLAPETAS Y BULONERÍA | 12eh | 2025-08-04 00:00 | 2025-08-04 12:00 | 376 | 3.46d | 0d |
| 378 | 1.2.2.1.14.10 | LIMPIEZA FINA | 18eh | 2025-08-04 12:00 | 2025-08-05 06:00 | 377 | 3.46d | 0d |
| 379 | 1.2.2.1.14.11 | INSPECCIÓN PROCESOS | 12eh | 2025-08-05 06:00 | 2025-08-05 18:00 | 378 | 3.46d | 0d |
| 380 | 1.2.2.1.14.12 | AJUSTE DE PLATOS | 18eh | 2025-08-05 18:00 | 2025-08-06 12:00 | 379 | 3.46d | 0d |
| 381 | 1.2.2.1.14.13 | DESTAPADO Y RECEPCIÓN TOMA DE INSTRUMENTOS | 4eh | 2025-08-06 12:00 | 2025-08-06 16:00 | 380 | 3.46d | 0d |
| 382 | 1.2.2.1.14.14 | RECEPCIÓN FINAL IEE Y PROCESOS | 18eh | 2025-08-06 16:00 | 2025-08-07 10:00 | 381 | 3.46d | 0d |
| 383 | 1.2.2.1.14.15 | PRUEBA DE ESTANQUEIDAD PLATO P1 | 6eh | 2025-08-07 10:00 | 2025-08-07 16:00 | 382 | 3.46d | 0d |
| 384 | 1.2.2.1.14.16 | CIERRE DE PASAJES | 6eh | 2025-08-07 16:00 | 2025-08-07 22:00 | 383 | 3.46d | 0d |
| 385 | 1.2.2.1.14.17 | CIERRE Y TORQUEO DE PH (M5) | 8eh | 2025-08-07 22:00 | 2025-08-08 06:00 | 384 | 3.46d | 3.25d |
| 386 | 1.2.2.1.15 | **PLATOS S6-FONDO** | 21.57d | 2025-07-20 02:00 | 2025-08-10 16:00 |  | 6.29d |  |
| 387 | 1.2.2.1.15.1 | MONTAJE DE ANDAMIO DE FONDO | 12eh | 2025-07-20 02:00 | 2025-07-20 14:00 | 319 | 11.79d | 5.67d |
| 388 | 1.2.2.1.15.2 | RETIRO DE CARBÓN PLATOS S Y FONDO | 36eh | 2025-07-26 06:00 | 2025-07-27 18:00 | 369, 387 | 6.13d | 0d |
| 389 | 1.2.2.1.15.3 | CEPILLADO SEGÚN ANEXO I | 24eh | 2025-07-27 18:00 | 2025-07-28 18:00 | 388 | 6.13d | 0d |
| 390 | 1.2.2.1.15.4 | INSPECCIÓN Y END | 18eh | 2025-07-28 18:00 | 2025-07-29 12:00 | 371, 389 | 6.13d | 0d |
| 391 | 1.2.2.1.15.5 | LIMPIEZA DE CANASTO Y SALIDA DE FONDO | 6eh | 2025-07-29 12:00 | 2025-07-29 18:00 | 390 | 6.13d | 4.75d |
| 392 | 1.2.2.1.15.6 | REPARACIONES METALÚRGICAS (POSIBLE CAMBIO DE PLATOS S) | 36eh | 2025-08-03 12:00 | 2025-08-05 00:00 | 375, 391 | 1.38d | 0d |
| 393 | 1.2.2.1.15.7 | REMPLAZO DE CONEXIÓN 18F + TT | 24eh | 2025-08-05 00:00 | 2025-08-06 00:00 | 392 | 1.38d | 0d |
| 394 | 1.2.2.1.15.8 | REMPLAZO DE BRIDAS EN SALIDA DE FONDO + TT | 30eh | 2025-08-06 00:00 | 2025-08-07 06:00 | 393 | 1.38d | 0d |
| 395 | 1.2.2.1.15.9 | LIMPIEZA FINA | 18eh | 2025-08-07 06:00 | 2025-08-08 00:00 | 394 | 1.38d | 0d |
| 396 | 1.2.2.1.15.10 | INSPECCIÓN PROCESOS | 12eh | 2025-08-08 00:00 | 2025-08-08 12:00 | 395 | 1.38d | 0d |
| 397 | 1.2.2.1.15.11 | AJUSTE DE PLATOS Y REPOSICIÓN DE BULONERÍA | 12eh | 2025-08-08 12:00 | 2025-08-09 00:00 | 396 | 1.38d | 0d |
| 398 | 1.2.2.1.15.12 | DESTAPADO Y RECEPCIÓN TOMA DE INSTRUMENTOS | 4eh | 2025-08-09 00:00 | 2025-08-09 04:00 | 397 | 1.38d | 0d |
| 399 | 1.2.2.1.15.13 | RECEPCIÓN FINAL IEE Y PROCESOS | 12eh | 2025-08-09 04:00 | 2025-08-09 16:00 | 398 | 1.38d | 0d |
| 400 | 1.2.2.1.15.14 | RECEPCIÓN SALIDA DE FONDO | 4eh | 2025-08-09 16:00 | 2025-08-09 20:00 | 399 | 1.38d | 0d |
| 401 | 1.2.2.1.15.15 | DESMONTAJE DE ANDAMIO DE FONDO | 12eh | 2025-08-09 20:00 | 2025-08-10 08:00 | 400 | 1.38d | 0d |
| 402 | 1.2.2.1.15.16 | CIERRE Y TORQUEO DE PH | 8eh | 2025-08-10 08:00 | 2025-08-10 16:00 | 401 | 6.29d |  |
| 403 | 1.2.2.1.16 | RETIRO Y NORMALIZADO DE CIEGOS | 30eh | 2025-08-11 12:00 | 2025-08-12 18:00 | 325, 341, 355, 367, 385, 401 | 0.21d |  |

Notes:
- 375: 125 metros lineales de soldadura

| ID | WBS | Task | Duration | Start | Finish | Predecessors | Total slack | Free slack |
| --- | --- | --- | --- | --- | --- | --- | --- | --- |
| 404 | 1.2.2.2 | **E602** | 7.99d | 2025-07-17 18:00 | 2025-07-25 18:00 |  | 8.2d |  |
| 405 | 1.2.2.2.1 | CEGADO | 12eh | 2025-07-17 18:00 | 2025-07-18 06:00 | 6 | 8.21d | 0d |
| 406 | 1.2.2.2.2 | APERTURA DE PH | 6eh | 2025-07-18 06:00 | 2025-07-18 12:00 | 405 | 8.21d | 0d |
| 407 | 1.2.2.2.3 | VENTILACIÓN | 12eh | 2025-07-18 12:00 | 2025-07-19 00:00 | 406 | 8.21d | 0d |
| 408 | 1.2.2.2.4 | APERTURA DE PASAJES | 6eh | 2025-07-19 00:00 | 2025-07-19 06:00 | 407 | 8.21d | 0d |
| 409 | 1.2.2.2.5 | MONTAJE DE ANDAMIO DE FONDO | 6eh | 2025-07-19 06:00 | 2025-07-19 12:00 | 408 | 8.21d | 0d |
| 410 | 1.2.2.2.6 | LIMPIEZA GRUESA | 12eh | 2025-07-19 12:00 | 2025-07-20 00:00 | 409 | 8.21d | 0d |
| 411 | 1.2.2.2.7 | CEPILLADO SEGÚN ANEXO I | 12eh | 2025-07-20 00:00 | 2025-07-20 12:00 | 410 | 8.21d | 0d |
| 412 | 1.2.2.2.8 | INSPECCIÓN Y END | 12eh | 2025-07-20 12:00 | 2025-07-21 00:00 | 411 | 8.21d | 0d |
| 413 | 1.2.2.2.9 | INSPECCIÓN PROCESOS | 6eh | 2025-07-21 00:00 | 2025-07-21 06:00 | 412 | 8.46d | 0d |
| 414 | 1.2.2.2.10 | REPARACIONES METALÚRGICAS Y AJUSTE DE PLATOS | 48eh | 2025-07-21 06:00 | 2025-07-23 06:00 | 413 | 8.46d | 0d |
| 415 | 1.2.2.2.11 | LIMPIEZA FINA | 12eh | 2025-07-23 06:00 | 2025-07-23 18:00 | 414 | 8.46d | 0d |
| 416 | 1.2.2.2.12 | RECEPCIÓN FINAL IEE Y PROCESOS | 12eh | 2025-07-23 18:00 | 2025-07-24 06:00 | 415 | 8.46d | 0d |
| 417 | 1.2.2.2.13 | RECEPCIÓN TOMAS INSTRUMENTOS | 4eh | 2025-07-24 06:00 | 2025-07-24 10:00 | 416 | 8.46d | 0d |
| 418 | 1.2.2.2.14 | CIERRE DE PASAJES | 6eh | 2025-07-24 10:00 | 2025-07-24 16:00 | 417 | 8.46d | 0d |
| 419 | 1.2.2.2.15 | DESMONTAJE DE ANDAMIO DE FONDO | 4eh | 2025-07-24 16:00 | 2025-07-24 20:00 | 418 | 8.46d | 0d |
| 420 | 1.2.2.2.16 | LIMPIEZA DE FONDO Y RECEPCÍON SALIDA DE FONDO | 4eh | 2025-07-24 20:00 | 2025-07-25 00:00 | 419 | 8.46d | 0d |
| 421 | 1.2.2.2.17 | CIERRE DE PH | 6eh | 2025-07-25 00:00 | 2025-07-25 06:00 | 420 | 18.21d | 0d |
| 422 | 1.2.2.2.18 | RETIRO DE CIEGOS | 12eh | 2025-07-25 06:00 | 2025-07-25 18:00 | 421 | 18.21d |  |
| 423 | 1.2.2.3 | **E651** | 18.24d | 2025-07-17 18:00 | 2025-08-05 00:00 |  | 7.95d |  |
| 424 | 1.2.2.3.1 | CEGADO | 24eh | 2025-07-17 18:00 | 2025-07-18 18:00 | 6 | 13.71d | 0d |
| 425 | 1.2.2.3.2 | APERTURA DE PH | 12eh | 2025-07-18 18:00 | 2025-07-19 06:00 | 424 | 13.71d | 0d |
| 426 | 1.2.2.3.3 | VENTILACIÓN | 12eh | 2025-07-19 06:00 | 2025-07-19 18:00 | 425 | 13.71d | 5.25d |
| 427 | 1.2.2.3.4 | **SECCIÓN SUPERIOR (PLATOS 52 AL 21)** | 7.99d | 2025-07-25 00:00 | 2025-08-02 00:00 |  | 8.45d |  |
| 428 | 1.2.2.3.4.1 | APERTURA DE PASAJES | 12eh | 2025-07-25 00:00 | 2025-07-25 12:00 | 420, 426 | 8.46d | 0d |
| 429 | 1.2.2.3.4.2 | MONTAJE DE ANDAMIO DE FONDO | 6eh | 2025-07-25 12:00 | 2025-07-25 18:00 | 428 | 8.46d | 0d |
| 430 | 1.2.2.3.4.3 | LIMPIEZA GRUESA | 24eh | 2025-07-25 18:00 | 2025-07-26 18:00 | 429 | 8.46d | 0d |
| 431 | 1.2.2.3.4.4 | CEPILLADO SEGÚN ANEXO I | 18eh | 2025-07-26 18:00 | 2025-07-27 12:00 | 430 | 8.96d | 0d |
| 432 | 1.2.2.3.4.5 | INSPECCIÓN Y END | 12eh | 2025-07-27 12:00 | 2025-07-28 00:00 | 431 | 8.96d | 0d |
| 433 | 1.2.2.3.4.6 | INSPECCIÓN PROCESOS | 12eh | 2025-07-28 00:00 | 2025-07-28 12:00 | 432 | 9.46d | 0d |
| 434 | 1.2.2.3.4.7 | REPARACIONES METALÚRGICAS Y AJUSTE DE PLATOS | 48eh | 2025-07-28 12:00 | 2025-07-30 12:00 | 433 | 9.46d | 0d |
| 435 | 1.2.2.3.4.8 | LIMPIEZA FINA | 24eh | 2025-07-30 12:00 | 2025-07-31 12:00 | 434 | 9.46d | 0d |
| 436 | 1.2.2.3.4.9 | RECEPCIÓN FINAL IEE Y PROCESOS | 12eh | 2025-07-31 12:00 | 2025-08-01 00:00 | 435 | 9.46d | 0d |
| 437 | 1.2.2.3.4.10 | RECEPCIÓN TOMAS INSTRUMENTOS | 4eh | 2025-08-01 00:00 | 2025-08-01 04:00 | 436 | 9.46d | 0d |
| 438 | 1.2.2.3.4.11 | CIERRE DE PASAJES | 12eh | 2025-08-01 04:00 | 2025-08-01 16:00 | 437 | 9.46d | 0d |
| 439 | 1.2.2.3.4.12 | DESMONTAJE DE ANDAMIO DE FONDO | 4eh | 2025-08-01 16:00 | 2025-08-01 20:00 | 438 | 9.46d | 0d |
| 440 | 1.2.2.3.4.13 | LIMPIEZA DE FONDO Y RECEPCÍON SALIDA DE FONDO | 4eh | 2025-08-01 20:00 | 2025-08-02 00:00 | 439 | 9.46d | 1.5d |

| ID | WBS | Task | Duration | Start | Finish | Predecessors | Total slack | Free slack |
| --- | --- | --- | --- | --- | --- | --- | --- | --- |
| 441 | 1.2.2.3.5 | **SECCIÓN SUPERIOR (PLATOS 20 AL FONDO)** | 7.99d | 2025-07-26 12:00 | 2025-08-03 12:00 |  | 7.95d |  |
| 442 | 1.2.2.3.5.1 | APERTURA DE PASAJES | 12eh | 2025-07-26 12:00 | 2025-07-27 00:00 | 426, 473 | 7.96d | 0d |
| 443 | 1.2.2.3.5.2 | MONTAJE DE ANDAMIO DE FONDO | 6eh | 2025-07-27 00:00 | 2025-07-27 06:00 | 442 | 7.96d | 0d |
| 444 | 1.2.2.3.5.3 | LIMPIEZA GRUESA | 24eh | 2025-07-27 06:00 | 2025-07-28 06:00 | 430, 443 | 7.96d | 0d |
| 445 | 1.2.2.3.5.4 | CEPILLADO SEGÚN ANEXO I | 18eh | 2025-07-28 06:00 | 2025-07-29 00:00 | 444 | 7.96d | 0d |
| 446 | 1.2.2.3.5.5 | INSPECCIÓN Y END | 12eh | 2025-07-29 00:00 | 2025-07-29 12:00 | 432, 445 | 7.96d | 0d |
| 447 | 1.2.2.3.5.6 | INSPECCIÓN PROCESOS | 12eh | 2025-07-29 12:00 | 2025-07-30 00:00 | 446 | 7.96d | 0d |
| 448 | 1.2.2.3.5.7 | REPARACIONES METALÚRGICAS Y AJUSTE DE PLATOS | 48eh | 2025-07-30 00:00 | 2025-08-01 00:00 | 447 | 7.96d | 0d |
| 449 | 1.2.2.3.5.8 | LIMPIEZA FINA | 24eh | 2025-08-01 00:00 | 2025-08-02 00:00 | 448 | 7.96d | 0d |
| 450 | 1.2.2.3.5.9 | RECEPCIÓN FINAL IEE Y PROCESOS | 12eh | 2025-08-02 00:00 | 2025-08-02 12:00 | 449 | 7.96d | 0d |
| 451 | 1.2.2.3.5.10 | RECEPCIÓN TOMAS INSTRUMENTOS | 4eh | 2025-08-02 12:00 | 2025-08-02 16:00 | 450 | 7.96d | 0d |
| 452 | 1.2.2.3.5.11 | CIERRE DE PASAJES | 12eh | 2025-08-02 16:00 | 2025-08-03 04:00 | 451 | 7.96d | 0d |
| 453 | 1.2.2.3.5.12 | DESMONTAJE DE ANDAMIO DE FONDO | 4eh | 2025-08-03 04:00 | 2025-08-03 08:00 | 452 | 7.96d | 0d |
| 454 | 1.2.2.3.5.13 | LIMPIEZA DE FONDO Y RECEPCÍON SALIDA DE FONDO | 4eh | 2025-08-03 08:00 | 2025-08-03 12:00 | 453 | 7.96d | 0d |
| 455 | 1.2.2.3.6 | CIERRE DE PH | 12eh | 2025-08-03 12:00 | 2025-08-04 00:00 | 440, 454 | 7.96d | 0d |
| 456 | 1.2.2.3.7 | RETIRO DE CIEGOS | 24eh | 2025-08-04 00:00 | 2025-08-05 00:00 | 455 | 7.96d |  |
| 457 | 1.2.2.4 | **E652** | 9.49d | 2025-07-17 18:00 | 2025-07-27 06:00 |  | 7.95d |  |
| 458 | 1.2.2.4.1 | CEGADO | 12eh | 2025-07-17 18:00 | 2025-07-18 06:00 | 6 | 7.96d | 0d |
| 459 | 1.2.2.4.2 | APERTURA DE PH | 6eh | 2025-07-18 06:00 | 2025-07-18 12:00 | 458 | 7.96d | 0d |
| 460 | 1.2.2.4.3 | VENTILACIÓN | 12eh | 2025-07-18 12:00 | 2025-07-19 00:00 | 459 | 7.96d | 0d |
| 461 | 1.2.2.4.4 | APERTURA DE PASAJES | 12eh | 2025-07-19 00:00 | 2025-07-19 12:00 | 460 | 7.96d | 0d |
| 462 | 1.2.2.4.5 | MONTAJE DE ANDAMIO DE FONDO | 6eh | 2025-07-19 12:00 | 2025-07-19 18:00 | 461 | 7.96d | 0d |
| 463 | 1.2.2.4.6 | LIMPIEZA GRUESA | 24eh | 2025-07-19 18:00 | 2025-07-20 18:00 | 462 | 7.96d | 0d |
| 464 | 1.2.2.4.7 | CEPILLADO SEGÚN ANEXO I | 12eh | 2025-07-20 18:00 | 2025-07-21 06:00 | 463 | 7.96d | 0d |
| 465 | 1.2.2.4.8 | INSPECCIÓN Y END | 12eh | 2025-07-21 06:00 | 2025-07-21 18:00 | 412, 464 | 7.96d | 0d |
| 466 | 1.2.2.4.9 | INSPECCIÓN PROCESOS | 6eh | 2025-07-21 18:00 | 2025-07-22 00:00 | 465 | 7.96d | 0d |
| 467 | 1.2.2.4.10 | REPARACIONES METALÚRGICAS Y AJUSTE DE PLATOS | 48eh | 2025-07-22 00:00 | 2025-07-24 00:00 | 466 | 7.96d | 0d |
| 468 | 1.2.2.4.11 | LIMPIEZA FINA | 24eh | 2025-07-24 00:00 | 2025-07-25 00:00 | 467 | 7.96d | 0d |
| 469 | 1.2.2.4.12 | RECEPCIÓN FINAL IEE Y PROCESOS | 12eh | 2025-07-25 00:00 | 2025-07-25 12:00 | 468 | 7.96d | 0d |
| 470 | 1.2.2.4.13 | RECEPCIÓN TOMAS INSTRUMENTOS | 4eh | 2025-07-25 12:00 | 2025-07-25 16:00 | 469 | 7.96d | 0d |
| 471 | 1.2.2.4.14 | CIERRE DE PASAJES | 12eh | 2025-07-25 16:00 | 2025-07-26 04:00 | 470 | 7.96d | 0d |
| 472 | 1.2.2.4.15 | DESMONTAJE DE ANDAMIO DE FONDO | 4eh | 2025-07-26 04:00 | 2025-07-26 08:00 | 471 | 7.96d | 0d |
| 473 | 1.2.2.4.16 | LIMPIEZA DE FONDO Y RECEPCÍON SALIDA DE FONDO | 4eh | 2025-07-26 08:00 | 2025-07-26 12:00 | 472 | 7.96d | 0d |
| 474 | 1.2.2.4.17 | CIERRE DE PH | 6eh | 2025-07-26 12:00 | 2025-07-26 18:00 | 473 | 16.71d | 0d |
| 475 | 1.2.2.4.18 | RETIRO DE CIEGOS | 12eh | 2025-07-26 18:00 | 2025-07-27 06:00 | 474 | 16.71d |  |

| ID | WBS | Task | Duration | Start | Finish | Predecessors | Total slack | Free slack |
| --- | --- | --- | --- | --- | --- | --- | --- | --- |
| 476 | 1.2.2.5 | **E653** | 12.49d | 2025-07-17 18:00 | 2025-07-30 06:00 |  | 1.46d |  |
| 477 | 1.2.2.5.1 | CEGADO | 24eh | 2025-07-17 18:00 | 2025-07-18 18:00 | 6 | 1.46d | 0d |
| 478 | 1.2.2.5.2 | APERTURA DE PH | 12eh | 2025-07-18 18:00 | 2025-07-19 06:00 | 477 | 1.46d | 0d |
| 479 | 1.2.2.5.3 | VENTILACIÓN | 12eh | 2025-07-19 06:00 | 2025-07-19 18:00 | 478 | 1.46d | 0d |
| 480 | 1.2.2.5.4 | **SECCIÓN SUPERIOR (PLATOS 44 AL 23)** | 7.66d | 2025-07-19 18:00 | 2025-07-27 10:00 |  | 1.46d |  |
| 481 | 1.2.2.5.4.1 | APERTURA DE PASAJES | 12eh | 2025-07-19 18:00 | 2025-07-20 06:00 | 479 | 1.71d | 0.25d |
| 482 | 1.2.2.5.4.2 | LIMPIEZA GRUESA | 24eh | 2025-07-20 12:00 | 2025-07-21 12:00 | 481, 492, 493 | 1.46d | 0d |
| 483 | 1.2.2.5.4.3 | CEPILLADO SEGÚN ANEXO I | 18eh | 2025-07-21 12:00 | 2025-07-22 06:00 | 482 | 1.46d | 0d |
| 484 | 1.2.2.5.4.4 | INSPECCIÓN Y END | 12eh | 2025-07-22 06:00 | 2025-07-22 18:00 | 483 | 1.46d | 0d |
| 485 | 1.2.2.5.4.5 | INSPECCIÓN PROCESOS | 12eh | 2025-07-22 18:00 | 2025-07-23 06:00 | 484 | 1.46d | 0d |
| 486 | 1.2.2.5.4.6 | REPARACIONES METALÚRGICAS Y AJUSTE DE PLATOS | 48eh | 2025-07-23 06:00 | 2025-07-25 06:00 | 485 | 1.46d | 0d |
| 487 | 1.2.2.5.4.7 | LIMPIEZA FINA | 24eh | 2025-07-25 06:00 | 2025-07-26 06:00 | 486 | 1.46d | 0d |
| 488 | 1.2.2.5.4.8 | RECEPCIÓN FINAL IEE Y PROCESOS | 12eh | 2025-07-26 06:00 | 2025-07-26 18:00 | 487 | 1.46d | 0d |
| 489 | 1.2.2.5.4.9 | RECEPCIÓN TOMAS INSTRUMENTOS | 4eh | 2025-07-26 18:00 | 2025-07-26 22:00 | 488 | 1.46d | 0d |
| 490 | 1.2.2.5.4.10 | CIERRE DE PASAJES | 12eh | 2025-07-26 22:00 | 2025-07-27 10:00 | 489 | 1.46d | 0d |
| 491 | 1.2.2.5.5 | **SECCIÓN INFERIOR (PLATOS 22 AL FONDO)** | 8.99d | 2025-07-19 18:00 | 2025-07-28 18:00 |  | 1.46d |  |
| 492 | 1.2.2.5.5.1 | APERTURA DE PASAJES | 12eh | 2025-07-19 18:00 | 2025-07-20 06:00 | 479 | 1.46d | 0d |
| 493 | 1.2.2.5.5.2 | MONTAJE DE ANDAMIO DE FONDO | 6eh | 2025-07-20 06:00 | 2025-07-20 12:00 | 492 | 1.46d | 0d |
| 494 | 1.2.2.5.5.3 | LIMPIEZA GRUESA | 24eh | 2025-07-21 12:00 | 2025-07-22 12:00 | 482 | 9.38d | 0d |
| 495 | 1.2.2.5.5.4 | CEPILLADO SEGÚN ANEXO I | 18eh | 2025-07-22 12:00 | 2025-07-23 06:00 | 494 | 9.38d | 0d |
| 496 | 1.2.2.5.5.5 | INSPECCIÓN Y END | 12eh | 2025-07-23 06:00 | 2025-07-23 18:00 | 484, 495 | 9.38d | 0d |
| 497 | 1.2.2.5.5.6 | INSPECCIÓN PROCESOS | 12eh | 2025-07-23 18:00 | 2025-07-24 06:00 | 496 | 13.71d | 0d |
| 498 | 1.2.2.5.5.7 | REPARACIONES METALÚRGICAS Y AJUSTE DE PLATOS | 48eh | 2025-07-24 06:00 | 2025-07-26 06:00 | 497 | 13.71d | 0d |
| 499 | 1.2.2.5.5.8 | LIMPIEZA FINA | 24eh | 2025-07-26 06:00 | 2025-07-27 06:00 | 498 | 13.71d | 0d |
| 500 | 1.2.2.5.5.9 | RECEPCIÓN FINAL IEE Y PROCESOS | 12eh | 2025-07-27 06:00 | 2025-07-27 18:00 | 499 | 13.71d | 0d |
| 501 | 1.2.2.5.5.10 | RECEPCIÓN TOMAS INSTRUMENTOS | 4eh | 2025-07-27 18:00 | 2025-07-27 22:00 | 500 | 13.71d | 0d |
| 502 | 1.2.2.5.5.11 | CIERRE DE PASAJES | 12eh | 2025-07-27 22:00 | 2025-07-28 10:00 | 501 | 13.71d | 0d |
| 503 | 1.2.2.5.5.12 | DESMONTAJE DE ANDAMIO DE FONDO | 4eh | 2025-07-28 10:00 | 2025-07-28 14:00 | 502 | 13.71d | 0d |
| 504 | 1.2.2.5.5.13 | LIMPIEZA DE FONDO Y RECEPCÍON SALIDA DE FONDO | 4eh | 2025-07-28 14:00 | 2025-07-28 18:00 | 503 | 13.71d | 0d |
| 505 | 1.2.2.5.6 | CIERRE DE PH | 12eh | 2025-07-28 18:00 | 2025-07-29 06:00 | 490, 504 | 13.71d | 0d |
| 506 | 1.2.2.5.7 | RETIRO DE CIEGOS | 24eh | 2025-07-29 06:00 | 2025-07-30 06:00 | 505 | 13.71d |  |

| ID | WBS | Task | Duration | Start | Finish | Predecessors | Total slack | Free slack |
| --- | --- | --- | --- | --- | --- | --- | --- | --- |
| 507 | 1.2.2.6 | **E654** | 20.65d | 2025-07-18 18:00 | 2025-08-08 10:00 |  | 8.54d |  |
| 508 | 1.2.2.6.1 | CEGADO | 18eh | 2025-07-18 18:00 | 2025-07-19 12:00 | 477 | 27.46d | 0d |
| 509 | 1.2.2.6.2 | APERTURA DE PH | 12eh | 2025-07-19 12:00 | 2025-07-20 00:00 | 508 | 27.46d | 0d |
| 510 | 1.2.2.6.3 | VENTILACIÓN | 12eh | 2025-07-20 00:00 | 2025-07-20 12:00 | 509 | 27.46d |  |
| 511 | 1.2.2.6.4 | APERTURA DE PASAJES | 24eh | 2025-07-27 10:00 | 2025-07-28 10:00 | 490 | 1.46d | 0d |
| 512 | 1.2.2.6.5 | MONTAJE DE ANDAMIO DE FONDO | 6eh | 2025-07-28 10:00 | 2025-07-28 16:00 | 511 | 1.46d | 0d |
| 513 | 1.2.2.6.6 | LIMPIEZA GRUESA | 48eh | 2025-07-28 16:00 | 2025-07-30 16:00 | 512 | 1.46d | 0d |
| 514 | 1.2.2.6.7 | CEPILLADO SEGÚN ANEXO I | 24eh | 2025-07-30 16:00 | 2025-07-31 16:00 | 513 | 1.46d | 0d |
| 515 | 1.2.2.6.8 | INSPECCIÓN Y END | 24eh | 2025-07-31 16:00 | 2025-08-01 16:00 | 496, 514 | 1.46d | 0d |
| 516 | 1.2.2.6.9 | INSPECCIÓN PROCESOS | 12eh | 2025-08-01 16:00 | 2025-08-02 04:00 | 515 | 1.46d | 0d |
| 517 | 1.2.2.6.10 | REPARACIONES METALÚRGICAS Y AJUSTE DE PLATOS | 48eh | 2025-08-02 04:00 | 2025-08-04 04:00 | 516 | 1.46d | 0d |
| 518 | 1.2.2.6.11 | LIMPIEZA FINA | 24eh | 2025-08-04 04:00 | 2025-08-05 04:00 | 517 | 1.46d | 0d |
| 519 | 1.2.2.6.12 | RECEPCIÓN FINAL IEE Y PROCESOS | 12eh | 2025-08-05 04:00 | 2025-08-05 16:00 | 518 | 1.46d | 0d |
| 520 | 1.2.2.6.13 | RECEPCIÓN TOMAS INSTRUMENTOS | 4eh | 2025-08-05 16:00 | 2025-08-05 20:00 | 519 | 1.46d | 0d |
| 521 | 1.2.2.6.14 | CIERRE DE PASAJES | 24eh | 2025-08-05 20:00 | 2025-08-06 20:00 | 520 | 1.46d | 0d |
| 522 | 1.2.2.6.15 | DESMONTAJE DE ANDAMIO DE FONDO | 4eh | 2025-08-06 20:00 | 2025-08-07 00:00 | 521 | 1.46d | 0d |
| 523 | 1.2.2.6.16 | LIMPIEZA DE FONDO Y RECEPCÍON SALIDA DE FONDO | 4eh | 2025-08-07 00:00 | 2025-08-07 04:00 | 522 | 1.46d | 0d |
| 524 | 1.2.2.6.17 | CIERRE DE PH | 12eh | 2025-08-07 04:00 | 2025-08-07 16:00 | 523 | 4.54d | 0d |
| 525 | 1.2.2.6.18 | RETIRO DE CIEGOS | 18eh | 2025-08-07 16:00 | 2025-08-08 10:00 | 524 | 4.54d |  |
| 526 | 1.2.2.7 | **E661** | 23.23d | 2025-07-19 06:00 | 2025-08-11 12:00 |  | 5.46d |  |
| 527 | 1.2.2.7.1 | CEGADO | 12eh | 2025-07-19 06:00 | 2025-07-19 18:00 | 478 | 19.63d | 0d |
| 528 | 1.2.2.7.2 | APERTURA DE BOCAS DE INSPECCIÓN | 6eh | 2025-07-19 18:00 | 2025-07-20 00:00 | 527 | 19.63d | 0d |
| 529 | 1.2.2.7.3 | DESMONTAJE Y LIMPIEZA DE DISTRIBUIDORES | 12eh | 2025-07-20 00:00 | 2025-07-20 12:00 | 528 | 27.46d |  |
| 530 | 1.2.2.7.4 | LIMPIEZA INTERIOR | 12eh | 2025-08-07 04:00 | 2025-08-07 16:00 | 523, 528 | 1.46d | 0d |
| 531 | 1.2.2.7.5 | CEPILLADO SEGÚN ANEXO I | 12eh | 2025-08-07 16:00 | 2025-08-08 04:00 | 530 | 1.46d | 0d |
| 532 | 1.2.2.7.6 | INSPECCIÓN Y END | 12eh | 2025-08-08 04:00 | 2025-08-08 16:00 | 531 | 1.46d | 0d |
| 533 | 1.2.2.7.7 | INSPECCIÓN PROCESOS | 6eh | 2025-08-08 16:00 | 2025-08-08 22:00 | 532 | 1.46d | 0d |
| 534 | 1.2.2.7.8 | REPARACIONES METALÚRGICAS | 24eh | 2025-08-08 22:00 | 2025-08-09 22:00 | 533 | 1.46d | 0d |
| 535 | 1.2.2.7.9 | MONTAJE DE DISTRIBUIDORES | 6eh | 2025-08-09 22:00 | 2025-08-10 04:00 | 534 | 1.46d | 0d |
| 536 | 1.2.2.7.10 | RECEPCIÓN FINAL IEE Y PROCESOS | 6eh | 2025-08-10 04:00 | 2025-08-10 10:00 | 535 | 1.46d | 0d |
| 537 | 1.2.2.7.11 | RECEPCIÓN TOMAS INSTRUMENTOS | 4eh | 2025-08-10 10:00 | 2025-08-10 14:00 | 536 | 1.46d | 0d |
| 538 | 1.2.2.7.12 | LIMPIEZA DE FONDO Y RECEPCÍON SALIDA DE FONDO | 4eh | 2025-08-10 14:00 | 2025-08-10 18:00 | 537 | 1.46d | 0d |
| 539 | 1.2.2.7.13 | CIERRE DE BOCAS DE INSPECCIÓN | 6eh | 2025-08-10 18:00 | 2025-08-11 00:00 | 538 | 1.46d | 0d |
| 540 | 1.2.2.7.14 | RETIRO DE CIEGOS | 12eh | 2025-08-11 00:00 | 2025-08-11 12:00 | 539 | 1.46d |  |

| ID | WBS | Task | Duration | Start | Finish | Predecessors | Baseline start | Baseline finish | Baseline duration | Total slack | Free slack |
| --- | --- | --- | --- | --- | --- | --- | --- | --- | --- | --- | --- |
| 541 | 1.2.2.8 | **E662** | 4.25d | 2025-07-19 18:00 | 2025-07-24 00:00 |  |  |  |  | 19.95d |  |
| 542 | 1.2.2.8.1 | CEGADO | 6eh | 2025-07-19 18:00 | 2025-07-20 00:00 | 527 |  |  |  | 19.96d | 0d |
| 543 | 1.2.2.8.2 | APERTURA DE TAPA SUPERIOR | 6eh | 2025-07-20 00:00 | 2025-07-20 06:00 | 542 |  |  |  | 19.96d | 0d |
| 544 | 1.2.2.8.3 | DESMONTAJE Y LIMPIEZA DE DEMISTER | 12eh | 2025-07-20 06:00 | 2025-07-20 18:00 | 543 |  |  |  | 19.96d | 0d |
| 545 | 1.2.2.8.4 | LIMPIEZA INTERIOR | 12eh | 2025-07-20 18:00 | 2025-07-21 06:00 | 544 |  |  |  | 19.96d | 0d |
| 546 | 1.2.2.8.5 | CEPILLADO SEGÚN ANEXO I | 6eh | 2025-07-21 06:00 | 2025-07-21 12:00 | 545 |  |  |  | 19.96d | 0d |
| 547 | 1.2.2.8.6 | INSPECCIÓN Y END | 12eh | 2025-07-21 12:00 | 2025-07-22 00:00 | 546 |  |  |  | 19.96d | 0d |
| 548 | 1.2.2.8.7 | REPARACIONES METALÚRGICAS | 24eh | 2025-07-22 00:00 | 2025-07-23 00:00 | 547 |  |  |  | 19.96d | 0d |
| 549 | 1.2.2.8.8 | MONTAJE DE DEMISTER | 6eh | 2025-07-23 00:00 | 2025-07-23 06:00 | 548 |  |  |  | 19.96d | 0d |
| 550 | 1.2.2.8.9 | RECEPCIÓN FINAL IEE Y PROCESOS | 6eh | 2025-07-23 06:00 | 2025-07-23 12:00 | 549 |  |  |  | 19.96d | 0d |
| 551 | 1.2.2.8.10 | CIERRE DE TAPA SUPERIOR | 6eh | 2025-07-23 12:00 | 2025-07-23 18:00 | 550 |  |  |  | 19.96d | 0d |
| 552 | 1.2.2.8.11 | RETIRO DE CIEGOS | 6eh | 2025-07-23 18:00 | 2025-07-24 00:00 | 551 |  |  |  | 19.96d |  |
| 553 | 1.2.3 | **HORNO** | 16.65d | 2025-07-17 18:00 | 2025-08-03 10:00 |  | 2005-05-24 12:00 | 2005-05-29 08:00 | 4.83d | 9.54d |  |
| 554 | 1.2.3.1 | **B-601** | 16.65d | 2025-07-17 18:00 | 2025-08-03 10:00 |  | 2005-05-24 12:00 | 2005-05-29 08:00 | 4.83d | 9.54d |  |
| 555 | 1.2.3.1.1 | COLOCAR BC | 18eh | 2025-07-17 18:00 | 2025-07-18 12:00 | 6 |  |  |  | 9.54d | 0d |
| 556 | 1.2.3.1.2 | ABRIR PH | 6eh | 2025-07-18 12:00 | 2025-07-18 18:00 | 555 |  |  |  | 9.54d | 0d |
| 557 | 1.2.3.1.3 | CONEXIONES PARA DECOQUIZADO | 18eh | 2025-07-18 18:00 | 2025-07-19 12:00 | 556 |  |  |  | 28.46d |  |
| 558 | 1.2.3.1.4 | ENFRIAMIENTO | 24eh | 2025-07-18 18:00 | 2025-07-19 18:00 | 556 |  |  |  | 9.54d | 0d |
| 559 | 1.2.3.1.5 | ARMADO DE ANDAMIO EN RADIACION | 24eh | 2025-07-19 18:00 | 2025-07-20 18:00 | 558 | 2005-05-24 12:00 | 2005-05-24 12:00 | 0eh | 9.54d | 0d |
| 560 | 1.2.3.1.6 | ARMADO DE ANDAMIO EN CONVECTIVA-CHIMENEA | 18eh | 2025-07-20 18:00 | 2025-07-21 12:00 | 559 | 2005-05-24 20:00 | 2005-05-25 00:00 | 4eh | 9.54d | 0d |
| 561 | 1.2.3.1.7 | INSPECCION | 24eh | 2025-07-21 12:00 | 2025-07-22 12:00 | 560 | 2005-05-25 00:00 | 2005-05-25 08:00 | 8eh | 25.46d |  |
| 562 | 1.2.3.1.8 | REALIZAR MEDALLONES | 24eh | 2025-07-21 12:00 | 2025-07-22 12:00 | 560 | 2005-05-24 20:00 | 2005-05-25 02:00 | 6eh | 9.54d | 0d |
| 563 | 1.2.3.1.9 | DESMONTAJE DE QUEMADORES | 24h | 2025-07-18 18:00 | 2025-07-19 18:01 | 556 | 2005-05-25 02:00 | 2005-05-25 14:00 | 12eh | 16.36d | 0d |
| 564 | 1.2.3.1.10 | REPARACION Y CALIBRACION | 100eh | 2025-07-19 18:01 | 2025-07-23 22:01 | 563 | 2005-05-25 08:00 | 2005-05-25 12:00 | 4eh | 16.38d | 6.83d |
| 565 | 1.2.3.1.11 | INSPECCION TOMA DE ESPESORES | 24eh | 2025-07-22 12:00 | 2025-07-23 12:00 | 562 | 2005-05-25 12:00 | 2005-05-25 22:00 | 10eh | 9.54d | 0d |
| 566 | 1.2.3.1.12 | REALIZAR REPARACIONES DE AISLACION | 90eh | 2025-07-23 12:00 | 2025-07-27 06:00 | 565 | 2005-05-25 22:00 | 2005-05-26 04:00 | 6eh | 9.54d | 0d |
| 567 | 1.2.3.1.13 | INSPECCION Y REEMPLAZO DE TERMOCUPLAS | 60eh | 2025-07-27 06:00 | 2025-07-29 18:00 | 566 | 2005-05-26 04:00 | 2005-05-26 12:00 | 8eh | 9.54d | 0d |
| 568 | 1.2.3.1.14 | REPARACIONES DE PERCHAS Y SOPORTES DE TUBOS | 70eh | 2025-07-23 12:00 | 2025-07-26 10:00 | 565 | 2005-05-27 06:00 | 2005-05-27 18:00 | 12eh | 12.88d | 3.33d |
| 569 | 1.2.3.1.15 | DESMONTAR ANDAMIO RADIACION | 24eh | 2025-07-29 18:00 | 2025-07-30 18:00 | 567, 568 | 2005-05-27 18:00 | 2005-05-28 00:00 | 6eh | 9.54d | 0d |
| 570 | 1.2.3.1.16 | LIMPIEZA DE PISO | 18eh | 2025-07-30 18:00 | 2025-07-31 12:00 | 569 | 2005-05-28 00:00 | 2005-05-28 06:00 | 6eh | 15.79d | 0d |
| 571 | 1.2.3.1.17 | REPARACION DE CORONAS QUEM. | 16eh | 2025-07-31 12:00 | 2025-08-01 04:00 | 570 | 2005-05-28 06:00 | 2005-05-28 18:00 | 12eh | 15.79d |  |
| 572 | 1.2.3.1.18 | MONTAJE DE QUEMADORES Y ALINEACION | 40eh | 2025-07-30 18:00 | 2025-08-01 10:00 | 564, 569 | 2005-05-28 18:00 | 2005-05-28 22:00 | 4eh | 9.54d | 0d |
| 573 | 1.2.3.1.19 | INSPECCION | 12eh | 2025-08-01 10:00 | 2025-08-01 22:00 | 572 |  |  |  | 9.54d | 0d |
| 574 | 1.2.3.1.20 | CERRAR PH | 12eh | 2025-08-01 22:00 | 2025-08-02 10:00 | 573 | 2005-05-28 22:00 | 2005-05-29 02:00 | 4eh | 9.54d | 0d |
| 575 | 1.2.3.1.21 | RETIRAR B.C. | 24eh | 2025-08-02 10:00 | 2025-08-03 10:00 | 574 | 2005-05-29 02:00 | 2005-05-29 08:00 | 6eh | 9.54d |  |

| ID | WBS | Task | Duration | Start | Finish | Predecessors | Baseline start | Baseline finish | Baseline duration | Total slack | Free slack |
| --- | --- | --- | --- | --- | --- | --- | --- | --- | --- | --- | --- |
| 576 | 1.2.4 | **ACUMULADORES (25)** | 18.86d | 2025-07-16 18:00 | 2025-08-04 15:00 |  | 2005-05-24 12:00 | 2005-06-03 08:03 | 9.84d | 9.33d |  |
| 577 | 1.2.4.1 | **F-601** | 11.24d | 2025-07-17 18:00 | 2025-07-29 00:00 |  | 2005-05-24 12:00 | 2005-05-28 10:00 | 3.92d | 14.78d |  |
| 578 | 1.2.4.1.1 | COLOCAR BC | 10eh | 2025-07-17 18:00 | 2025-07-18 04:00 | 6 | 2005-05-24 12:00 | 2005-05-24 20:00 | 8eh | 14.79d | 0d |
| 579 | 1.2.4.1.2 | DESTAPAR PH | 8eh | 2025-07-18 04:00 | 2025-07-18 12:00 | 578 | 2005-05-24 20:00 | 2005-05-25 00:00 | 4eh | 14.79d | 0d |
| 580 | 1.2.4.1.3 | VENTILACION | 48eh | 2025-07-18 12:00 | 2025-07-20 12:00 | 579 | 2005-05-25 00:00 | 2005-05-26 00:00 | 24eh | 14.79d | 0d |
| 581 | 1.2.4.1.4 | COLOCAR ACCESO/ LUZ | 4eh | 2025-07-20 12:00 | 2025-07-20 16:00 | 580 | 2005-05-26 00:00 | 2005-05-26 04:00 | 4eh | 14.79d | 0d |
| 582 | 1.2.4.1.5 | LIMPIEZA INTERIOR | 60eh | 2025-07-20 16:00 | 2025-07-23 04:00 | 581 | 2005-05-26 04:00 | 2005-05-27 10:00 | 30eh | 14.79d | 0d |
| 583 | 1.2.4.1.6 | PREVER REPARACIONES | 72eh | 2025-07-23 04:00 | 2025-07-26 04:00 | 582 |  |  |  | 14.96d | 0d |
| 584 | 1.2.4.1.7 | INSPECCION | 10eh | 2025-07-26 04:00 | 2025-07-26 14:00 | 583 | 2005-05-27 10:00 | 2005-05-27 12:00 | 2eh | 14.96d | 0d |
| 585 | 1.2.4.1.8 | LIMPIEZA DE TOMAS | 12eh | 2025-07-26 14:00 | 2025-07-27 02:00 | 584 | 2005-05-27 12:00 | 2005-05-27 18:00 | 6eh | 14.96d | 0d |
| 586 | 1.2.4.1.9 | RETIRO ACCESO | 10eh | 2025-07-27 02:00 | 2025-07-27 12:00 | 585 | 2005-05-27 18:00 | 2005-05-27 22:00 | 4eh | 14.96d | 0d |
| 587 | 1.2.4.1.10 | TAPAR PH | 16eh | 2025-07-27 12:00 | 2025-07-28 04:00 | 586 | 2005-05-27 22:00 | 2005-05-28 02:00 | 4eh | 14.96d | 0d |
| 588 | 1.2.4.1.11 | RETIRAR BC | 20eh | 2025-07-28 04:00 | 2025-07-29 00:00 | 587 | 2005-05-28 02:00 | 2005-05-28 10:00 | 8eh | 14.96d |  |
| 589 | 1.2.4.1.12 | **F-602** | 10.58d | 2025-07-18 04:00 | 2025-07-28 18:00 |  |  |  |  | 15.2d |  |
| 590 | 1.2.4.1.12.1 | COLOCAR BC | 10eh | 2025-07-18 04:00 | 2025-07-18 14:00 | 578 |  |  |  | 15.21d | 0d |
| 591 | 1.2.4.1.12.2 | DESTAPAR PH | 8eh | 2025-07-18 14:00 | 2025-07-18 22:00 | 590 |  |  |  | 15.21d | 0d |
| 592 | 1.2.4.1.12.3 | VENTILACION | 48eh | 2025-07-18 22:00 | 2025-07-20 22:00 | 591 |  |  |  | 15.21d | 0d |
| 593 | 1.2.4.1.12.4 | COLOCAR ACCESO/ LUZ | 4eh | 2025-07-20 22:00 | 2025-07-21 02:00 | 592 |  |  |  | 15.21d | 0d |
| 594 | 1.2.4.1.12.5 | LIMPIEZA INTERIOR | 48eh | 2025-07-21 02:00 | 2025-07-23 02:00 | 593 |  |  |  | 15.21d | 0d |
| 595 | 1.2.4.1.12.6 | PREVER REPARACIONES | 72eh | 2025-07-23 02:00 | 2025-07-26 02:00 | 594 |  |  |  | 15.21d | 0d |
| 596 | 1.2.4.1.12.7 | INSPECCION | 12eh | 2025-07-26 02:00 | 2025-07-26 14:00 | 595 |  |  |  | 15.21d | 0d |
| 597 | 1.2.4.1.12.8 | LIMPIEZA DE TOMAS | 8eh | 2025-07-26 14:00 | 2025-07-26 22:00 | 596 |  |  |  | 15.21d | 0d |
| 598 | 1.2.4.1.12.9 | RETIRO ACCESO | 8eh | 2025-07-26 22:00 | 2025-07-27 06:00 | 597 |  |  |  | 15.21d | 0d |
| 599 | 1.2.4.1.12.10 | TAPAR PH | 12eh | 2025-07-27 06:00 | 2025-07-27 18:00 | 598 |  |  |  | 15.21d | 0d |
| 600 | 1.2.4.1.12.11 | RETIRAR BC | 24eh | 2025-07-27 18:00 | 2025-07-28 18:00 | 599 |  |  |  | 15.21d |  |

Notes:
- 577: 10000 mm x 3100 mm---H

| ID | WBS | Task | Duration | Start | Finish | Predecessors | Baseline start | Baseline finish | Baseline duration | Total slack | Free slack |
| --- | --- | --- | --- | --- | --- | --- | --- | --- | --- | --- | --- |
| 601 | 1.2.4.2 | **F-604** | 6.7d | 2025-07-18 12:00 | 2025-07-25 05:00 |  |  |  |  | 16.7d |  |
| 602 | 1.2.4.2.1 | COLOCAR BC | 8eh | 2025-07-18 12:00 | 2025-07-18 20:00 | 579 | 2005-05-24 16:00 | 2005-05-24 20:00 | 4eh | 16.71d | 0d |
| 603 | 1.2.4.2.2 | DESTAPAR PH | 6eh | 2025-07-18 20:00 | 2025-07-19 02:00 | 602 | 2005-05-25 12:00 | 2005-05-25 16:00 | 4eh | 16.71d | 0d |
| 604 | 1.2.4.2.3 | VENTILACION / LUZ | 48eh | 2025-07-19 02:00 | 2025-07-21 02:00 | 603 | 2005-05-25 16:00 | 2005-05-27 16:00 | 48eh | 16.71d | 0d |
| 605 | 1.2.4.2.4 | MONTAR ANDAMIO INTERIOR | 4eh | 2025-07-21 02:00 | 2025-07-21 06:00 | 604 | 2005-05-29 16:00 | 2005-05-29 20:00 | 4eh | 16.71d | 1.92d |
| 606 | 1.2.4.2.5 | LIMPIEZA INTERIOR | 24eh | 2025-07-23 04:00 | 2025-07-24 04:00 | 582, 605 | 2005-05-27 16:00 | 2005-05-28 04:00 | 12eh | 14.79d | 0d |
| 607 | 1.2.4.2.6 | INSPECCION | 3eh | 2025-07-24 04:00 | 2025-07-24 07:00 | 606 | 2005-05-28 04:00 | 2005-05-28 05:00 | 1eh | 18.75d | 0d |
| 608 | 1.2.4.2.7 | LIMPIEZA DE TOMAS | 6eh | 2025-07-24 07:00 | 2025-07-24 13:00 | 607 | 2005-05-28 05:00 | 2005-05-28 07:00 | 2eh | 18.75d | 0d |
| 609 | 1.2.4.2.8 | TAPAR PH | 6eh | 2025-07-24 13:00 | 2025-07-24 19:00 | 608 | 2005-05-28 07:00 | 2005-05-28 11:00 | 4eh | 18.75d | 0d |
| 610 | 1.2.4.2.9 | RETIRAR BC | 10eh | 2025-07-24 19:00 | 2025-07-25 05:00 | 609 | 2005-05-28 11:00 | 2005-05-28 15:00 | 4eh | 18.75d |  |
| 611 | 1.2.4.3 | **F-605** | 8.04d | 2025-07-19 02:00 | 2025-07-27 03:00 |  | 2005-05-24 16:00 | 2005-05-28 15:00 | 3.96d | 16.82d |  |
| 612 | 1.2.4.3.1 | COLOCAR BC | 8eh | 2025-07-19 02:00 | 2025-07-19 10:00 | 603 | 2005-05-24 16:00 | 2005-05-24 20:00 | 4eh | 17.13d | 0d |
| 613 | 1.2.4.3.2 | DESTAPAR PH | 6eh | 2025-07-19 10:00 | 2025-07-19 16:00 | 612 | 2005-05-25 12:00 | 2005-05-25 16:00 | 4eh | 17.13d | 0d |
| 614 | 1.2.4.3.3 | VENTILACION / LUZ | 48eh | 2025-07-19 16:00 | 2025-07-21 16:00 | 613 | 2005-05-25 16:00 | 2005-05-27 16:00 | 48eh | 17.13d | 0d |
| 615 | 1.2.4.3.4 | MONTAR ANDAMIO INTERIOR | 4eh | 2025-07-21 16:00 | 2025-07-21 20:00 | 614 | 2005-05-29 16:00 | 2005-05-29 20:00 | 4eh | 17.13d | 2.33d |
| 616 | 1.2.4.3.5 | LIMPIEZA INTERIOR | 36eh | 2025-07-24 04:00 | 2025-07-25 16:00 | 606, 615 | 2005-05-27 16:00 | 2005-05-28 04:00 | 12eh | 14.79d | 0d |
| 617 | 1.2.4.3.6 | INSPECCION | 3eh | 2025-07-25 16:00 | 2025-07-25 19:00 | 616 | 2005-05-28 04:00 | 2005-05-28 05:00 | 1eh | 16.83d | 0d |
| 618 | 1.2.4.3.7 | LIMPIEZA DE TOMAS | 6eh | 2025-07-25 19:00 | 2025-07-26 01:00 | 617 | 2005-05-28 05:00 | 2005-05-28 07:00 | 2eh | 16.83d | 0d |
| 619 | 1.2.4.3.8 | TAPAR PH | 12eh | 2025-07-26 01:00 | 2025-07-26 13:00 | 618 | 2005-05-28 07:00 | 2005-05-28 11:00 | 4eh | 16.83d | 0d |
| 620 | 1.2.4.3.9 | RETIRAR BC | 14eh | 2025-07-26 13:00 | 2025-07-27 03:00 | 619 | 2005-05-28 11:00 | 2005-05-28 15:00 | 4eh | 16.83d |  |
| 621 | 1.2.4.4 | **F-606** | 9.49d | 2025-07-19 16:00 | 2025-07-29 04:00 |  | 2005-05-24 16:00 | 2005-05-28 15:00 | 3.96d | 14.78d |  |
| 622 | 1.2.4.4.1 | COLOCAR BC | 12eh | 2025-07-19 16:00 | 2025-07-20 04:00 | 613 | 2005-05-24 16:00 | 2005-05-24 20:00 | 4eh | 17.63d | 0d |
| 623 | 1.2.4.4.2 | DESTAPAR PH | 6eh | 2025-07-20 04:00 | 2025-07-20 10:00 | 622 | 2005-05-25 12:00 | 2005-05-25 16:00 | 4eh | 17.63d | 0d |
| 624 | 1.2.4.4.3 | VENTILACION / LUZ | 48eh | 2025-07-20 10:00 | 2025-07-22 10:00 | 623 | 2005-05-25 16:00 | 2005-05-27 16:00 | 48eh | 17.63d | 0d |
| 625 | 1.2.4.4.4 | MONTAR ANDAMIO INTERIOR | 10eh | 2025-07-22 10:00 | 2025-07-22 20:00 | 624 | 2005-05-29 16:00 | 2005-05-29 20:00 | 4eh | 17.63d | 2.83d |
| 626 | 1.2.4.4.5 | LIMPIEZA INTERIOR | 36eh | 2025-07-25 16:00 | 2025-07-27 04:00 | 616, 625 | 2005-05-27 16:00 | 2005-05-28 04:00 | 12eh | 14.79d | 0d |
| 627 | 1.2.4.4.6 | INSPECCION | 18eh | 2025-07-27 04:00 | 2025-07-27 22:00 | 626 | 2005-05-28 04:00 | 2005-05-28 05:00 | 1eh | 14.79d | 0d |
| 628 | 1.2.4.4.7 | LIMPIEZA DE TOMAS | 6eh | 2025-07-27 22:00 | 2025-07-28 04:00 | 627 | 2005-05-28 05:00 | 2005-05-28 07:00 | 2eh | 14.79d | 0d |
| 629 | 1.2.4.4.8 | TAPAR PH | 12eh | 2025-07-28 04:00 | 2025-07-28 16:00 | 628 | 2005-05-28 07:00 | 2005-05-28 11:00 | 4eh | 14.79d | 0d |
| 630 | 1.2.4.4.9 | RETIRAR BC | 12eh | 2025-07-28 16:00 | 2025-07-29 04:00 | 629 | 2005-05-28 11:00 | 2005-05-28 15:00 | 4eh | 14.79d |  |

Notes:
- 601: 2650 mm / 950 mm de Ø / vertical
- 611: DIAM.1100 mm x 2450 mm de altura. V
- 621: DIAM.1100 mm x 2450 mm de altura. V

| ID | WBS | Task | Duration | Start | Finish | Predecessors | Baseline start | Baseline finish | Baseline duration | Total slack | Free slack |
| --- | --- | --- | --- | --- | --- | --- | --- | --- | --- | --- | --- |
| 631 | 1.2.4.5 | **F-651** | 10.28d | 2025-07-17 18:00 | 2025-07-28 01:00 |  | 2005-05-26 04:00 | 2005-05-29 21:00 | 3.71d | 8.33d |  |
| 632 | 1.2.4.5.1 | COLOCAR BC | 10eh | 2025-07-17 18:00 | 2025-07-18 04:00 | 6 | 2005-05-26 04:00 | 2005-05-26 08:00 | 4eh | 8.33d | 0d |
| 633 | 1.2.4.5.2 | DESTAPAR PH | 8eh | 2025-07-18 04:00 | 2025-07-18 12:00 | 632 | 2005-05-26 08:00 | 2005-05-26 12:00 | 4eh | 8.33d | 0d |
| 634 | 1.2.4.5.3 | VENTILACION /LUZ | 48eh | 2025-07-18 12:00 | 2025-07-20 12:00 | 633 | 2005-05-26 12:00 | 2005-05-28 12:00 | 48eh | 8.33d | 0d |
| 635 | 1.2.4.5.4 | MONTAR ANDAMIO INTERIOR | 12eh | 2025-07-20 12:00 | 2025-07-21 00:00 | 634 | 2005-05-28 12:00 | 2005-05-28 18:00 | 6eh | 8.33d | 0d |
| 636 | 1.2.4.5.5 | DESMONTAR MALLA | 13eh | 2025-07-21 00:00 | 2025-07-21 13:00 | 635 |  |  |  | 8.33d | 0d |
| 637 | 1.2.4.5.6 | LIMPIAR MALLA | 36eh | 2025-07-21 13:00 | 2025-07-23 01:00 | 636 |  |  |  | 15.92d | 0d |
| 638 | 1.2.4.5.7 | REACONDICIONAR MALLA | 60eh | 2025-07-23 01:00 | 2025-07-25 13:00 | 637 |  |  |  | 15.92d | 0d |
| 639 | 1.2.4.5.8 | LIMPIEZA INTERIOR | 60eh | 2025-07-21 13:00 | 2025-07-24 01:00 | 636 | 2005-05-28 18:00 | 2005-05-29 06:00 | 12eh | 8.33d | 0d |
| 640 | 1.2.4.5.9 | INSPECCION | 10eh | 2025-07-24 01:00 | 2025-07-24 11:00 | 639 | 2005-05-29 06:00 | 2005-05-29 07:00 | 1eh | 17d | 1.08d |
| 641 | 1.2.4.5.10 | MONTAR MALLA | 20eh | 2025-07-25 13:00 | 2025-07-26 09:00 | 638, 640 |  |  |  | 15.92d | 0d |
| 642 | 1.2.4.5.11 | DESMONTAR ANDAMIO | 10eh | 2025-07-26 09:00 | 2025-07-26 19:00 | 641 | 2005-05-29 07:00 | 2005-05-29 11:00 | 4eh | 15.92d | 0d |
| 643 | 1.2.4.5.12 | LIMPIEZA DE TOMAS | 6eh | 2025-07-26 19:00 | 2025-07-27 01:00 | 642 | 2005-05-29 11:00 | 2005-05-29 13:00 | 2eh | 15.92d | 0d |
| 644 | 1.2.4.5.13 | TAPAR PH | 12eh | 2025-07-27 01:00 | 2025-07-27 13:00 | 643 | 2005-05-29 13:00 | 2005-05-29 17:00 | 4eh | 15.92d | 0d |
| 645 | 1.2.4.5.14 | RETIRAR BC | 12eh | 2025-07-27 13:00 | 2025-07-28 01:00 | 644 | 2005-05-29 17:00 | 2005-05-29 21:00 | 4eh | 15.92d |  |
| 646 | 1.2.4.6 | **F-652** | 9.87d | 2025-07-18 12:00 | 2025-07-28 09:00 |  | 2005-05-26 12:00 | 2005-05-30 04:00 | 3.67d | 11.33d |  |
| 647 | 1.2.4.6.1 | COLOCAR BC | 11eh | 2025-07-18 12:00 | 2025-07-18 23:00 | 633 | 2005-05-26 12:00 | 2005-05-26 20:00 | 8eh | 11.33d | 0d |
| 648 | 1.2.4.6.2 | DESTAPAR PH | 10eh | 2025-07-18 23:00 | 2025-07-19 09:00 | 647 | 2005-05-26 20:00 | 2005-05-27 00:00 | 4eh | 11.33d | 0d |
| 649 | 1.2.4.6.3 | VENTILACION | 36eh | 2025-07-19 09:00 | 2025-07-20 21:00 | 648 | 2005-05-27 00:00 | 2005-05-28 00:00 | 24eh | 11.33d | 0d |
| 650 | 1.2.4.6.4 | COLOCAR ACCESO/ LUZ | 4eh | 2025-07-20 21:00 | 2025-07-21 01:00 | 649 | 2005-05-28 00:00 | 2005-05-28 04:00 | 4eh | 11.33d | 3d |
| 651 | 1.2.4.6.5 | LIMPIEZA INTERIOR | 72eh | 2025-07-24 01:00 | 2025-07-27 01:00 | 639, 650 | 2005-05-28 04:00 | 2005-05-29 04:00 | 24eh | 8.33d | 0d |
| 652 | 1.2.4.6.6 | INSPECCION | 2eh | 2025-07-27 01:00 | 2025-07-27 03:00 | 651 | 2005-05-29 04:00 | 2005-05-29 06:00 | 2eh | 15.58d | 0d |
| 653 | 1.2.4.6.7 | LIMPIEZA DE TOMAS | 6eh | 2025-07-27 03:00 | 2025-07-27 09:00 | 652 | 2005-05-29 06:00 | 2005-05-29 12:00 | 6eh | 15.58d | 0d |
| 654 | 1.2.4.6.8 | RETIRO ACCESO | 4eh | 2025-07-27 09:00 | 2025-07-27 13:00 | 653 | 2005-05-29 12:00 | 2005-05-29 16:00 | 4eh | 15.58d | 0d |
| 655 | 1.2.4.6.9 | TAPAR PH | 12eh | 2025-07-27 13:00 | 2025-07-28 01:00 | 654 | 2005-05-29 16:00 | 2005-05-29 20:00 | 4eh | 15.58d | 0d |
| 656 | 1.2.4.6.10 | RETIRAR BC | 8eh | 2025-07-28 01:00 | 2025-07-28 09:00 | 655 | 2005-05-29 20:00 | 2005-05-30 04:00 | 8eh | 15.58d |  |

Notes:
- 631: DIAMETRO 3505 MM X 6000 LARGO --H
- 646: LARGO 5000mm x 1725 mm de diametro---H

| ID | WBS | Task | Duration | Start | Finish | Predecessors | Baseline start | Baseline finish | Baseline duration | Total slack | Free slack |
| --- | --- | --- | --- | --- | --- | --- | --- | --- | --- | --- | --- |
| 657 | 1.2.4.7 | **F-653** | 10.74d | 2025-07-19 09:00 | 2025-07-30 03:00 |  | 2005-05-26 20:00 | 2005-05-31 12:00 | 4.67d | 13.08d |  |
| 658 | 1.2.4.7.1 | COLOCAR BC | 10eh | 2025-07-19 09:00 | 2025-07-19 19:00 | 648 | 2005-05-26 20:00 | 2005-05-27 04:00 | 8eh | 13.08d | 0d |
| 659 | 1.2.4.7.2 | DESTAPAR PH | 8eh | 2025-07-19 19:00 | 2025-07-20 03:00 | 658 | 2005-05-27 04:00 | 2005-05-27 08:00 | 4eh | 13.08d | 0d |
| 660 | 1.2.4.7.3 | VENTILACION | 48eh | 2025-07-20 03:00 | 2025-07-22 03:00 | 659 | 2005-05-27 08:00 | 2005-05-28 20:00 | 36eh | 13.08d | 0d |
| 661 | 1.2.4.7.4 | COLOCAR ACCESO/ LUZ | 4eh | 2025-07-22 03:00 | 2025-07-22 07:00 | 660 | 2005-05-28 20:00 | 2005-05-29 00:00 | 4eh | 13.08d | 4.75d |
| 662 | 1.2.4.7.5 | LIMPIEZA INTERIOR | 48eh | 2025-07-27 01:00 | 2025-07-29 01:00 | 651, 661 | 2005-05-29 00:00 | 2005-05-30 12:00 | 36eh | 8.33d | 0d |
| 663 | 1.2.4.7.6 | INSPECCION | 2eh | 2025-07-29 01:00 | 2025-07-29 03:00 | 662 | 2005-05-30 12:00 | 2005-05-30 14:00 | 2eh | 13.83d | 0d |
| 664 | 1.2.4.7.7 | LIMPIEZA DE TOMAS | 4eh | 2025-07-29 03:00 | 2025-07-29 07:00 | 663 | 2005-05-30 14:00 | 2005-05-30 20:00 | 6eh | 13.83d | 0d |
| 665 | 1.2.4.7.8 | RETIRO ACCESO | 6eh | 2025-07-29 07:00 | 2025-07-29 13:00 | 664 | 2005-05-30 20:00 | 2005-05-31 00:00 | 4eh | 13.83d | 0d |
| 666 | 1.2.4.7.9 | TAPAR PH | 6eh | 2025-07-29 13:00 | 2025-07-29 19:00 | 665 | 2005-05-31 00:00 | 2005-05-31 04:00 | 4eh | 13.83d | 0d |
| 667 | 1.2.4.7.10 | RETIRAR BC | 8eh | 2025-07-29 19:00 | 2025-07-30 03:00 | 666 | 2005-05-31 04:00 | 2005-05-31 12:00 | 8eh | 13.83d |  |
| 668 | 1.2.4.8 | **F-654** | 1.58d | 2025-07-20 03:00 | 2025-07-21 17:00 |  |  |  |  | 13.82d |  |
| 669 | 1.2.4.8.1 | DESBRIDAR Y DESMONTAR | 12eh | 2025-07-20 03:00 | 2025-07-20 15:00 | 659 |  |  |  | 13.83d | 0d |
| 670 | 1.2.4.8.2 | LIMPIEZA INTERIOR | 12eh | 2025-07-20 15:00 | 2025-07-21 03:00 | 669 |  |  |  | 13.83d | 0d |
| 671 | 1.2.4.8.3 | INSPECCION | 2eh | 2025-07-21 03:00 | 2025-07-21 05:00 | 670 |  |  |  | 13.83d | 0d |
| 672 | 1.2.4.8.4 | MONTAR Y BRIDAR | 12eh | 2025-07-21 05:00 | 2025-07-21 17:00 | 671 |  |  |  | 13.83d | 0d |
| 673 | 1.2.4.9 | **F-655** | 11.7d | 2025-07-20 03:00 | 2025-07-31 20:00 |  | 2005-05-27 08:00 | 2005-05-30 22:00 | 3.58d | 12.12d |  |
| 674 | 1.2.4.9.1 | COLOCAR BC | 8eh | 2025-07-20 03:00 | 2025-07-20 11:00 | 659 | 2005-05-27 08:00 | 2005-05-27 12:00 | 4eh | 14.5d | 0d |
| 675 | 1.2.4.9.2 | DESTAPAR PH | 6eh | 2025-07-20 11:00 | 2025-07-20 17:00 | 674 | 2005-05-27 12:00 | 2005-05-27 16:00 | 4eh | 14.5d | 0d |
| 676 | 1.2.4.9.3 | VENTILACION /LUZ | 48eh | 2025-07-20 17:00 | 2025-07-22 17:00 | 675 | 2005-05-27 16:00 | 2005-05-29 16:00 | 48eh | 14.5d | 0d |
| 677 | 1.2.4.9.4 | MONTAR ANDAMIO INTERIOR | 4eh | 2025-07-22 17:00 | 2025-07-22 21:00 | 676 | 2005-05-29 16:00 | 2005-05-29 20:00 | 4eh | 14.5d | 6.17d |
| 678 | 1.2.4.9.5 | LIMPIEZA INTERIOR | 36eh | 2025-07-29 01:00 | 2025-07-30 13:00 | 662, 677 | 2005-05-29 20:00 | 2005-05-30 08:00 | 12eh | 8.33d | 0d |
| 679 | 1.2.4.9.6 | INSPECCION | 3eh | 2025-07-30 13:00 | 2025-07-30 16:00 | 678 | 2005-05-30 08:00 | 2005-05-30 09:00 | 1eh | 12.13d | 0d |
| 680 | 1.2.4.9.7 | DESMONTAR ANDAMIO | 6eh | 2025-07-30 16:00 | 2025-07-30 22:00 | 679 | 2005-05-30 09:00 | 2005-05-30 12:00 | 3eh | 12.13d | 0d |
| 681 | 1.2.4.9.8 | LIMPIEZA DE TOMAS | 4eh | 2025-07-30 22:00 | 2025-07-31 02:00 | 680 | 2005-05-30 12:00 | 2005-05-30 14:00 | 2eh | 12.13d | 0d |
| 682 | 1.2.4.9.9 | TAPAR PH | 8eh | 2025-07-31 02:00 | 2025-07-31 10:00 | 681 | 2005-05-30 14:00 | 2005-05-30 18:00 | 4eh | 12.13d | 0d |
| 683 | 1.2.4.9.10 | RETIRAR BC | 10eh | 2025-07-31 10:00 | 2025-07-31 20:00 | 682 | 2005-05-30 18:00 | 2005-05-30 22:00 | 4eh | 12.13d |  |

Notes:
- 657: LARGO 12000 X 2800 DE DIAMETRO--- H
- 668: CARRETEL DE 8"
- 673: LTURA 3600mm diam. 1250 mmm V

| ID | WBS | Task | Duration | Start | Finish | Predecessors | Baseline start | Baseline finish | Baseline duration | Total slack | Free slack |
| --- | --- | --- | --- | --- | --- | --- | --- | --- | --- | --- | --- |
| 684 | 1.2.4.10 | **F-656** | 12.41d | 2025-07-20 17:00 | 2025-08-02 03:00 |  | 2005-05-28 04:00 | 2005-06-01 08:00 | 4.17d | 14.82d |  |
| 685 | 1.2.4.10.1 | COLOCAR BC | 8eh | 2025-07-20 17:00 | 2025-07-21 01:00 | 633, 675 | 2005-05-28 04:00 | 2005-05-28 12:00 | 8eh | 15.25d | 0d |
| 686 | 1.2.4.10.2 | DESTAPAR PH | 6eh | 2025-07-21 01:00 | 2025-07-21 07:00 | 685 | 2005-05-28 12:00 | 2005-05-28 16:00 | 4eh | 25d | 0d |
| 687 | 1.2.4.10.3 | VENTILACION | 36eh | 2025-07-21 07:00 | 2025-07-22 19:00 | 686 | 2005-05-28 16:00 | 2005-05-29 16:00 | 24eh | 25d | 0d |
| 688 | 1.2.4.10.4 | COLOCAR ACCESO/ LUZ | 4eh | 2025-07-22 19:00 | 2025-07-22 23:00 | 687 | 2005-05-29 16:00 | 2005-05-29 20:00 | 4eh | 25d |  |
| 689 | 1.2.4.10.5 | LIMPIEZA INTERIOR | 36eh | 2025-07-30 13:00 | 2025-08-01 01:00 | 678 | 2005-05-29 20:00 | 2005-05-31 08:00 | 36eh | 8.33d | 0d |
| 690 | 1.2.4.10.6 | INSPECCION | 2eh | 2025-08-01 01:00 | 2025-08-01 03:00 | 689 | 2005-05-31 08:00 | 2005-05-31 10:00 | 2eh | 10.83d | 0d |
| 691 | 1.2.4.10.7 | LIMPIEZA DE TOMAS | 6eh | 2025-08-01 03:00 | 2025-08-01 09:00 | 690 | 2005-05-31 10:00 | 2005-05-31 16:00 | 6eh | 10.83d | 0d |
| 692 | 1.2.4.10.8 | RETIRO ACCESO | 4eh | 2025-08-01 09:00 | 2025-08-01 13:00 | 691 | 2005-05-31 16:00 | 2005-05-31 20:00 | 4eh | 10.83d | 0d |
| 693 | 1.2.4.10.9 | TAPAR PH | 6eh | 2025-08-01 13:00 | 2025-08-01 19:00 | 692 | 2005-05-31 20:00 | 2005-06-01 00:00 | 4eh | 10.83d | 0d |
| 694 | 1.2.4.10.10 | RETIRAR BC | 8eh | 2025-08-01 19:00 | 2025-08-02 03:00 | 693 | 2005-06-01 00:00 | 2005-06-01 08:00 | 8eh | 10.83d |  |
| 695 | 1.2.4.11 | **F-658** | 3.66d | 2025-07-17 18:00 | 2025-07-21 10:00 |  |  |  |  | 22.53d |  |
| 696 | 1.2.4.11.1 | DESTAPAR SEPARADOR | 12eh | 2025-07-17 18:00 | 2025-07-18 06:00 | 6 |  |  |  | 22.54d | 0d |
| 697 | 1.2.4.11.2 | LIMPIEZA INTERNA DESDE EL EXTERIOR | 48eh | 2025-07-18 06:00 | 2025-07-20 06:00 | 696 |  |  |  | 22.54d | 0d |
| 698 | 1.2.4.11.3 | REALIZAR END EXTERNOS | 12eh | 2025-07-20 06:00 | 2025-07-20 18:00 | 697 |  |  |  | 22.54d | 0d |
| 699 | 1.2.4.11.4 | TAPAR SEPARADOR 8"-600 | 16eh | 2025-07-20 18:00 | 2025-07-21 10:00 | 698 |  |  |  | 22.54d |  |
| 700 | 1.2.4.12 | **F-602** | 10.41d | 2025-07-17 18:00 | 2025-07-28 04:00 |  |  |  |  | 15.78d |  |
| 701 | 1.2.4.12.1 | COLOCAR BC | 10eh | 2025-07-17 18:00 | 2025-07-18 04:00 | 6 |  |  |  | 15.79d | 0d |
| 702 | 1.2.4.12.2 | DESTAPAR PH | 8eh | 2025-07-18 04:00 | 2025-07-18 12:00 | 701 |  |  |  | 15.79d | 0d |
| 703 | 1.2.4.12.3 | VENTILACION | 52eh | 2025-07-18 12:00 | 2025-07-20 16:00 | 702 |  |  |  | 15.79d | 0d |
| 704 | 1.2.4.12.4 | COLOCAR ACCESO/ LUZ | 6eh | 2025-07-20 16:00 | 2025-07-20 22:00 | 703 |  |  |  | 15.79d | 0d |
| 705 | 1.2.4.12.5 | LIMPIEZA INTERIOR | 60eh | 2025-07-20 22:00 | 2025-07-23 10:00 | 704 |  |  |  | 15.79d | 0d |
| 706 | 1.2.4.12.6 | INSPECCION | 72eh | 2025-07-23 10:00 | 2025-07-26 10:00 | 705 |  |  |  | 15.79d | 0d |
| 707 | 1.2.4.12.7 | LIMPIEZA DE TOMAS | 8eh | 2025-07-26 10:00 | 2025-07-26 18:00 | 706 |  |  |  | 15.79d | 0d |
| 708 | 1.2.4.12.8 | RETIRO ACCESO | 8eh | 2025-07-26 18:00 | 2025-07-27 02:00 | 707 |  |  |  | 15.79d | 0d |
| 709 | 1.2.4.12.9 | TAPAR PH | 12eh | 2025-07-27 02:00 | 2025-07-27 14:00 | 708 |  |  |  | 15.79d | 0d |
| 710 | 1.2.4.12.10 | RETIRAR BC | 14eh | 2025-07-27 14:00 | 2025-07-28 04:00 | 709 |  |  |  | 15.79d |  |

Notes:
- 684: LARGO 8100mm diam.2000mm---- H

| ID | WBS | Task | Duration | Start | Finish | Predecessors | Total slack | Free slack |
| --- | --- | --- | --- | --- | --- | --- | --- | --- |
| 711 | 1.2.4.13 | **F-607** | 5.66d | 2025-07-17 18:00 | 2025-07-23 10:00 |  | 20.53d |  |
| 712 | 1.2.4.13.1 | COLOCAR BC | 8eh | 2025-07-17 18:00 | 2025-07-18 02:00 | 6 | 20.54d | 0d |
| 713 | 1.2.4.13.2 | DESTAPAR PH | 4eh | 2025-07-18 02:00 | 2025-07-18 06:00 | 712 | 20.54d | 0d |
| 714 | 1.2.4.13.3 | VENTILACION | 24eh | 2025-07-18 06:00 | 2025-07-19 06:00 | 713 | 20.54d | 0d |
| 715 | 1.2.4.13.4 | COLOCAR ACCESO/ LUZ | 4eh | 2025-07-19 06:00 | 2025-07-19 10:00 | 714 | 20.54d | 0d |
| 716 | 1.2.4.13.5 | LIMPIEZA INTERIOR | 40eh | 2025-07-19 10:00 | 2025-07-21 02:00 | 715 | 20.54d | 0d |
| 717 | 1.2.4.13.6 | INSPECCION | 16eh | 2025-07-21 02:00 | 2025-07-21 18:00 | 716 | 20.54d | 0d |
| 718 | 1.2.4.13.7 | LIMPIEZA DE TOMAS | 6eh | 2025-07-21 18:00 | 2025-07-22 00:00 | 717 | 20.54d | 0d |
| 719 | 1.2.4.13.8 | RETIRO ACCESO | 6eh | 2025-07-22 00:00 | 2025-07-22 06:00 | 718 | 20.54d | 0d |
| 720 | 1.2.4.13.9 | TAPAR PH | 12eh | 2025-07-22 06:00 | 2025-07-22 18:00 | 719 | 20.54d | 0d |
| 721 | 1.2.4.13.10 | RETIRAR BC | 16eh | 2025-07-22 18:00 | 2025-07-23 10:00 | 720 | 20.54d |  |
| 722 | 1.2.4.14 | **F-657** | 6.83d | 2025-07-17 18:00 | 2025-07-24 14:00 |  | 19.36d |  |
| 723 | 1.2.4.14.1 | COLOCAR BC | 8eh | 2025-07-17 18:00 | 2025-07-18 02:00 | 6 | 19.38d | 0d |
| 724 | 1.2.4.14.2 | DESTAPAR PH | 6eh | 2025-07-18 02:00 | 2025-07-18 08:00 | 723 | 19.38d | 0d |
| 725 | 1.2.4.14.3 | VENTILACION | 36eh | 2025-07-18 08:00 | 2025-07-19 20:00 | 724 | 19.38d | 0d |
| 726 | 1.2.4.14.4 | COLOCAR ACCESO/ LUZ | 6eh | 2025-07-19 20:00 | 2025-07-20 02:00 | 725 | 19.38d | 0d |
| 727 | 1.2.4.14.5 | LIMPIEZA INTERIOR | 50eh | 2025-07-20 02:00 | 2025-07-22 04:00 | 726 | 19.38d | 0d |
| 728 | 1.2.4.14.6 | INSPECCION | 20eh | 2025-07-22 04:00 | 2025-07-23 00:00 | 727 | 19.38d | 0d |
| 729 | 1.2.4.14.7 | LIMPIEZA DE TOMAS | 6eh | 2025-07-23 00:00 | 2025-07-23 06:00 | 728 | 19.38d | 0d |
| 730 | 1.2.4.14.8 | RETIRO ACCESO | 6eh | 2025-07-23 06:00 | 2025-07-23 12:00 | 729 | 19.38d | 0d |
| 731 | 1.2.4.14.9 | TAPAR PH | 12eh | 2025-07-23 12:00 | 2025-07-24 00:00 | 730 | 19.38d | 0d |
| 732 | 1.2.4.14.10 | RETIRAR BC | 14eh | 2025-07-24 00:00 | 2025-07-24 14:00 | 731 | 19.38d |  |
| 733 | 1.2.4.15 | **F-660** | 9.24d | 2025-07-17 18:00 | 2025-07-27 00:00 |  | 16.95d |  |
| 734 | 1.2.4.15.1 | COLOCAR BC | 10eh | 2025-07-17 18:00 | 2025-07-18 04:00 | 6 | 16.96d | 0d |
| 735 | 1.2.4.15.2 | DESTAPAR PH | 8eh | 2025-07-18 04:00 | 2025-07-18 12:00 | 734 | 16.96d | 0d |
| 736 | 1.2.4.15.3 | VENTILACION | 48eh | 2025-07-18 12:00 | 2025-07-20 12:00 | 735 | 16.96d | 0d |
| 737 | 1.2.4.15.4 | COLOCAR ACCESO/ LUZ | 4eh | 2025-07-20 12:00 | 2025-07-20 16:00 | 736 | 16.96d | 0d |
| 738 | 1.2.4.15.5 | LIMPIEZA INTERIOR | 90eh | 2025-07-20 16:00 | 2025-07-24 10:00 | 737 | 16.96d | 0d |
| 739 | 1.2.4.15.6 | INSPECCION | 24eh | 2025-07-24 10:00 | 2025-07-25 10:00 | 738 | 16.96d | 0d |
| 740 | 1.2.4.15.7 | LIMPIEZA DE TOMAS | 4eh | 2025-07-25 10:00 | 2025-07-25 14:00 | 739 | 16.96d | 0d |
| 741 | 1.2.4.15.8 | RETIRO ACCESO | 6eh | 2025-07-25 14:00 | 2025-07-25 20:00 | 740 | 16.96d | 0d |
| 742 | 1.2.4.15.9 | TAPAR PH | 16eh | 2025-07-25 20:00 | 2025-07-26 12:00 | 741 | 16.96d | 0d |
| 743 | 1.2.4.15.10 | RETIRAR BC | 12eh | 2025-07-26 12:00 | 2025-07-27 00:00 | 742 | 16.96d |  |

| ID | WBS | Task | Duration | Start | Finish | Predecessors | Total slack | Free slack |
| --- | --- | --- | --- | --- | --- | --- | --- | --- |
| 744 | 1.2.4.16 | **F-661** | 12.53d | 2025-07-17 18:00 | 2025-07-30 07:00 |  | 13.66d |  |
| 745 | 1.2.4.16.1 | INSTALAR DISCOS CIEGOS | 10eh | 2025-07-17 18:00 | 2025-07-18 04:00 | 6 | 13.67d | 0d |
| 746 | 1.2.4.16.2 | DESTAPAR PH | 8eh | 2025-07-18 04:00 | 2025-07-18 12:00 | 745 | 13.67d | 0d |
| 747 | 1.2.4.16.3 | VENTILACION | 36eh | 2025-07-18 12:00 | 2025-07-20 00:00 | 746 | 13.67d | 0d |
| 748 | 1.2.4.16.4 | DESBRIDAR Y DESM.CASQUETE 36" | 8eh | 2025-07-20 00:00 | 2025-07-20 08:00 | 747 | 13.67d | 0d |
| 749 | 1.2.4.16.5 | LIMPIEZA DE CONTACTOR | 36eh | 2025-07-20 08:00 | 2025-07-21 20:00 | 748 | 13.67d | 0d |
| 750 | 1.2.4.16.6 | MONTAJE DE ANDAMIO INTERNO | 12eh | 2025-07-21 20:00 | 2025-07-22 08:00 | 749 | 13.67d | 0d |
| 751 | 1.2.4.16.7 | LIMPIEZA INTERNA TOTAL | 74eh | 2025-07-22 08:00 | 2025-07-25 10:00 | 750 | 13.67d | 0d |
| 752 | 1.2.4.16.8 | INSPECCION | 8eh | 2025-07-25 10:00 | 2025-07-25 18:00 | 751 | 13.67d | 0d |
| 753 | 1.2.4.16.9 | REPARACION DE INTERNOS | 36eh | 2025-07-25 18:00 | 2025-07-27 06:00 | 752 | 13.67d | 0d |
| 754 | 1.2.4.16.10 | DESMONTAR ANDAMIO INTERNO | 25eh | 2025-07-27 06:00 | 2025-07-28 07:00 | 753 | 13.67d | 0d |
| 755 | 1.2.4.16.11 | LIMPIEZA FINA | 6eh | 2025-07-28 07:00 | 2025-07-28 13:00 | 754 | 13.67d | 0d |
| 756 | 1.2.4.16.12 | MONTAR Y BRIDAR CASQUETE CONTACTOR | 12eh | 2025-07-28 13:00 | 2025-07-29 01:00 | 755 | 13.67d | 0d |
| 757 | 1.2.4.16.13 | INSPECCION Y LIMPIEZA | 12eh | 2025-07-29 01:00 | 2025-07-29 13:00 | 756 | 13.67d | 0d |
| 758 | 1.2.4.16.14 | TAPAR PH | 8eh | 2025-07-29 13:00 | 2025-07-29 21:00 | 757 | 13.67d | 0d |
| 759 | 1.2.4.16.15 | RETIRAR DISCOS CIEGOS | 10eh | 2025-07-29 21:00 | 2025-07-30 07:00 | 758 | 13.67d |  |
| 760 | 1.2.4.17 | **F-662** | 13.16d | 2025-07-17 18:00 | 2025-07-30 22:00 |  | 13.03d |  |
| 761 | 1.2.4.17.1 | INSTALAR DISCOS CIEGOS | 10eh | 2025-07-17 18:00 | 2025-07-18 04:00 | 6 | 13.04d | 0d |
| 762 | 1.2.4.17.2 | DESTAPAR PH | 12eh | 2025-07-18 04:00 | 2025-07-18 16:00 | 761 | 13.04d | 0d |
| 763 | 1.2.4.17.3 | VENTILACION | 36eh | 2025-07-18 16:00 | 2025-07-20 04:00 | 762 | 13.04d | 0d |
| 764 | 1.2.4.17.4 | DESBRIDAR Y DESM.CASQUETE | 8eh | 2025-07-20 04:00 | 2025-07-20 12:00 | 763 | 13.04d | 0d |
| 765 | 1.2.4.17.5 | LIMPIEZA DE CONTACTOR | 36eh | 2025-07-20 12:00 | 2025-07-22 00:00 | 764 | 13.04d | 0d |
| 766 | 1.2.4.17.6 | MONTAJE DE ANDAMIO INTERNO | 8eh | 2025-07-22 00:00 | 2025-07-22 08:00 | 765 | 13.04d | 0d |
| 767 | 1.2.4.17.7 | LIMPIEZA INTERNA TOTAL | 72eh | 2025-07-22 08:00 | 2025-07-25 08:00 | 766 | 13.04d | 0d |
| 768 | 1.2.4.17.8 | INSPECCION | 24eh | 2025-07-25 08:00 | 2025-07-26 08:00 | 767 | 13.04d | 0d |
| 769 | 1.2.4.17.9 | REPARACION DE INTERNOS | 36eh | 2025-07-26 08:00 | 2025-07-27 20:00 | 768 | 13.04d | 0d |
| 770 | 1.2.4.17.10 | DESMONTAR ANDAMIO INTERNO | 20eh | 2025-07-27 20:00 | 2025-07-28 16:00 | 769 | 13.04d | 0d |
| 771 | 1.2.4.17.11 | LIMPIEZA FINA | 24eh | 2025-07-28 16:00 | 2025-07-29 16:00 | 770 | 13.04d | 0d |
| 772 | 1.2.4.17.12 | MONTAR Y BRIDAR CASQUETE CONTACTOR | 8eh | 2025-07-29 16:00 | 2025-07-30 00:00 | 771 | 13.04d | 0d |
| 773 | 1.2.4.17.13 | DESMONTAR ILUMINACION | 4eh | 2025-07-30 00:00 | 2025-07-30 04:00 | 772 | 13.04d | 0d |
| 774 | 1.2.4.17.14 | TAPAR PH | 8eh | 2025-07-30 04:00 | 2025-07-30 12:00 | 773 | 13.04d | 0d |
| 775 | 1.2.4.17.15 | RETIRAR DISCOS CIEGOS | 10eh | 2025-07-30 12:00 | 2025-07-30 22:00 | 774 | 13.04d |  |

| ID | WBS | Task | Duration | Start | Finish | Predecessors | Total slack | Free slack |
| --- | --- | --- | --- | --- | --- | --- | --- | --- |
| 776 | 1.2.4.18 | **F-675** | 14.57d | 2025-07-21 01:00 | 2025-08-04 15:00 |  | 8.33d |  |
| 777 | 1.2.4.18.1 | COLOCAR BC | 8eh | 2025-07-21 01:00 | 2025-07-21 09:00 | 685 | 15.25d | 0d |
| 778 | 1.2.4.18.2 | DESTAPAR PH 24"-600# | 6eh | 2025-07-21 09:00 | 2025-07-21 15:00 | 777 | 15.25d | 0d |
| 779 | 1.2.4.18.3 | VENTILACION | 12eh | 2025-07-21 15:00 | 2025-07-22 03:00 | 778 | 15.25d | 0d |
| 780 | 1.2.4.18.4 | COLOCAR ACCESO/ LUZ | 4eh | 2025-07-22 03:00 | 2025-07-22 07:00 | 779 | 15.25d | 0d |
| 781 | 1.2.4.18.5 | DESMONTAR 3 MALLAS | 30eh | 2025-07-22 07:00 | 2025-07-23 13:00 | 780 | 15.25d | 0d |
| 782 | 1.2.4.18.6 | LIMPIEZA INTERIOR | 24eh | 2025-08-01 01:00 | 2025-08-02 01:00 | 689, 781 | 8.33d | 0d |
| 783 | 1.2.4.18.7 | LIMPIEZA MALLAS | 24eh | 2025-07-23 13:00 | 2025-07-24 13:00 | 781 | 15.25d | 0d |
| 784 | 1.2.4.18.8 | INSPECCION MALLAS | 2eh | 2025-07-24 13:00 | 2025-07-24 15:00 | 783 | 15.25d | 0d |
| 785 | 1.2.4.18.9 | REPARAR MALLAS | 36eh | 2025-07-24 15:00 | 2025-07-26 03:00 | 784 | 15.25d | 6.92d |
| 786 | 1.2.4.18.10 | MONTAR MALLAS | 36eh | 2025-08-02 01:00 | 2025-08-03 13:00 | 782, 785 | 8.33d | 0d |
| 787 | 1.2.4.18.11 | LIMPIEZA DE TOMAS | 6eh | 2025-08-03 13:00 | 2025-08-03 19:00 | 786 | 8.33d | 0d |
| 788 | 1.2.4.18.12 | INSPECCION ENVOLVENTE | 2eh | 2025-08-03 19:00 | 2025-08-03 21:00 | 787 | 8.33d | 0d |
| 789 | 1.2.4.18.13 | RETIRO DE ACCESO | 4eh | 2025-08-03 21:00 | 2025-08-04 01:00 | 788 | 8.33d | 0d |
| 790 | 1.2.4.18.14 | TAPAR PH- 24"- 600# | 6eh | 2025-08-04 01:00 | 2025-08-04 07:00 | 789 | 8.33d | 0d |
| 791 | 1.2.4.18.15 | RETIRAR BC | 8eh | 2025-08-04 07:00 | 2025-08-04 15:00 | 790, 801 | 8.33d |  |
| 792 | 1.2.4.19 | **F-676** | 12.66d | 2025-07-21 15:00 | 2025-08-03 07:00 |  | 9.66d |  |
| 793 | 1.2.4.19.1 | COLOCAR CIEGOS | 18eh | 2025-07-21 15:00 | 2025-07-22 09:00 | 778 | 18.42d | 0d |
| 794 | 1.2.4.19.2 | DESTAPAR PH | 6eh | 2025-07-22 09:00 | 2025-07-22 15:00 | 793 | 18.42d | 0d |
| 795 | 1.2.4.19.3 | VENTILACION | 12eh | 2025-07-22 15:00 | 2025-07-23 03:00 | 794 | 18.42d | 0d |
| 796 | 1.2.4.19.4 | COLOCAR ACCESO/ LUZ | 4eh | 2025-07-23 03:00 | 2025-07-23 07:00 | 795 | 18.42d | 8.75d |
| 797 | 1.2.4.19.5 | LIMPIEZA INTERIOR | 24eh | 2025-08-01 01:00 | 2025-08-02 01:00 | 689, 796 | 9.67d | 0d |
| 798 | 1.2.4.19.6 | LIMPIEZA DE TOMAS | 6eh | 2025-08-02 01:00 | 2025-08-02 07:00 | 797 | 9.67d | 0d |
| 799 | 1.2.4.19.7 | INSPECCION ENVOLVENTE | 2eh | 2025-08-02 07:00 | 2025-08-02 09:00 | 798 | 9.67d | 0d |
| 800 | 1.2.4.19.8 | RETIRO DE ACCESO | 4eh | 2025-08-02 09:00 | 2025-08-02 13:00 | 799 | 9.67d | 0d |
| 801 | 1.2.4.19.9 | TAPAR PH | 6eh | 2025-08-02 13:00 | 2025-08-02 19:00 | 800 | 9.67d | 0d |
| 802 | 1.2.4.19.10 | RETIRAR CIEGOS | 12eh | 2025-08-02 19:00 | 2025-08-03 07:00 | 801 | 9.67d |  |

Notes:
- 776: ACUMULADOR GRANDE DE VAPOR GRANDE CON 3 MALLAS
- 792: ACUMULADOR MEDIANO DE VAPOR GRANDE CON 3 MALLAS

| ID | WBS | Task | Duration | Start | Finish | Predecessors | Total slack | Free slack |
| --- | --- | --- | --- | --- | --- | --- | --- | --- |
| 803 | 1.2.4.20 | **F-672 (TOLVA DE CAT)** | 8.37d | 2025-07-16 18:00 | 2025-07-25 03:00 |  | 12.78d |  |
| 804 | 1.2.4.20.1 | ARMAR ANDAMIO EXTERIOR | 36eh | 2025-07-16 18:00 | 2025-07-18 06:00 | 10 | 20.71d | 0d |
| 805 | 1.2.4.20.2 | REALIZAR DESCARGA DE CAT. | 94eh | 2025-07-16 18:00 | 2025-07-20 16:00 | 10 | 12.79d | 0d |
| 806 | 1.2.4.20.3 | ABRIR PH | 12eh | 2025-07-20 16:00 | 2025-07-21 04:00 | 805 | 23.92d | 0d |
| 807 | 1.2.4.20.4 | INSPECCION | 12eh | 2025-07-21 04:00 | 2025-07-21 16:00 | 806 | 23.92d | 0d |
| 808 | 1.2.4.20.5 | TAPAR PH | 12eh | 2025-07-21 16:00 | 2025-07-22 04:00 | 807 | 23.92d | 1.08d |
| 809 | 1.2.4.20.6 | CARGAR CATALIZADOR | 45eh | 2025-07-23 06:00 | 2025-07-25 03:00 | 808, 813 | 22.83d |  |
| 810 | 1.2.4.20.7 | LPZA CORDONES DE SOLDADURA EXTERIOR | 36eh | 2025-07-18 06:00 | 2025-07-19 18:00 | 804 | 20.71d | 0d |
| 811 | 1.2.4.20.8 | INSPECCION EXTERIOR | 24eh | 2025-07-19 18:00 | 2025-07-20 18:00 | 810 | 20.71d | 0d |
| 812 | 1.2.4.20.9 | DESARMAR ANDAMIO | 36eh | 2025-07-20 18:00 | 2025-07-22 06:00 | 811 | 20.71d | 0d |
| 813 | 1.2.4.20.10 | RETIRO DE BC | 24eh | 2025-07-22 06:00 | 2025-07-23 06:00 | 812 | 20.71d | 0d |
| 814 | 1.2.4.21 | **F-674 (TOLVA DE CAT.)** | 10.49d | 2025-07-20 16:00 | 2025-07-31 04:00 |  | 12.78d |  |
| 815 | 1.2.4.21.1 | COLOCAR CIEGOS | 12eh | 2025-07-20 16:00 | 2025-07-21 04:00 | 805 | 12.79d | 0d |
| 816 | 1.2.4.21.2 | DESCARGA DE REMANENTE | 36eh | 2025-07-21 04:00 | 2025-07-22 16:00 | 815 | 12.79d | 0d |
| 817 | 1.2.4.21.3 | DESTAPAR PH | 12eh | 2025-07-22 16:00 | 2025-07-23 04:00 | 816 | 12.79d | 0d |
| 818 | 1.2.4.21.4 | ILUMINACION INTERNA | 12eh | 2025-07-23 04:00 | 2025-07-23 16:00 | 817 | 12.79d | 0d |
| 819 | 1.2.4.21.5 | MONTAR ANDAMIO INTERNO | 24eh | 2025-07-23 16:00 | 2025-07-24 16:00 | 818 | 12.79d | 0d |
| 820 | 1.2.4.21.6 | LIMPIEZA DEL EQUIPO | 60eh | 2025-07-24 16:00 | 2025-07-27 04:00 | 819 | 12.79d | 0d |
| 821 | 1.2.4.21.7 | LIMPIEZA DE CORDONES DE SOLDADURA | 36eh | 2025-07-27 04:00 | 2025-07-28 16:00 | 820 | 12.79d | 0d |
| 822 | 1.2.4.21.8 | INSPECCION | 4eh | 2025-07-28 16:00 | 2025-07-28 20:00 | 820, 821 | 12.79d | 0d |
| 823 | 1.2.4.21.9 | REPARACION DE INTERNOS | 24eh | 2025-07-28 20:00 | 2025-07-29 20:00 | 822 | 12.79d | 0d |
| 824 | 1.2.4.21.10 | DESARMAR ANDAMIO | 12eh | 2025-07-29 20:00 | 2025-07-30 08:00 | 823 | 12.79d | 0d |
| 825 | 1.2.4.21.11 | RETIRAR ILUMINACION | 4eh | 2025-07-30 08:00 | 2025-07-30 12:00 | 824 | 12.79d | 0d |
| 826 | 1.2.4.21.12 | TAPAR PASAHOMBRES | 8eh | 2025-07-30 12:00 | 2025-07-30 20:00 | 825 | 12.79d | 0d |
| 827 | 1.2.4.21.13 | RETIRAR DISCOS CIEGOS | 8eh | 2025-07-30 20:00 | 2025-07-31 04:00 | 826 | 12.79d |  |

Notes:
- 803: 150000 / 50000
- 806: ESTA ESTIMACION ESTA HECHA CON POCO VOLUMEN DE CATALIZADOR
- 814: 10000 mm / 2896 mm / tiene un ciclon en parte superior
- 816: ESTA ESTIMACION ESTA HECHA CON POCO VOLUMEN DE CATALIZADOR

| ID | WBS | Task | Duration | Start | Finish | Predecessors | Total slack | Free slack |
| --- | --- | --- | --- | --- | --- | --- | --- | --- |
| 828 | 1.2.4.22 | **F-677** | 7.75d | 2025-07-23 04:00 | 2025-07-30 22:00 |  | 13.03d |  |
| 829 | 1.2.4.22.1 | COLOCAR BC | 8eh | 2025-07-23 04:00 | 2025-07-23 12:00 | 815, 817 | 13.04d | 0d |
| 830 | 1.2.4.22.2 | DESTAPAR PH | 6eh | 2025-07-23 12:00 | 2025-07-23 18:00 | 829 | 13.04d | 0d |
| 831 | 1.2.4.22.3 | DESMONTAR MALLA | 30eh | 2025-07-23 18:00 | 2025-07-25 00:00 | 830 | 13.04d | 0d |
| 832 | 1.2.4.22.4 | LIMPIEZA INTERIOR | 24eh | 2025-07-25 00:00 | 2025-07-26 00:00 | 831 | 13.04d | 0d |
| 833 | 1.2.4.22.5 | LIMPIEZA MALLA | 24eh | 2025-07-26 00:00 | 2025-07-27 00:00 | 832 | 13.04d | 0d |
| 834 | 1.2.4.22.6 | INSPECCION | 2eh | 2025-07-27 00:00 | 2025-07-27 02:00 | 833 | 13.04d | 0d |
| 835 | 1.2.4.22.7 | REPARAR MALLA | 36eh | 2025-07-27 02:00 | 2025-07-28 14:00 | 834 | 13.04d | 0d |
| 836 | 1.2.4.22.8 | MONTAR MALLA | 36eh | 2025-07-28 14:00 | 2025-07-30 02:00 | 835 | 13.04d | 0d |
| 837 | 1.2.4.22.9 | LIMPIEZA DE TOMAS | 6eh | 2025-07-30 02:00 | 2025-07-30 08:00 | 836 | 13.04d | 0d |
| 838 | 1.2.4.22.10 | TAPAR PH- | 6eh | 2025-07-30 08:00 | 2025-07-30 14:00 | 837 | 13.04d | 0d |
| 839 | 1.2.4.22.11 | RETIRAR BC | 8eh | 2025-07-30 14:00 | 2025-07-30 22:00 | 838 | 13.04d |  |
| 840 | 1.2.4.23 | **G-602 (SEPARADORES)** | 2.75d | 2025-07-21 17:00 | 2025-07-24 11:00 |  | 13.82d |  |
| 841 | 1.2.4.23.1 | DESTAPAR SEPARADOR 8"-600 | 6eh | 2025-07-21 17:00 | 2025-07-21 23:00 | 672 | 13.83d | 0d |
| 842 | 1.2.4.23.2 | LIMPIEZA INTERNA DESDE EL EXTERIOR | 24eh | 2025-07-21 23:00 | 2025-07-22 23:00 | 841 | 13.83d | 0d |
| 843 | 1.2.4.23.3 | REALIZAR END EXTERNOS | 24eh | 2025-07-22 23:00 | 2025-07-23 23:00 | 842 | 13.83d | 0d |
| 844 | 1.2.4.23.4 | TAPAR SEPARADOR 8"-600 | 12eh | 2025-07-23 23:00 | 2025-07-24 11:00 | 843 | 13.83d | 0d |
| 845 | 1.2.4.24 | **G-603 (SEPARADORES)** | 2.75d | 2025-07-24 11:00 | 2025-07-27 05:00 |  | 13.82d |  |
| 846 | 1.2.4.24.1 | DESTAPAR SEPARADOR 8"-600 | 6eh | 2025-07-24 11:00 | 2025-07-24 17:00 | 844 | 13.83d | 0d |
| 847 | 1.2.4.24.2 | LIMPIEZA INTERNA DESDE EL EXTERIOR | 24eh | 2025-07-24 17:00 | 2025-07-25 17:00 | 846 | 13.83d | 0d |
| 848 | 1.2.4.24.3 | REALIZAR END EXTERNOS | 24eh | 2025-07-25 17:00 | 2025-07-26 17:00 | 847 | 13.83d | 0d |
| 849 | 1.2.4.24.4 | TAPAR SEPARADOR 8"-600 | 12eh | 2025-07-26 17:00 | 2025-07-27 05:00 | 848 | 13.83d | 0d |
| 850 | 1.2.4.25 | **G-605 (SEPARADORES)** | 2.91d | 2025-07-27 05:00 | 2025-07-30 03:00 |  | 13.82d |  |
| 851 | 1.2.4.25.1 | DESTAPAR SEPARADOR 8"-600 | 10eh | 2025-07-27 05:00 | 2025-07-27 15:00 | 849 | 13.83d | 0d |
| 852 | 1.2.4.25.2 | LIMPIEZA INTERNA DESDE EL EXTERIOR | 24eh | 2025-07-27 15:00 | 2025-07-28 15:00 | 851 | 13.83d | 0d |
| 853 | 1.2.4.25.3 | REALIZAR END EXTERNOS | 24eh | 2025-07-28 15:00 | 2025-07-29 15:00 | 852 | 13.83d | 0d |
| 854 | 1.2.4.25.4 | TAPAR SEPARADOR 8"-600 | 12eh | 2025-07-29 15:00 | 2025-07-30 03:00 | 853 | 13.83d |  |

Notes:
- 828: 3000 / 1400 Ø / DOSIFICADOR DE CATALIZADOR CHICO CON 1 MALLA

| ID | WBS | Task | Duration | Start | Finish | Predecessors | Baseline start | Baseline finish | Baseline duration | Total slack | Free slack |
| --- | --- | --- | --- | --- | --- | --- | --- | --- | --- | --- | --- |
| 855 | 1.2.5 | **INTERCAMBIADORES - 55 -** | 18.99d | 2025-07-17 18:00 | 2025-08-05 18:00 |  | 2005-05-24 12:00 | 2005-06-14 08:00 | 20.83d | 7.2d |  |
| 856 | 1.2.5.1 | **CEGADO Y DESARME** | 7.99d | 2025-07-17 18:00 | 2025-07-25 18:00 |  |  |  |  | 7.2d |  |
| 857 | 1.2.5.1.1 | C-602 ABCD (1010 3/4") | 60eh | 2025-07-17 18:00 | 2025-07-20 06:00 | 6 |  |  |  | 14.71d | 0d |
| 858 | 1.2.5.1.2 | C-603 (62T 3/4") | 24eh | 2025-07-17 18:00 | 2025-07-18 18:00 | 6 |  |  |  | 19.21d | 0d |
| 859 | 1.2.5.1.3 | C-605 (1610-3/4") | 48eh | 2025-07-20 06:00 | 2025-07-22 06:00 | 6, 886 |  |  |  | 15.71d | 0d |
| 860 | 1.2.5.1.4 | C-611 A (870 3/4") C | 48eh | 2025-07-17 18:00 | 2025-07-19 18:00 | 6 |  |  |  | 16.21d | 0d |
| 861 | 1.2.5.1.5 | C-611 B (870 3/4") C | 48eh | 2025-07-19 18:00 | 2025-07-21 18:00 | 860 |  |  |  | 16.21d | 0d |
| 862 | 1.2.5.1.6 | C-614- ( 1414 / 3/4") C | 48eh | 2025-07-17 18:00 | 2025-07-19 18:00 | 6 |  |  |  | 18.21d | 0d |
| 863 | 1.2.5.1.7 | C-616 (380 3/4") | 48eh | 2025-07-17 18:00 | 2025-07-19 18:00 | 6 |  |  |  | 18.21d | 0d |
| 864 | 1.2.5.1.8 | C-617 A/ B (158-3/4") | 48eh | 2025-07-17 18:00 | 2025-07-19 18:00 | 6 |  |  |  | 16.21d | 0d |
| 865 | 1.2.5.1.9 | C-619 A-B(116 /3/4") | 48eh | 2025-07-17 18:00 | 2025-07-19 18:00 | 6 |  |  |  | 16.21d | 0d |
| 866 | 1.2.5.1.10 | C-655 (459-3/4") | 48eh | 2025-07-17 18:00 | 2025-07-19 18:00 | 6 |  |  |  | 7.21d | 0d |
| 867 | 1.2.5.1.11 | C-J675 (2244--3/4")CONDENSADOR | 48eh | 2025-07-17 18:00 | 2025-07-19 18:00 | 6 |  |  |  | 18.21d | 0d |
| 868 | 1.2.5.1.12 | C-J671 (3001 -3/4) CONDENSADOR | 48eh | 2025-07-17 18:00 | 2025-07-19 18:00 | 6 |  |  |  | 18.21d | 0d |
| 869 | 1.2.5.1.13 | C-J675-5A/B (80--3/4") | 48eh | 2025-07-17 18:00 | 2025-07-19 18:00 | 6 |  |  |  | 14.21d | 0d |
| 870 | 1.2.5.1.14 | C-J671-5A/B (80 -3/4) | 48eh | 2025-07-19 18:00 | 2025-07-21 18:00 | 869 |  |  |  | 14.21d | 0d |
| 871 | 1.2.5.1.15 | C-607 A/B/C (676 3/4") | 72eh | 2025-07-17 18:00 | 2025-07-20 18:00 | 6 |  |  |  | 11.71d | 0d |
| 872 | 1.2.5.1.16 | C-607 D/E/F (676 3/4") | 72eh | 2025-07-20 18:00 | 2025-07-23 18:00 | 871 |  |  |  | 11.71d | 0d |
| 873 | 1.2.5.1.17 | C-604 A/B (197-3/4") | 48eh | 2025-07-17 18:00 | 2025-07-19 18:00 | 6 |  |  |  | 16.71d | 0d |
| 874 | 1.2.5.1.18 | C-612 A/B (56-3/4") | 48eh | 2025-07-17 18:00 | 2025-07-19 18:00 | 6 |  |  |  | 14.21d | 0d |
| 875 | 1.2.5.1.19 | C-612 C/ D (56-3/4") | 48eh | 2025-07-19 18:00 | 2025-07-21 18:00 | 874 |  |  |  | 14.21d | 0d |
| 876 | 1.2.5.1.20 | C-658 (510 T 3/4) | 48eh | 2025-07-17 18:00 | 2025-07-19 18:00 | 6 |  |  |  | 18.21d | 0d |
| 877 | 1.2.5.1.21 | C-656 A/B/C/D/E/F (880 T 3/4) | 144eh | 2025-07-19 18:00 | 2025-07-25 18:00 | 866 |  |  |  | 7.21d | 0d |
| 878 | 1.2.5.1.22 | C-653 | 48eh | 2025-07-17 18:00 | 2025-07-19 18:00 | 6 |  |  |  | 18.21d | 0d |
| 879 | 1.2.5.1.23 | C-659 (118-3/4") | 48eh | 2025-07-17 18:00 | 2025-07-19 18:00 | 6 |  |  |  | 18.21d | 0d |
| 880 | 1.2.5.1.24 | C-660 ABC (1020-3/4") | 48eh | 2025-07-17 18:00 | 2025-07-19 18:00 | 6 |  |  |  | 16.71d | 0d |
| 881 | 1.2.5.1.25 | C-662 (325 3/4") adecuacion cunas | 48eh | 2025-07-17 18:00 | 2025-07-19 18:00 | 6 |  |  |  | 18.21d | 0d |
| 882 | 1.2.5.1.26 | C-663 (62 U-3/4") adecuacion cunas | 48eh | 2025-07-17 18:00 | 2025-07-19 18:00 | 6 |  |  |  | 18.21d | 0d |
| 883 | 1.2.5.1.27 | C-665 A/B (128-3/4") | 53eh | 2025-07-17 18:00 | 2025-07-19 23:00 | 6 |  |  |  | 16d | 0d |
| 884 | 1.2.5.1.28 | C-668 (712-3/4") | 48eh | 2025-07-17 18:00 | 2025-07-19 18:00 | 6 |  |  |  | 18.21d | 0d |
| 885 | 1.2.5.1.29 | C-615 (3P)CAJA ENFRIADORAS | 48eh | 2025-07-17 18:00 | 2025-07-19 18:00 | 6 |  |  |  | 18.21d | 0d |
| 886 | 1.2.5.1.30 | C-666 ABCD (912 T ) | 60eh | 2025-07-17 18:00 | 2025-07-20 06:00 | 6 |  |  |  | 13.21d | 0d |
| 887 | 1.2.5.1.31 | C-661 (20 T3/4") | 48eh | 2025-07-17 18:00 | 2025-07-19 18:00 | 6 |  |  |  | 18.21d | 0d |

| ID | WBS | Task | Duration | Start | Finish | Predecessors | Total slack | Free slack |
| --- | --- | --- | --- | --- | --- | --- | --- | --- |
| 888 | 1.2.5.2 | **LAVADO** | 10.49d | 2025-07-18 18:00 | 2025-07-29 06:00 |  | 11.7d |  |
| 889 | 1.2.5.2.1 | C-602 ABCD (1010 3/4") | 72eh | 2025-07-20 06:00 | 2025-07-23 06:00 | 857 | 14.71d | 0d |
| 890 | 1.2.5.2.2 | C-603 (62T 3/4") | 60eh | 2025-07-18 18:00 | 2025-07-21 06:00 | 858 | 19.21d | 0d |
| 891 | 1.2.5.2.3 | C-605 (1610-3/4") | 60eh | 2025-07-22 06:00 | 2025-07-24 18:00 | 859 | 15.71d | 0d |
| 892 | 1.2.5.2.4 | C-611 A (870 3/4") C | 60eh | 2025-07-19 18:00 | 2025-07-22 06:00 | 860 | 18.21d | 0d |
| 893 | 1.2.5.2.5 | C-611 B (870 3/4") C | 60eh | 2025-07-21 18:00 | 2025-07-24 06:00 | 861 | 16.21d | 0d |
| 894 | 1.2.5.2.6 | C-614- ( 1414 / 3/4") C | 60eh | 2025-07-19 18:00 | 2025-07-22 06:00 | 862 | 18.21d | 0d |
| 895 | 1.2.5.2.7 | C-616 (380 3/4") | 60eh | 2025-07-19 18:00 | 2025-07-22 06:00 | 863 | 18.21d | 0d |
| 896 | 1.2.5.2.8 | C-617 A/ B (158-3/4") | 60eh | 2025-07-19 18:00 | 2025-07-22 06:00 | 864 | 16.21d | 0d |
| 897 | 1.2.5.2.9 | C-619 A-B(116 /3/4") | 60eh | 2025-07-19 18:00 | 2025-07-22 06:00 | 865 | 16.21d | 0d |
| 898 | 1.2.5.2.10 | C-655 (459-3/4") | 60eh | 2025-07-19 18:00 | 2025-07-22 06:00 | 866 | 18.21d | 0d |
| 899 | 1.2.5.2.11 | C-J675 (2244--3/4")CONDENSADOR | 60eh | 2025-07-19 18:00 | 2025-07-22 06:00 | 867 | 18.21d | 0d |
| 900 | 1.2.5.2.12 | C-J671 (3001 -3/4) CONDENSADOR | 60eh | 2025-07-19 18:00 | 2025-07-22 06:00 | 868 | 18.21d | 0d |
| 901 | 1.2.5.2.13 | C-J675-5A/B (80--3/4") | 60eh | 2025-07-19 18:00 | 2025-07-22 06:00 | 869 | 16.21d | 0d |
| 902 | 1.2.5.2.14 | C-J671-5A/B (80 -3/4) | 60eh | 2025-07-21 18:00 | 2025-07-24 06:00 | 870 | 14.21d | 0d |
| 903 | 1.2.5.2.15 | C-607 A/B/C (676 3/4") | 72eh | 2025-07-20 18:00 | 2025-07-23 18:00 | 871 | 14.71d | 0d |
| 904 | 1.2.5.2.16 | C-607 D/E/F (676 3/4") | 72eh | 2025-07-23 18:00 | 2025-07-26 18:00 | 872 | 11.71d | 0d |
| 905 | 1.2.5.2.17 | C-604 A/B (197-3/4") | 60eh | 2025-07-19 18:00 | 2025-07-22 06:00 | 873 | 16.71d | 0d |
| 906 | 1.2.5.2.18 | C-612 A/B (56-3/4") | 60eh | 2025-07-19 18:00 | 2025-07-22 06:00 | 874 | 16.21d | 0d |
| 907 | 1.2.5.2.19 | C-612 C/ D (56-3/4") | 60eh | 2025-07-21 18:00 | 2025-07-24 06:00 | 875 | 14.21d | 0d |
| 908 | 1.2.5.2.20 | C-658 (510 T 3/4) | 60eh | 2025-07-19 18:00 | 2025-07-22 06:00 | 876 | 18.21d | 0d |
| 909 | 1.2.5.2.21 | C-656 A/B/C/D (880 T 3/4) | 72eh | 2025-07-25 18:00 | 2025-07-28 18:00 | 877 | 7.21d | 0d |
| 910 | 1.2.5.2.22 | C-653 | 60eh | 2025-07-19 18:00 | 2025-07-22 06:00 | 878 | 18.21d | 0d |
| 911 | 1.2.5.2.23 | C-659 (118-3/4") | 60eh | 2025-07-19 18:00 | 2025-07-22 06:00 | 879 | 18.21d | 0d |
| 912 | 1.2.5.2.24 | C-660 ABC (1020-3/4") | 60eh | 2025-07-19 18:00 | 2025-07-22 06:00 | 880 | 16.71d | 0d |
| 913 | 1.2.5.2.25 | C-662 (325 3/4") | 60eh | 2025-07-19 18:00 | 2025-07-22 06:00 | 881 | 18.21d | 0d |
| 914 | 1.2.5.2.26 | C-663 (62 U-3/4") | 60eh | 2025-07-19 18:00 | 2025-07-22 06:00 | 882 | 18.21d | 0d |
| 915 | 1.2.5.2.27 | C-665 A/B (128-3/4") | 60eh | 2025-07-19 23:00 | 2025-07-22 11:00 | 883 | 16d | 0d |
| 916 | 1.2.5.2.28 | C-668 (712-3/4") | 60eh | 2025-07-19 18:00 | 2025-07-22 06:00 | 884 | 18.21d | 0d |
| 917 | 1.2.5.2.29 | C-615 (3P)CAJA ENFRIADORAS | 60eh | 2025-07-19 18:00 | 2025-07-22 06:00 | 885 | 18.21d | 0d |
| 918 | 1.2.5.2.30 | C-666 ABCD (912 T ) | 60eh | 2025-07-20 06:00 | 2025-07-22 18:00 | 886 | 13.21d | 0d |
| 919 | 1.2.5.2.31 | C-661 (20 T3/4") | 60eh | 2025-07-19 18:00 | 2025-07-22 06:00 | 887 | 18.21d | 0d |

| ID | WBS | Task | Duration | Start | Finish | Predecessors | Total slack | Free slack |
| --- | --- | --- | --- | --- | --- | --- | --- | --- |
| 920 | 1.2.5.2.32 | **INSPECCION** | 7.99d | 2025-07-21 06:00 | 2025-07-29 06:00 |  | 11.7d |  |
| 921 | 1.2.5.2.32.1 | C-602 ABCD (1010 3/4") | 12eh | 2025-07-23 06:00 | 2025-07-23 18:00 | 889 | 14.71d | 0d |
| 922 | 1.2.5.2.32.2 | C-603 (62T 3/4") | 12eh | 2025-07-21 06:00 | 2025-07-21 18:00 | 890 | 19.21d | 0d |
| 923 | 1.2.5.2.32.3 | C-605 (1610-3/4") | 12eh | 2025-07-24 18:00 | 2025-07-25 06:00 | 891 | 15.71d | 0d |
| 924 | 1.2.5.2.32.4 | C-611 A (870 3/4") C | 12eh | 2025-07-22 06:00 | 2025-07-22 18:00 | 892 | 18.21d | 0d |
| 925 | 1.2.5.2.32.5 | C-611 B (870 3/4") C | 12eh | 2025-07-24 06:00 | 2025-07-24 18:00 | 893 | 16.21d | 0d |
| 926 | 1.2.5.2.32.6 | C-614- ( 1414 / 3/4") C | 12eh | 2025-07-22 06:00 | 2025-07-22 18:00 | 894 | 18.21d | 0d |
| 927 | 1.2.5.2.32.7 | C-616 (380 3/4") | 12eh | 2025-07-22 06:00 | 2025-07-22 18:00 | 895 | 18.21d | 0d |
| 928 | 1.2.5.2.32.8 | C-617 A/ B (158-3/4") | 24eh | 2025-07-22 06:00 | 2025-07-23 06:00 | 896 | 16.21d | 0d |
| 929 | 1.2.5.2.32.9 | C-619 A-B(116 /3/4") | 24eh | 2025-07-22 06:00 | 2025-07-23 06:00 | 897 | 16.21d | 0d |
| 930 | 1.2.5.2.32.10 | C-655 (459-3/4") | 12eh | 2025-07-22 06:00 | 2025-07-22 18:00 | 898 | 18.21d | 0d |
| 931 | 1.2.5.2.32.11 | C-J675 (2244--3/4")CONDENSADOR | 12eh | 2025-07-22 06:00 | 2025-07-22 18:00 | 899 | 18.21d | 0d |
| 932 | 1.2.5.2.32.12 | C-J671 (3001 -3/4) CONDENSADOR | 12eh | 2025-07-22 06:00 | 2025-07-22 18:00 | 900 | 18.21d | 0d |
| 933 | 1.2.5.2.32.13 | C-J675-5A/B (80--3/4") | 24eh | 2025-07-22 06:00 | 2025-07-23 06:00 | 901 | 16.21d | 0d |
| 934 | 1.2.5.2.32.14 | C-J671-5A/B (80 -3/4) | 24eh | 2025-07-24 06:00 | 2025-07-25 06:00 | 902 | 14.21d | 0d |
| 935 | 1.2.5.2.32.15 | C-607 A/B/C (676 3/4") | 36eh | 2025-07-23 18:00 | 2025-07-25 06:00 | 903 | 14.71d | 0d |
| 936 | 1.2.5.2.32.16 | C-607 D/E/F (676 3/4") | 36eh | 2025-07-26 18:00 | 2025-07-28 06:00 | 904 | 11.71d | 0d |
| 937 | 1.2.5.2.32.17 | C-604 A/B (197-3/4") | 12eh | 2025-07-22 06:00 | 2025-07-22 18:00 | 905 | 16.71d | 0d |
| 938 | 1.2.5.2.32.18 | C-612 A/B (56-3/4") | 24eh | 2025-07-22 06:00 | 2025-07-23 06:00 | 906 | 16.21d | 0d |
| 939 | 1.2.5.2.32.19 | C-612 C/ D (56-3/4") | 24eh | 2025-07-24 06:00 | 2025-07-25 06:00 | 907 | 14.21d | 0d |
| 940 | 1.2.5.2.32.20 | C-658 (510 T 3/4) | 12eh | 2025-07-22 06:00 | 2025-07-22 18:00 | 908 | 18.21d | 0d |
| 941 | 1.2.5.2.32.21 | C-656 A/B/C/D (880 T 3/4) | 12eh | 2025-07-28 18:00 | 2025-07-29 06:00 | 909 | 7.21d | 0d |
| 942 | 1.2.5.2.32.22 | C-653 | 12eh | 2025-07-22 06:00 | 2025-07-22 18:00 | 910 | 18.21d | 0d |
| 943 | 1.2.5.2.32.23 | C-659 (118-3/4") | 12eh | 2025-07-22 06:00 | 2025-07-22 18:00 | 911 | 18.21d | 0d |
| 944 | 1.2.5.2.32.24 | C-660 ABC (1020-3/4") | 12eh | 2025-07-22 06:00 | 2025-07-22 18:00 | 912 | 16.71d | 0d |
| 945 | 1.2.5.2.32.25 | C-662 (325 3/4") | 12eh | 2025-07-22 06:00 | 2025-07-22 18:00 | 913 | 18.21d | 0d |
| 946 | 1.2.5.2.32.26 | C-663 (62 U-3/4") | 12eh | 2025-07-22 06:00 | 2025-07-22 18:00 | 914 | 18.21d | 0d |
| 947 | 1.2.5.2.32.27 | C-665 A/B (128-3/4") | 12eh | 2025-07-22 11:00 | 2025-07-22 23:00 | 915 | 16d | 0d |
| 948 | 1.2.5.2.32.28 | C-668 (712-3/4") | 12eh | 2025-07-22 06:00 | 2025-07-22 18:00 | 916 | 18.21d | 0d |
| 949 | 1.2.5.2.32.29 | C-615 (3P)CAJA ENFRIADORAS | 12eh | 2025-07-22 06:00 | 2025-07-22 18:00 | 917 | 18.21d | 0d |
| 950 | 1.2.5.2.32.30 | C-666 ABCD (912 T ) | 12eh | 2025-07-22 18:00 | 2025-07-23 06:00 | 918 | 13.21d | 0d |
| 951 | 1.2.5.2.32.31 | C-661 (20 T3/4") | 12eh | 2025-07-22 06:00 | 2025-07-22 18:00 | 919 | 18.21d | 0d |

| ID | WBS | Task | Duration | Start | Finish | Predecessors | Total slack | Free slack |
| --- | --- | --- | --- | --- | --- | --- | --- | --- |
| 952 | 1.2.5.3 | **ARMADO Y PRUEBA** | 11.49d | 2025-07-21 18:00 | 2025-08-02 06:00 |  | 8.7d |  |
| 953 | 1.2.5.3.1 | C-602 ABCD (1010 3/4") | 60eh | 2025-07-23 18:00 | 2025-07-26 06:00 | 921 | 14.71d | 0d |
| 954 | 1.2.5.3.2 | C-603 (62T 3/4") | 24eh | 2025-07-21 18:00 | 2025-07-22 18:00 | 922 | 19.21d | 0d |
| 955 | 1.2.5.3.3 | C-605 (1610-3/4") | 24eh | 2025-07-25 06:00 | 2025-07-26 06:00 | 923 | 15.71d | 0d |
| 956 | 1.2.5.3.4 | C-611 A (870 3/4") C | 24eh | 2025-07-22 18:00 | 2025-07-23 18:00 | 924 | 18.21d | 0d |
| 957 | 1.2.5.3.5 | C-611 B (870 3/4") C | 24eh | 2025-07-24 18:00 | 2025-07-25 18:00 | 925 | 16.21d | 0d |
| 958 | 1.2.5.3.6 | C-614- ( 1414 / 3/4") C | 24eh | 2025-07-22 18:00 | 2025-07-23 18:00 | 926 | 18.21d | 0d |
| 959 | 1.2.5.3.7 | C-616 (380 3/4") | 24eh | 2025-07-22 18:00 | 2025-07-23 18:00 | 927 | 18.21d | 0d |
| 960 | 1.2.5.3.8 | C-617 A/ B (158-3/4") | 48eh | 2025-07-23 06:00 | 2025-07-25 06:00 | 928 | 16.21d | 0d |
| 961 | 1.2.5.3.9 | C-619 A-B(116 /3/4") | 48eh | 2025-07-23 06:00 | 2025-07-25 06:00 | 929 | 16.21d | 0d |
| 962 | 1.2.5.3.10 | C-655 (459-3/4") | 24eh | 2025-07-22 18:00 | 2025-07-23 18:00 | 930 | 18.21d | 0d |
| 963 | 1.2.5.3.11 | C-J675 (2244--3/4")CONDENSADOR | 24eh | 2025-07-22 18:00 | 2025-07-23 18:00 | 931 | 18.21d | 0d |
| 964 | 1.2.5.3.12 | C-J671 (3001 -3/4) CONDENSADOR | 24eh | 2025-07-22 18:00 | 2025-07-23 18:00 | 932 | 18.21d | 0d |
| 965 | 1.2.5.3.13 | C-J675-5A/B (80--3/4") | 48eh | 2025-07-23 06:00 | 2025-07-25 06:00 | 933 | 16.21d | 0d |
| 966 | 1.2.5.3.14 | C-J671-5A/B (80 -3/4) | 48eh | 2025-07-25 06:00 | 2025-07-27 06:00 | 934 | 14.21d | 0d |
| 967 | 1.2.5.3.15 | C-607 A/B/C (676 3/4") | 36eh | 2025-07-25 06:00 | 2025-07-26 18:00 | 935 | 14.71d | 0d |
| 968 | 1.2.5.3.16 | C-607 D/E/F (676 3/4") | 36eh | 2025-07-28 06:00 | 2025-07-29 18:00 | 936 | 11.71d | 0d |
| 969 | 1.2.5.3.17 | C-604 A/B (197-3/4") | 48eh | 2025-07-22 18:00 | 2025-07-24 18:00 | 937 | 16.71d | 0d |
| 970 | 1.2.5.3.18 | C-612 A/B (56-3/4") | 48eh | 2025-07-23 06:00 | 2025-07-25 06:00 | 938 | 16.21d | 0d |
| 971 | 1.2.5.3.19 | C-612 C/ D (56-3/4") | 48eh | 2025-07-25 06:00 | 2025-07-27 06:00 | 939 | 14.21d | 0d |
| 972 | 1.2.5.3.20 | C-658 (510 T 3/4) | 24eh | 2025-07-22 18:00 | 2025-07-23 18:00 | 940 | 18.21d | 0d |
| 973 | 1.2.5.3.21 | C-656 A/B/C/D (880 T 3/4) | 96eh | 2025-07-29 06:00 | 2025-08-02 06:00 | 941 | 7.21d | 0d |
| 974 | 1.2.5.3.22 | C-653 | 24eh | 2025-07-22 18:00 | 2025-07-23 18:00 | 942 | 18.21d | 0d |
| 975 | 1.2.5.3.23 | C-659 (118-3/4") | 24eh | 2025-07-22 18:00 | 2025-07-23 18:00 | 943 | 18.21d | 0d |
| 976 | 1.2.5.3.24 | C-660 ABC (1020-3/4") | 36eh | 2025-07-22 18:00 | 2025-07-24 06:00 | 944 | 16.71d | 0d |
| 977 | 1.2.5.3.25 | C-662 (325 3/4") | 24eh | 2025-07-22 18:00 | 2025-07-23 18:00 | 945 | 18.21d | 0d |
| 978 | 1.2.5.3.26 | C-663 (62 U-3/4") | 24eh | 2025-07-22 18:00 | 2025-07-23 18:00 | 946 | 18.21d | 0d |
| 979 | 1.2.5.3.27 | C-665 A/B (128-3/4") | 48eh | 2025-07-22 23:00 | 2025-07-24 23:00 | 947 | 16d | 0d |
| 980 | 1.2.5.3.28 | C-668 (712-3/4") | 24eh | 2025-07-22 18:00 | 2025-07-23 18:00 | 948 | 18.21d | 0d |
| 981 | 1.2.5.3.29 | C-615 (3P)CAJA ENFRIADORAS | 24eh | 2025-07-22 18:00 | 2025-07-23 18:00 | 949 | 18.21d | 0d |
| 982 | 1.2.5.3.30 | C-666 ABCD (912 T ) | 96eh | 2025-07-23 06:00 | 2025-07-27 06:00 | 950 | 13.21d | 0d |
| 983 | 1.2.5.3.31 | C-661 (20 T3/4") | 24eh | 2025-07-22 18:00 | 2025-07-23 18:00 | 951 | 18.21d | 0d |

| ID | WBS | Task | Duration | Start | Finish | Predecessors | Total slack | Free slack |
| --- | --- | --- | --- | --- | --- | --- | --- | --- |
| 984 | 1.2.5.4 | **NORMALIZADO DE BRIDAS** | 13.49d | 2025-07-22 18:00 | 2025-08-05 06:00 |  | 7.2d | 0d |
| 985 | 1.2.5.4.1 | C-602 ABCD (1010 3/4") | 60eh | 2025-07-26 06:00 | 2025-07-28 18:00 | 953 | 14.71d | 7.5d |
| 986 | 1.2.5.4.2 | C-603 (62T 3/4") | 36eh | 2025-07-22 18:00 | 2025-07-24 06:00 | 954 | 19.21d | 12d |
| 987 | 1.2.5.4.3 | C-605 (1610-3/4") | 36eh | 2025-07-26 06:00 | 2025-07-27 18:00 | 955 | 15.71d | 8.5d |
| 988 | 1.2.5.4.4 | C-611 A (870 3/4") C | 36eh | 2025-07-23 18:00 | 2025-07-25 06:00 | 956 | 18.21d | 11d |
| 989 | 1.2.5.4.5 | C-611 B (870 3/4") C | 36eh | 2025-07-25 18:00 | 2025-07-27 06:00 | 957 | 16.21d | 9d |
| 990 | 1.2.5.4.6 | C-614- ( 1414 / 3/4") C | 36eh | 2025-07-23 18:00 | 2025-07-25 06:00 | 958 | 18.21d | 11d |
| 991 | 1.2.5.4.7 | C-616 (380 3/4") | 36eh | 2025-07-23 18:00 | 2025-07-25 06:00 | 959 | 18.21d | 11d |
| 992 | 1.2.5.4.8 | C-617 A/ B (158-3/4") | 48eh | 2025-07-25 06:00 | 2025-07-27 06:00 | 960 | 16.21d | 9d |
| 993 | 1.2.5.4.9 | C-619 A-B(116 /3/4") | 48eh | 2025-07-25 06:00 | 2025-07-27 06:00 | 961 | 16.21d | 9d |
| 994 | 1.2.5.4.10 | C-655 (459-3/4") | 36eh | 2025-07-23 18:00 | 2025-07-25 06:00 | 962 | 18.21d | 11d |
| 995 | 1.2.5.4.11 | C-J675 (2244--3/4")CONDENSADOR | 36eh | 2025-07-23 18:00 | 2025-07-25 06:00 | 963 | 18.21d | 11d |
| 996 | 1.2.5.4.12 | C-J671 (3001 -3/4) CONDENSADOR | 36eh | 2025-07-23 18:00 | 2025-07-25 06:00 | 964 | 18.21d | 11d |
| 997 | 1.2.5.4.13 | C-J675-5A/B (80--3/4") | 48eh | 2025-07-25 06:00 | 2025-07-27 06:00 | 965 | 16.21d | 9d |
| 998 | 1.2.5.4.14 | C-J671-5A/B (80 -3/4) | 48eh | 2025-07-27 06:00 | 2025-07-29 06:00 | 966 | 14.21d | 7d |
| 999 | 1.2.5.4.15 | C-607 A/B/C (676 3/4") | 48eh | 2025-07-26 18:00 | 2025-07-28 18:00 | 967 | 14.71d | 7.5d |
| 1000 | 1.2.5.4.16 | C-607 D/E/F (676 3/4") | 48eh | 2025-07-29 18:00 | 2025-07-31 18:00 | 968 | 11.71d | 4.5d |
| 1001 | 1.2.5.4.17 | C-604 A/B (197-3/4") | 48eh | 2025-07-24 18:00 | 2025-07-26 18:00 | 969 | 16.71d | 9.5d |
| 1002 | 1.2.5.4.18 | C-612 A/B (56-3/4") | 48eh | 2025-07-25 06:00 | 2025-07-27 06:00 | 970 | 16.21d | 9d |
| 1003 | 1.2.5.4.19 | C-612 C/ D (56-3/4") | 48eh | 2025-07-27 06:00 | 2025-07-29 06:00 | 971 | 14.21d | 7d |
| 1004 | 1.2.5.4.20 | C-658 (510 T 3/4) | 36eh | 2025-07-23 18:00 | 2025-07-25 06:00 | 972 | 18.21d | 11d |
| 1005 | 1.2.5.4.21 | C-656 A/B/C/D (880 T 3/4) | 72eh | 2025-08-02 06:00 | 2025-08-05 06:00 | 973 | 7.21d | 0d |
| 1006 | 1.2.5.4.22 | C-653 | 36eh | 2025-07-23 18:00 | 2025-07-25 06:00 | 974 | 18.21d | 11d |
| 1007 | 1.2.5.4.23 | C-659 (118-3/4") | 36eh | 2025-07-23 18:00 | 2025-07-25 06:00 | 975 | 18.21d | 11d |
| 1008 | 1.2.5.4.24 | C-660 ABC (1020-3/4") | 60eh | 2025-07-24 06:00 | 2025-07-26 18:00 | 976 | 16.71d | 9.5d |
| 1009 | 1.2.5.4.25 | C-662 (325 3/4") | 36eh | 2025-07-23 18:00 | 2025-07-25 06:00 | 977 | 18.21d | 11d |
| 1010 | 1.2.5.4.26 | C-663 (62 U-3/4") | 36eh | 2025-07-23 18:00 | 2025-07-25 06:00 | 978 | 18.21d | 11d |
| 1011 | 1.2.5.4.27 | C-665 A/B (128-3/4") | 60eh | 2025-07-24 23:00 | 2025-07-27 11:00 | 979 | 16d | 8.79d |
| 1012 | 1.2.5.4.28 | C-668 (712-3/4") | 36eh | 2025-07-23 18:00 | 2025-07-25 06:00 | 980 | 18.21d | 11d |
| 1013 | 1.2.5.4.29 | C-615 (3P)CAJA ENFRIADORAS | 36eh | 2025-07-23 18:00 | 2025-07-25 06:00 | 981 | 18.21d | 11d |
| 1014 | 1.2.5.4.30 | C-666 ABCD (912 T ) | 72eh | 2025-07-27 06:00 | 2025-07-30 06:00 | 982 | 13.21d | 6d |
| 1015 | 1.2.5.4.31 | C-661 (20 T3/4") | 36eh | 2025-07-23 18:00 | 2025-07-25 06:00 | 983 | 18.21d | 11d |
| 1016 | 1.2.5.5 | ENTREGA MECÁNICA DE EQUIPOS | 12eh | 2025-08-05 06:00 | 2025-08-05 18:00 | 984, 985, 986, 987, 988, 989, 990, 991, 992, 993, 994, 995, 996, 997, 998, 999, 1000, 1001, 1002, 1003, 1004, 1005, 1006, 1007, 1008, 1009, 1010, 1011, 1012, 1013, 1014, 1015 | 7.21d |  |

| ID | WBS | Task | Duration | Start | Finish | Predecessors | Baseline start | Baseline finish | Baseline duration | Total slack | Free slack |
| --- | --- | --- | --- | --- | --- | --- | --- | --- | --- | --- | --- |
| 1017 | 1.2.6 | **AEROENFRIADORES** | 15.95d | 2025-07-17 18:00 | 2025-08-02 17:00 |  |  |  |  | 10.24d |  |
| 1018 | 1.2.6.1 | **C-601 ABCDEFGH (204-1")** | 14.82d | 2025-07-17 18:00 | 2025-08-01 14:00 |  | 2005-05-24 12:00 | 2005-05-31 13:36 | 7.07d | 11.33d |  |
| 1019 | 1.2.6.1.1 | COLOCAR B.C. | 48eh | 2025-07-17 18:00 | 2025-07-19 18:00 | 6 | 2005-05-24 12:00 | 2005-05-25 00:00 | 12eh | 11.33d | 0d |
| 1020 | 1.2.6.1.2 | RETIRAR TAPONES | 96eh | 2025-07-18 18:00 | 2025-07-22 18:00 | 1019FS-24eh | 2005-05-24 14:24 | 2005-05-27 06:24 | 64eh | 11.33d | 0d |
| 1021 | 1.2.6.1.3 | REALIZAR LIMPIEZA | 96eh | 2025-07-21 06:00 | 2025-07-25 06:00 | 1020FS-36eh | 2005-05-25 03:12 | 2005-05-29 03:12 | 96eh | 11.33d | 0d |
| 1022 | 1.2.6.1.4 | REPASO DE ROSCAS | 96eh | 2025-07-23 18:00 | 2025-07-27 18:00 | 1021FS-36eh | 2005-05-25 22:24 | 2005-05-29 22:24 | 96eh | 11.33d | 0d |
| 1023 | 1.2.6.1.5 | MONTAR TAPONES | 80eh | 2025-07-26 06:00 | 2025-07-29 14:00 | 1022FS-36eh | 2005-05-27 22:24 | 2005-05-30 14:24 | 64eh | 11.33d | 0d |
| 1024 | 1.2.6.1.6 | PROBAR | 48eh | 2025-07-28 14:00 | 2025-07-30 14:00 | 1023FS-24eh | 2005-05-30 01:36 | 2005-05-31 07:36 | 30eh | 11.33d | 0d |
| 1025 | 1.2.6.1.7 | RETIRAR B.C. | 48eh | 2025-07-30 14:00 | 2025-08-01 14:00 | 1024 | 2005-05-31 01:36 | 2005-05-31 13:36 | 12eh | 11.33d | 1.08d |
| 1026 | 1.2.6.2 | **C-608 A1/2 (120-1")** | 4.91d | 2025-07-17 18:00 | 2025-07-22 16:00 |  | 2005-05-25 00:00 | 2005-05-31 21:12 | 6.88d | 10.24d |  |
| 1027 | 1.2.6.2.1 | COLOCAR B.C. | 10eh | 2025-07-17 18:00 | 2025-07-18 04:00 | 6 | 2005-05-25 00:00 | 2005-05-25 06:00 | 6eh | 10.25d | 0d |
| 1028 | 1.2.6.2.2 | RETIRAR TAPONES | 24eh | 2025-07-18 04:00 | 2025-07-19 04:00 | 1027 | 2005-05-27 06:24 | 2005-05-27 22:24 | 16eh | 10.25d | 0d |
| 1029 | 1.2.6.2.3 | REALIZAR LIMPIEZA | 24eh | 2025-07-19 04:00 | 2025-07-20 04:00 | 1028 | 2005-05-29 03:12 | 2005-05-29 23:12 | 20eh | 11.08d | 0d |
| 1030 | 1.2.6.2.4 | REPASO DE ROSCAS | 24eh | 2025-07-20 04:00 | 2025-07-21 04:00 | 1029 | 2005-05-29 23:12 | 2005-05-30 19:12 | 20eh | 12.25d | 0d |
| 1031 | 1.2.6.2.5 | MONTAR TAPONES | 20eh | 2025-07-21 04:00 | 2025-07-22 00:00 | 1030 | 2005-05-30 19:12 | 2005-05-31 11:12 | 16eh | 13.75d | 0d |
| 1032 | 1.2.6.2.6 | PROBAR | 8eh | 2025-07-22 00:00 | 2025-07-22 08:00 | 1031 | 2005-05-31 11:12 | 2005-05-31 15:12 | 4eh | 19.33d | 0d |
| 1033 | 1.2.6.2.7 | RETIRAR B.C. | 8eh | 2025-07-22 08:00 | 2025-07-22 16:00 | 1032 | 2005-05-31 15:12 | 2005-05-31 21:12 | 6eh | 19.33d | 0.67d |
| 1034 | 1.2.6.3 | **C-610 (120-1")** | 5.5d | 2025-07-18 04:00 | 2025-07-23 16:00 |  | 2005-05-25 00:00 | 2005-05-31 21:12 | 6.88d | 10.83d |  |
| 1035 | 1.2.6.3.1 | COLOCAR B.C. | 10eh | 2025-07-18 04:00 | 2025-07-18 14:00 | 1027 | 2005-05-25 00:00 | 2005-05-25 06:00 | 6eh | 10.83d | 0d |
| 1036 | 1.2.6.3.2 | RETIRAR TAPONES | 24eh | 2025-07-19 04:00 | 2025-07-20 04:00 | 1028, 1035 | 2005-05-27 06:24 | 2005-05-27 22:24 | 16eh | 10.25d | 0d |
| 1037 | 1.2.6.3.3 | REALIZAR LIMPIEZA | 24eh | 2025-07-20 04:00 | 2025-07-21 04:00 | 1029, 1036 | 2005-05-29 03:12 | 2005-05-29 23:12 | 20eh | 11.08d | 0d |
| 1038 | 1.2.6.3.4 | REPASO DE ROSCAS | 24eh | 2025-07-21 04:00 | 2025-07-22 04:00 | 1030, 1037 | 2005-05-29 23:12 | 2005-05-30 19:12 | 20eh | 12.25d | 0d |
| 1039 | 1.2.6.3.5 | MONTAR TAPONES | 20eh | 2025-07-22 04:00 | 2025-07-23 00:00 | 1031, 1038 | 2005-05-30 19:12 | 2005-05-31 11:12 | 16eh | 13.58d | 0d |
| 1040 | 1.2.6.3.6 | PROBAR | 8eh | 2025-07-23 00:00 | 2025-07-23 08:00 | 1032, 1039 | 2005-05-31 11:12 | 2005-05-31 15:12 | 4eh | 18.67d | 0d |
| 1041 | 1.2.6.3.7 | RETIRAR B.C. | 8eh | 2025-07-23 08:00 | 2025-07-23 16:00 | 1033, 1040 | 2005-05-31 15:12 | 2005-05-31 21:12 | 6eh | 18.67d | 0.08d |

Notes:
- 1018: SON 8 PANELES
- 1020: 12 HS X CADA PANEL

| ID | WBS | Task | Duration | Start | Finish | Predecessors | Baseline start | Baseline finish | Baseline duration | Total slack | Free slack |
| --- | --- | --- | --- | --- | --- | --- | --- | --- | --- | --- | --- |
| 1042 | 1.2.6.4 | **C-618 (120-1")** | 5.41d | 2025-07-18 14:00 | 2025-07-24 00:00 |  | 2005-05-25 00:00 | 2005-05-31 21:12 | 6.88d | 11.58d |  |
| 1043 | 1.2.6.4.1 | COLOCAR B.C. | 6eh | 2025-07-18 14:00 | 2025-07-18 20:00 | 1035 | 2005-05-25 00:00 | 2005-05-25 06:00 | 6eh | 11.58d | 0d |
| 1044 | 1.2.6.4.2 | RETIRAR TAPONES | 12eh | 2025-07-20 04:00 | 2025-07-20 16:00 | 1036, 1043 | 2005-05-27 06:24 | 2005-05-27 22:24 | 16eh | 10.25d | 0d |
| 1045 | 1.2.6.4.3 | REALIZAR LIMPIEZA | 16eh | 2025-07-21 04:00 | 2025-07-21 20:00 | 1037, 1044 | 2005-05-29 03:12 | 2005-05-29 23:12 | 20eh | 11.08d | 0d |
| 1046 | 1.2.6.4.4 | REPASO DE ROSCAS | 12eh | 2025-07-22 04:00 | 2025-07-22 16:00 | 1038, 1045 | 2005-05-29 23:12 | 2005-05-30 19:12 | 20eh | 12.25d | 0.17d |
| 1047 | 1.2.6.4.5 | MONTAR TAPONES | 12eh | 2025-07-23 00:00 | 2025-07-23 12:00 | 1039, 1046 | 2005-05-30 19:12 | 2005-05-31 11:12 | 16eh | 13.58d | 0d |
| 1048 | 1.2.6.4.6 | PROBAR | 6eh | 2025-07-23 12:00 | 2025-07-23 18:00 | 1040, 1047 | 2005-05-31 11:12 | 2005-05-31 15:12 | 4eh | 18.58d | 0d |
| 1049 | 1.2.6.4.7 | RETIRAR B.C. | 6eh | 2025-07-23 18:00 | 2025-07-24 00:00 | 1041, 1048 | 2005-05-31 15:12 | 2005-05-31 21:12 | 6eh | 18.58d | 1d |
| 1050 | 1.2.6.5 | **C-620 (114-1")** | 6.5d | 2025-07-18 20:00 | 2025-07-25 08:00 |  | 2005-05-25 00:00 | 2005-05-31 21:12 | 6.88d | 11.66d |  |
| 1051 | 1.2.6.5.1 | COLOCAR B.C. | 10eh | 2025-07-18 20:00 | 2025-07-19 06:00 | 1043 | 2005-05-25 00:00 | 2005-05-25 06:00 | 6eh | 11.67d | 0d |
| 1052 | 1.2.6.5.2 | RETIRAR TAPONES | 24eh | 2025-07-20 16:00 | 2025-07-21 16:00 | 1044, 1051 | 2005-05-27 06:24 | 2005-05-27 22:24 | 16eh | 10.25d | 0d |
| 1053 | 1.2.6.5.3 | REALIZAR LIMPIEZA | 24eh | 2025-07-21 20:00 | 2025-07-22 20:00 | 1045, 1052 | 2005-05-29 03:12 | 2005-05-29 23:12 | 20eh | 11.08d | 0d |
| 1054 | 1.2.6.5.4 | REPASO DE ROSCAS | 24eh | 2025-07-22 20:00 | 2025-07-23 20:00 | 1046, 1053 | 2005-05-29 23:12 | 2005-05-30 19:12 | 20eh | 12.08d | 0d |
| 1055 | 1.2.6.5.5 | MONTAR TAPONES | 20eh | 2025-07-23 20:00 | 2025-07-24 16:00 | 1047, 1054 | 2005-05-30 19:12 | 2005-05-31 11:12 | 16eh | 13.25d | 0d |
| 1056 | 1.2.6.5.6 | PROBAR | 8eh | 2025-07-24 16:00 | 2025-07-25 00:00 | 1055 | 2005-05-31 11:12 | 2005-05-31 15:12 | 4eh | 17.58d | 0d |
| 1057 | 1.2.6.5.7 | RETIRAR B.C. | 8eh | 2025-07-25 00:00 | 2025-07-25 08:00 | 1049, 1056 | 2005-05-31 15:12 | 2005-05-31 21:12 | 6eh | 17.58d | 5d |
| 1058 | 1.2.6.6 | **C-651 A/B(145-1")** | 12.07d | 2025-07-19 06:00 | 2025-07-31 08:00 |  | 2005-05-24 12:00 | 2005-05-28 20:24 | 4.35d | 11.66d |  |
| 1059 | 1.2.6.6.1 | COLOCAR B.C. | 24eh | 2025-07-19 06:00 | 2025-07-20 06:00 | 1027, 1051 | 2005-05-24 12:00 | 2005-05-25 00:00 | 12eh | 11.67d | 0d |
| 1060 | 1.2.6.6.2 | RETIRAR TAPONES | 48eh | 2025-07-21 16:00 | 2025-07-23 16:00 | 1028, 1052, 1059 | 2005-05-24 16:48 | 2005-05-26 00:48 | 32eh | 10.25d | 0d |
| 1061 | 1.2.6.6.3 | REALIZAR LIMPIEZA | 48eh | 2025-07-23 16:00 | 2025-07-25 16:00 | 1029, 1053, 1060 | 2005-05-25 12:00 | 2005-05-26 20:00 | 32eh | 10.25d | 0d |
| 1062 | 1.2.6.6.4 | REPASO DE ROSCAS | 48eh | 2025-07-25 16:00 | 2025-07-27 16:00 | 1030, 1054, 1061 | 2005-05-26 07:12 | 2005-05-27 15:12 | 32eh | 10.25d | 0d |
| 1063 | 1.2.6.6.5 | MONTAR TAPONES | 48eh | 2025-07-27 16:00 | 2025-07-29 16:00 | 1031, 1055, 1062 | 2005-05-27 02:24 | 2005-05-28 10:24 | 32eh | 10.25d | 0d |
| 1064 | 1.2.6.6.6 | PROBAR | 16eh | 2025-07-29 16:00 | 2025-07-30 08:00 | 1063 | 2005-05-28 10:24 | 2005-05-28 14:24 | 4eh | 12.58d | 0d |
| 1065 | 1.2.6.6.7 | RETIRAR B.C. | 24eh | 2025-07-30 08:00 | 2025-07-31 08:00 | 1057, 1064 | 2005-05-28 14:24 | 2005-05-28 20:24 | 6eh | 12.58d | 2.33d |

| ID | WBS | Task | Duration | Start | Finish | Predecessors | Baseline start | Baseline finish | Baseline duration | Total slack | Free slack |
| --- | --- | --- | --- | --- | --- | --- | --- | --- | --- | --- | --- |
| 1066 | 1.2.6.7 | **C-652 A/B (145-1")** | 13.07d | 2025-07-20 06:00 | 2025-08-02 08:00 |  | 2005-05-25 00:00 | 2005-05-30 11:00 | 5.46d | 10.24d |  |
| 1067 | 1.2.6.7.1 | COLOCAR B.C. | 24eh | 2025-07-20 06:00 | 2025-07-21 06:00 | 1059 | 2005-05-25 00:00 | 2005-05-25 12:00 | 12eh | 12.67d | 0d |
| 1068 | 1.2.6.7.2 | RETIRAR TAPONES | 48eh | 2025-07-23 16:00 | 2025-07-25 16:00 | 1060, 1067 | 2005-05-26 00:48 | 2005-05-27 08:48 | 32eh | 10.25d | 0d |
| 1069 | 1.2.6.7.3 | REALIZAR LIMPIEZA | 48eh | 2025-07-25 16:00 | 2025-07-27 16:00 | 1061, 1068 | 2005-05-26 21:36 | 2005-05-28 05:36 | 32eh | 10.25d | 0d |
| 1070 | 1.2.6.7.4 | REPASO DE ROSCAS | 48eh | 2025-07-27 16:00 | 2025-07-29 16:00 | 1062, 1069 | 2005-05-27 20:00 | 2005-05-29 04:00 | 32eh | 10.25d | 0d |
| 1071 | 1.2.6.7.5 | MONTAR TAPONES | 48eh | 2025-07-29 16:00 | 2025-07-31 16:00 | 1063, 1070 | 2005-05-28 18:24 | 2005-05-30 02:24 | 32eh | 10.25d | 0d |
| 1072 | 1.2.6.7.6 | PROBAR | 16eh | 2025-07-31 16:00 | 2025-08-01 08:00 | 1071 | 2005-05-29 20:00 | 2005-05-30 05:00 | 9eh | 10.25d | 0d |
| 1073 | 1.2.6.7.7 | RETIRAR B.C. | 24eh | 2025-08-01 08:00 | 2025-08-02 08:00 | 1072 | 2005-05-30 05:00 | 2005-05-30 11:00 | 6eh | 10.25d | 0d |
| 1074 | 1.2.6.8 | **C-654 A/B (174-1")** | 12.41d | 2025-07-21 06:00 | 2025-08-02 16:00 |  | 2005-05-25 00:00 | 2005-05-31 21:12 | 6.88d | 10.24d |  |
| 1075 | 1.2.6.8.1 | COLOCAR B.C. | 10eh | 2025-07-21 06:00 | 2025-07-21 16:00 | 1067 | 2005-05-25 00:00 | 2005-05-25 06:00 | 6eh | 17.08d | 4d |
| 1076 | 1.2.6.8.2 | RETIRAR TAPONES | 30eh | 2025-07-25 16:00 | 2025-07-26 22:00 | 1068, 1075 | 2005-05-27 06:24 | 2005-05-27 22:24 | 16eh | 13.08d | 0.75d |
| 1077 | 1.2.6.8.3 | REALIZAR LIMPIEZA | 30eh | 2025-07-27 16:00 | 2025-07-28 22:00 | 1069, 1076 | 2005-05-29 03:12 | 2005-05-29 23:12 | 20eh | 12.33d | 0.75d |
| 1078 | 1.2.6.8.4 | REPASO DE ROSCAS | 24eh | 2025-07-29 16:00 | 2025-07-30 16:00 | 1070, 1077 | 2005-05-29 23:12 | 2005-05-30 19:12 | 20eh | 11.58d | 1d |
| 1079 | 1.2.6.8.5 | MONTAR TAPONES | 24eh | 2025-07-31 16:00 | 2025-08-01 16:00 | 1071, 1078 | 2005-05-30 19:12 | 2005-05-31 11:12 | 16eh | 10.58d | 0d |
| 1080 | 1.2.6.8.6 | PROBAR | 8eh | 2025-08-01 16:00 | 2025-08-02 00:00 | 1079 | 2005-05-31 11:12 | 2005-05-31 15:12 | 4eh | 10.58d | 0.33d |
| 1081 | 1.2.6.8.7 | RETIRAR B.C. | 8eh | 2025-08-02 08:00 | 2025-08-02 16:00 | 1073, 1080 | 2005-05-31 15:12 | 2005-05-31 21:12 | 6eh | 10.25d | 0d |
| 1082 | 1.2.6.9 | ENTREGA DE EQUIPOS | 1eh | 2025-08-02 16:00 | 2025-08-02 17:00 | 1025, 1033, 1041, 1049, 1057, 1065, 1073, 1081 |  |  |  | 10.25d |  |
| 1083 | 1.2.7 | **FILTROS** | 4.41d | 2025-07-17 18:00 | 2025-07-22 04:00 |  |  |  |  | 21.78d |  |
| 1084 | 1.2.7.1 | **F-691** | 1.92d | 2025-07-17 18:00 | 2025-07-19 16:00 |  |  |  |  | 21.78d |  |
| 1085 | 1.2.7.1.1 | DESBRIDAR | 6eh | 2025-07-17 18:00 | 2025-07-18 00:00 | 6 |  |  |  | 21.79d | 0d |
| 1086 | 1.2.7.1.2 | LIMPIEZA INTERIOR Y REPARACION DE FILTRO | 30eh | 2025-07-18 00:00 | 2025-07-19 06:00 | 1085 |  |  |  | 21.79d | 0d |
| 1087 | 1.2.7.1.3 | INSPECCION | 2eh | 2025-07-19 06:00 | 2025-07-19 08:00 | 1086 |  |  |  | 21.79d | 0d |
| 1088 | 1.2.7.1.4 | BRIDAR | 8eh | 2025-07-19 08:00 | 2025-07-19 16:00 | 1087 |  |  |  | 21.79d | 0d |
| 1089 | 1.2.7.2 | **F-695** | 1.17d | 2025-07-19 16:00 | 2025-07-20 20:00 |  |  |  |  | 21.78d |  |
| 1090 | 1.2.7.2.1 | DESBRIDAR | 6eh | 2025-07-19 16:00 | 2025-07-19 22:00 | 1088 |  |  |  | 21.79d | 0d |
| 1091 | 1.2.7.2.2 | LIMPIEZA INTERIOR | 12eh | 2025-07-19 22:00 | 2025-07-20 10:00 | 1090 |  |  |  | 21.79d | 0d |
| 1092 | 1.2.7.2.3 | INSPECCION | 2eh | 2025-07-20 10:00 | 2025-07-20 12:00 | 1091 |  |  |  | 21.79d | 0d |
| 1093 | 1.2.7.2.4 | BRIDAR | 8eh | 2025-07-20 12:00 | 2025-07-20 20:00 | 1092 |  |  |  | 21.79d | 0d |

Notes:
- 1084: 1000 DE ALT. / 0.4 DE Ø / PASAMANO 8"
- 1089: 1000 DE ALT. / 0.4 DE Ø / PASAMANO 8"

| ID | WBS | Task | Duration | Start | Finish | Predecessors | Total slack | Free slack |
| --- | --- | --- | --- | --- | --- | --- | --- | --- |
| 1094 | 1.2.7.3 | **F-696** | 1.33d | 2025-07-20 20:00 | 2025-07-22 04:00 |  | 21.78d |  |
| 1095 | 1.2.7.3.1 | COLOCAR BC | 6eh | 2025-07-20 20:00 | 2025-07-21 02:00 | 1093 | 21.79d | 0d |
| 1096 | 1.2.7.3.2 | DESTAPAR PM | 12eh | 2025-07-21 02:00 | 2025-07-21 14:00 | 1095 | 21.79d | 0d |
| 1097 | 1.2.7.3.3 | LIMPIEZA INTERIOR | 2eh | 2025-07-21 14:00 | 2025-07-21 16:00 | 1096 | 21.79d | 0d |
| 1098 | 1.2.7.3.4 | INSPECCION | 8eh | 2025-07-21 16:00 | 2025-07-22 00:00 | 1097 | 21.79d | 0d |
| 1099 | 1.2.7.3.5 | BRIDAR | 4eh | 2025-07-22 00:00 | 2025-07-22 04:00 | 1098 | 21.79d |  |
| 1100 | 1.2.8 | **VALVULAS DE SEGURIDAD** | 22.36d | 2025-07-17 18:00 | 2025-08-09 03:00 |  | 3.83d |  |
| 1101 | 1.2.8.1 | DESMONTAR VALVULAS | 120eh | 2025-07-17 18:00 | 2025-07-22 18:00 | 6 | 3.83d | 0d |
| 1102 | 1.2.8.2 | PRE-TEST | 144eh | 2025-07-19 18:00 | 2025-07-25 18:00 | 1101FS-72eh | 3.83d | 0d |
| 1103 | 1.2.8.3 | REPARACIONES Y CALIBRADO | 15ed | 2025-07-21 18:00 | 2025-08-05 18:00 | 1102FS-96eh | 3.83d | 0d |
| 1104 | 1.2.8.4 | CALIBRACION EN BANCO | 144eh | 2025-07-31 23:00 | 2025-08-06 23:00 | 1103FS-115eh | 3.83d | 0d |
| 1105 | 1.2.8.5 | MONTAR | 112eh | 2025-08-04 11:00 | 2025-08-09 03:00 | 1104FS-60eh | 3.83d |  |
| 1106 | 1.2.9 | **VARIOS DE CAÑERIAS** | 24d | 2025-07-17 18:00 | 2025-08-10 18:24 | 6 | 2.19d |  |
| 1107 | 1.2.9.1 | CAMBIO VALVULAS SOLDADAS | 24d | 2025-07-17 18:00 | 2025-08-10 18:24 | 5 | 2.19d |  |
| 1108 | 1.2.9.2 | CAMBIO VALVULAS BRIDADAS | 24d | 2025-07-17 18:00 | 2025-08-10 18:24 | 5 | 2.19d |  |
| 1109 | 1.2.10 | INSTRUMENTOS | 24d | 2025-07-17 17:00 | 2025-08-10 17:24 | 5 | 2.23d |  |
| 1110 | 1.2.11 | OBRAS | 24d | 2025-07-17 17:00 | 2025-08-10 17:24 | 5 | 2.23d |  |
| 1111 | 1.2.12 | **EQUIPOS ROTANTES** | 26.32d | 2025-07-15 06:00 | 2025-08-10 14:00 |  | 1.46d |  |
| 1112 | 1.2.12.1 | **J-675** | 21.69d | 2025-07-15 06:00 | 2025-08-05 23:00 |  | 7d |  |
| 1113 | 1.2.12.1.1 | ENTREGA | 1eh | 2025-07-15 06:00 | 2025-07-15 07:00 | 4FS+24eh | 7d | 0d |
| 1114 | 1.2.12.1.2 | **MANTENIMIENTO** | 21.65d | 2025-07-15 07:00 | 2025-08-05 23:00 |  | 7d |  |
| 1115 | 1.2.12.1.2.1 | DESMONTAJE Y TRASLADO | 30eh | 2025-07-15 07:00 | 2025-07-16 13:00 | 1113 | 7d | 0d |
| 1116 | 1.2.12.1.2.2 | MTO. MECANICO | 460eh | 2025-07-16 13:00 | 2025-08-04 17:00 | 1115 | 7d | 0d |
| 1117 | 1.2.12.1.2.3 | PRUEBA | 30eh | 2025-08-04 17:00 | 2025-08-05 23:00 | 1116 | 7d |  |

Notes:
- 1094: 1000 DE ALT. / 0.4 DE Ø / PASAMANO 8"
- 1100: 107 VALVULAS
- 1101: 10 VALVULAS POR TURNO
- 1102: 7 VALVULA X TURNO
- 1103: 15DT7 VALVULAS X DIA
- 1104: SE ESTIMA EL 75% / 80 VALV7 VALV X TURNO
- 1105: 10 VALVULAS POR TURNO
- 1114: DESMONTAJ3E / MANTENIMIENTO / MONTAJE / PRUEBA Y PEM

| ID | WBS | Task | Duration | Start | Finish | Predecessors | Baseline start | Baseline finish | Baseline duration | Total slack | Free slack |
| --- | --- | --- | --- | --- | --- | --- | --- | --- | --- | --- | --- |
| 1118 | 1.2.12.2 | **J-671** | 25.32d | 2025-07-16 06:00 | 2025-08-10 14:00 |  |  |  |  | 0.46d |  |
| 1119 | 1.2.12.2.1 | ENTREGA | 1eh | 2025-07-16 06:00 | 2025-07-16 07:00 | 4FS+48eh |  |  |  | 0.46d | 0d |
| 1120 | 1.2.12.2.2 | **MANTENIMIENTO** | 25.27d | 2025-07-16 07:00 | 2025-08-10 14:00 |  |  |  |  | 0.46d |  |
| 1121 | 1.2.12.2.2.1 | DESMONTAJE Y TRASLADO | 30eh | 2025-07-16 07:00 | 2025-07-17 13:00 | 1119 |  |  |  | 0.46d | 0d |
| 1122 | 1.2.12.2.2.2 | MTO. MECANICO | 520eh | 2025-07-17 13:00 | 2025-08-08 05:00 | 1121 |  |  |  | 0.46d | 0d |
| 1123 | 1.2.12.2.2.3 | PRUEBA | 57eh | 2025-08-08 05:00 | 2025-08-10 14:00 | 1122 |  |  |  | 0.46d |  |
| 1124 | 1.2.12.3 | RESTO DE EQ. ROTANTES | 60eh | 2025-07-17 18:00 | 2025-07-20 06:00 | 6 |  |  |  | 21.79d |  |
| 1125 | 1.3 | **PEM** | 4d | 2025-08-12 23:02 | 2025-08-16 23:02 |  |  |  |  | 0d |  |
| 1126 | 1.3.1 | RETIRO DE BC L.B. | 72eh | 2025-08-12 23:02 | 2025-08-15 23:02 | 313, 1117, 1123, 1109, 1110, 1105, 1107, 1108, 1082, 1016, 403, 422, 456, 475, 506, 525, 540, 552, 575, 588, 600, 610, 620, 630, 645, 656, 667, 672, 683, 694, 699, 710, 721, 732, 743, 759, 775, 791, 802, 813, 827, 839, 844, 849, 854, 1088, 1093, 1099 |  |  |  | 0d |  |
| 1127 | 1.3.2 | PUESTA EN MARCHA | 72eh | 2025-08-13 23:02 | 2025-08-16 23:02 | 1126SS+24eh |  |  |  | 0d |  |
| 1128 | 1.4 | **MEROX** | 17.03d | 2025-07-16 18:00 | 2025-08-02 19:00 |  | 2005-05-21 00:00 | 2005-05-30 04:11 | 9.17d | 12.58d |  |
| 1129 | 1.4.1 | **PARO UNIDAD** | 3.29d | 2025-07-16 18:00 | 2025-07-20 01:00 |  | 2005-05-21 00:00 | 2005-05-23 00:00 | 48eh | 12.58d |  |
| 1130 | 1.4.1.1 | LAVADO Y PURGA | 55eh | 2025-07-16 18:00 | 2025-07-19 01:00 | 10 |  |  |  | 12.58d | 0d |
| 1131 | 1.4.1.2 | COLOCACION B.C. | 24eh | 2025-07-19 01:00 | 2025-07-20 01:00 | 1130 | 2005-05-21 00:00 | 2005-05-23 00:00 | 48eh | 12.58d | 0d |
| 1132 | 1.4.2 | **MANTENIMIENTO** | 13.74d | 2025-07-20 01:00 | 2025-08-02 19:00 |  |  |  |  | 12.58d |  |
| 1133 | 1.4.2.1 | **TORRES** | 11.58d | 2025-07-22 01:00 | 2025-08-02 15:00 |  |  |  |  | 12.74d |  |
| 1134 | 1.4.2.1.1 | **E-801** | 11.58d | 2025-07-22 01:00 | 2025-08-02 15:00 |  |  |  |  | 12.74d |  |
| 1135 | 1.4.2.1.1.1 | COLOCACION B.C. | 12eh | 2025-07-22 01:00 | 2025-07-22 13:00 | 1131FS+48eh |  |  |  | 12.75d | 0d |
| 1136 | 1.4.2.1.1.2 | DESTAPAR P.H.18"-300# - 2 - | 10eh | 2025-07-22 13:00 | 2025-07-22 23:00 | 1135 |  |  |  | 12.75d | 0d |
| 1137 | 1.4.2.1.1.3 | VENTILACION | 36eh | 2025-07-22 23:00 | 2025-07-24 11:00 | 1136 |  |  |  | 12.75d | 0d |
| 1138 | 1.4.2.1.1.4 | AUTORIZACION INGRESO CONF. | 2eh | 2025-07-24 11:00 | 2025-07-24 13:00 | 1137 |  |  |  | 12.75d | 0d |
| 1139 | 1.4.2.1.1.5 | MONTAR ILUMINACION | 2eh | 2025-07-24 13:00 | 2025-07-24 15:00 | 1138 |  |  |  | 12.75d | 0d |
| 1140 | 1.4.2.1.1.6 | DESMONTAR COLECTORES ( 3 ) | 24eh | 2025-07-24 15:00 | 2025-07-25 15:00 | 1139 |  |  |  | 12.75d | 0d |
| 1141 | 1.4.2.1.1.7 | LIMPIEZA Y REPARACION | 48eh | 2025-07-25 15:00 | 2025-07-27 15:00 | 1140 |  |  |  | 16.25d | 3.5d |
| 1142 | 1.4.2.1.1.8 | INSTALAR ANDAMIO INT. | 12eh | 2025-07-25 15:00 | 2025-07-26 03:00 | 1140 |  |  |  | 12.75d | 0d |
| 1143 | 1.4.2.1.1.9 | DESMONTAR MALLA COALESCEDORA EN AISI 304 | 12eh | 2025-07-26 03:00 | 2025-07-26 15:00 | 1142 |  |  |  | 12.75d | 0d |
| 1144 | 1.4.2.1.1.10 | LAVAR Y REPARAR MALLA | 72eh | 2025-07-26 15:00 | 2025-07-29 15:00 | 1143 |  |  |  | 12.75d | 0d |
| 1145 | 1.4.2.1.1.11 | LAVAR EQUIPO COMPLETO Y TOMAS | 24eh | 2025-07-26 15:00 | 2025-07-27 15:00 | 1143 |  |  |  | 14.58d | 0d |
| 1146 | 1.4.2.1.1.12 | INSPECCION | 4eh | 2025-07-27 15:00 | 2025-07-27 19:00 | 1145 |  |  |  | 14.58d | 1.83d |
| 1147 | 1.4.2.1.1.13 | MONTAR MALLA COALESCEDORA | 28eh | 2025-07-29 15:00 | 2025-07-30 19:00 | 1144, 1146 |  |  |  | 12.75d | 0d |
| 1148 | 1.4.2.1.1.14 | DESMONTAR ANDAMIO | 8eh | 2025-07-30 19:00 | 2025-07-31 03:00 | 1147 |  |  |  | 12.75d | 0d |
| 1149 | 1.4.2.1.1.15 | MONTAR COLECTORES ( 3 ) | 36eh | 2025-07-31 03:00 | 2025-08-01 15:00 | 1141, 1148 |  |  |  | 12.75d | 0d |
| 1150 | 1.4.2.1.1.16 | INSPECCION | 2eh | 2025-08-01 15:00 | 2025-08-01 17:00 | 1149 |  |  |  | 12.75d | 0d |
| 1151 | 1.4.2.1.1.17 | TAPAR P.H.18"-300# - 2 - | 10eh | 2025-08-01 17:00 | 2025-08-02 03:00 | 1150 |  |  |  | 12.75d | 0d |
| 1152 | 1.4.2.1.1.18 | RETIRAR DISCOS CIEGOS | 12eh | 2025-08-02 03:00 | 2025-08-02 15:00 | 1151 |  |  |  | 12.75d | 0.17d |

Notes:
- 1120: DESMONTAJ3E / MANTENIMIENTO / MONTAJE / PRUEBA Y PEM

| ID | WBS | Task | Duration | Start | Finish | Predecessors | Baseline start | Baseline finish | Baseline duration | Total slack | Free slack |
| --- | --- | --- | --- | --- | --- | --- | --- | --- | --- | --- | --- |
| 1153 | 1.4.2.1.2 | **E-802** | 9.99d | 2025-07-22 23:00 | 2025-08-01 23:00 |  | 2005-05-23 00:00 | 2005-05-30 04:11 | 7.17d | 13.41d |  |
| 1154 | 1.4.2.1.2.1 | COLOCAR BC. | 10eh | 2025-07-22 23:00 | 2025-07-23 09:00 | 1136 | 2005-05-23 00:00 | 2005-05-23 06:00 | 6eh | 13.42d | 0d |
| 1155 | 1.4.2.1.2.2 | DESTAPAR P.H. (2) | 10eh | 2025-07-23 09:00 | 2025-07-23 19:00 | 1136, 1154 | 2005-05-23 06:00 | 2005-05-23 12:00 | 6eh | 13.42d | 0d |
| 1156 | 1.4.2.1.2.3 | VENTILACION | 48eh | 2025-07-23 19:00 | 2025-07-25 19:00 | 1155 | 2005-05-23 12:00 | 2005-05-25 12:00 | 48eh | 13.42d | 0d |
| 1157 | 1.4.2.1.2.4 | MONTAR AND.FONDO | 8eh | 2025-07-25 19:00 | 2025-07-26 03:00 | 1156 | 2005-05-25 12:00 | 2005-05-25 16:00 | 4eh | 21.83d |  |
| 1158 | 1.4.2.1.2.5 | ABRIR PASAJES | 6eh | 2025-07-25 19:00 | 2025-07-26 01:00 | 1156 | 2005-05-25 12:00 | 2005-05-25 18:00 | 6eh | 13.42d | 0d |
| 1159 | 1.4.2.1.2.6 | LIMPIEZA DE PLATOS | 72eh | 2025-07-26 01:00 | 2025-07-29 01:00 | 1158 | 2005-05-25 18:00 | 2005-05-27 10:05 | 40h | 13.42d | 0d |
| 1160 | 1.4.2.1.2.7 | INSPECCION | 3eh | 2025-07-29 01:00 | 2025-07-29 04:00 | 1159 | 2005-05-27 10:05 | 2005-05-27 12:06 | 2h | 13.42d | 0d |
| 1161 | 1.4.2.1.2.8 | REPARACIONES MENORES | 43eh | 2025-07-29 04:00 | 2025-07-30 23:00 | 1160 | 2005-05-27 12:06 | 2005-05-28 18:09 | 30h | 13.42d | 0d |
| 1162 | 1.4.2.1.2.9 | LIMPIEZA FINAL | 12eh | 2025-07-30 23:00 | 2025-07-31 11:00 | 1161 | 2005-05-28 18:09 | 2005-05-29 06:11 | 12h | 13.42d | 0d |
| 1163 | 1.4.2.1.2.10 | CERRAR PASAJES | 8eh | 2025-07-31 11:00 | 2025-07-31 19:00 | 1162 | 2005-05-29 06:11 | 2005-05-29 12:11 | 6eh | 13.42d | 0d |
| 1164 | 1.4.2.1.2.11 | DESMONTAR ANDAMIO FONDO | 4h | 2025-07-31 19:00 | 2025-07-31 23:00 | 1163 | 2005-05-29 12:11 | 2005-05-29 15:11 | 3h | 13.41d | 0d |
| 1165 | 1.4.2.1.2.12 | LIMPIEZA DE FONDO | 6eh | 2025-07-31 23:00 | 2025-08-01 05:00 | 1164 | 2005-05-29 15:11 | 2005-05-29 18:11 | 3h | 13.42d | 0d |
| 1166 | 1.4.2.1.2.13 | TAPAR P.H. | 10eh | 2025-08-01 05:00 | 2025-08-01 15:00 | 1165 | 2005-05-29 18:11 | 2005-05-29 22:11 | 4h | 13.42d | 0d |
| 1167 | 1.4.2.1.2.14 | RETIRAR B.C. | 8eh | 2025-08-01 15:00 | 2025-08-01 23:00 | 1166 | 2005-05-29 22:11 | 2005-05-30 04:11 | 6eh | 13.42d | 0.83d |
| 1168 | 1.4.2.1.3 | **E-803** | 8.7d | 2025-07-23 19:00 | 2025-08-01 12:01 |  | 2005-05-23 06:00 | 2005-05-28 08:00 | 5.08d | 13.87d |  |
| 1169 | 1.4.2.1.3.1 | COLOCAR BC | 8eh | 2025-07-23 19:00 | 2025-07-24 03:00 | 1155 | 2005-05-23 06:00 | 2005-05-23 12:00 | 6eh | 13.88d | 0d |
| 1170 | 1.4.2.1.3.2 | DESTAPAR PH Y DESCARGA | 8eh | 2025-07-24 03:00 | 2025-07-24 11:00 | 1155, 1169 | 2005-05-23 12:00 | 2005-05-23 16:00 | 4eh | 13.88d | 0d |
| 1171 | 1.4.2.1.3.3 | VENTILACION | 36eh | 2025-07-24 11:00 | 2025-07-25 23:00 | 1170 | 2005-05-23 16:00 | 2005-05-25 16:00 | 48eh | 13.88d | 0d |
| 1172 | 1.4.2.1.3.4 | DESCARGAR ANILLOS | 24eh | 2025-07-25 23:00 | 2025-07-26 23:00 | 1171 | 2005-05-25 16:00 | 2005-05-26 04:00 | 12eh | 13.88d | 0d |
| 1173 | 1.4.2.1.3.5 | RETIRAR DISTRIBUIDOR | 6h | 2025-07-26 23:00 | 2025-07-27 05:01 | 1172 | 2005-05-26 04:00 | 2005-05-26 08:00 | 4eh | 13.87d | 0d |
| 1174 | 1.4.2.1.3.6 | LIMPIEZA DISTRIBUIDOR | 12eh | 2025-07-27 05:01 | 2025-07-27 17:01 | 1173 |  |  |  | 13.88d | 0d |
| 1175 | 1.4.2.1.3.7 | MONTAR MASTIL | 6eh | 2025-07-27 17:01 | 2025-07-27 23:01 | 1174 | 2005-05-26 04:00 | 2005-05-26 08:00 | 4eh | 13.88d | 0d |
| 1176 | 1.4.2.1.3.8 | LIMPIEZA ENVOLVENTE | 24eh | 2025-07-27 23:01 | 2025-07-28 23:01 | 1175 | 2005-05-26 08:00 | 2005-05-26 20:00 | 12eh | 13.88d | 0d |
| 1177 | 1.4.2.1.3.9 | INSPECCION | 4eh | 2025-07-28 23:01 | 2025-07-29 03:01 | 1176 | 2005-05-26 20:00 | 2005-05-26 22:00 | 2eh | 13.88d | 0d |
| 1178 | 1.4.2.1.3.10 | REPARAC. DISTRIBUIDOR | 19eh | 2025-07-29 03:01 | 2025-07-29 22:01 | 1177 | 2005-05-26 22:00 | 2005-05-27 06:00 | 8eh | 13.88d | 0d |
| 1179 | 1.4.2.1.3.11 | DESMONTAJE MASTIL | 6eh | 2025-07-29 22:01 | 2025-07-30 04:01 | 1178 | 2005-05-27 06:00 | 2005-05-27 10:00 | 4eh | 13.88d | 0d |
| 1180 | 1.4.2.1.3.12 | LIMPIEZA DE FONDO | 8eh | 2025-07-30 04:01 | 2025-07-30 12:01 | 1179 | 2005-05-29 15:11 | 2005-05-29 18:11 | 3h | 13.88d | 0d |
| 1181 | 1.4.2.1.3.13 | MONTAJE DISTRIBUIDOR | 10eh | 2025-07-30 12:01 | 2025-07-30 22:01 | 1180 | 2005-05-27 10:00 | 2005-05-27 14:00 | 4eh | 13.88d | 0d |
| 1182 | 1.4.2.1.3.14 | TAPAR DESCARGA | 6eh | 2025-07-30 22:01 | 2025-07-31 04:01 | 1181 |  |  |  | 13.88d | 0d |
| 1183 | 1.4.2.1.3.15 | CARGAR ANILLOS | 16eh | 2025-07-31 04:01 | 2025-07-31 20:01 | 1182 | 2005-05-27 14:00 | 2005-05-27 22:00 | 8eh | 13.88d | 0d |
| 1184 | 1.4.2.1.3.16 | TAPAR PH | 8eh | 2025-07-31 20:01 | 2025-08-01 04:01 | 1183 | 2005-05-27 22:00 | 2005-05-28 02:00 | 4eh | 13.88d | 0d |
| 1185 | 1.4.2.1.3.17 | RETIRAR BC | 8eh | 2025-08-01 04:01 | 2025-08-01 12:01 | 1184 | 2005-05-28 02:00 | 2005-05-28 08:00 | 6eh | 13.88d | 1.29d |

Notes:
- 1153: 21550 DE H; 1830 DE DIAM. / 10 PLATOS
- 1161: EN PARO ANTERIOR SE REPARARON PASAJES DEFORMADOS
- 1168: 7000 mm x 600mm / 1.5 m3 de anillos de carbon

| ID | WBS | Task | Duration | Start | Finish | Predecessors | Total slack | Free slack |
| --- | --- | --- | --- | --- | --- | --- | --- | --- |
| 1186 | 1.4.2.2 | **ACUMULADORES** | 13.74d | 2025-07-20 01:00 | 2025-08-02 19:00 |  | 12.58d |  |
| 1187 | 1.4.2.2.1 | **F-804** | 10.24d | 2025-07-20 01:00 | 2025-07-30 07:00 |  | 12.58d |  |
| 1188 | 1.4.2.2.1.1 | COLOCAR BC | 10eh | 2025-07-20 01:00 | 2025-07-20 11:00 | 1131 | 12.58d | 0d |
| 1189 | 1.4.2.2.1.2 | DESTAPAR PH (2) | 8eh | 2025-07-20 11:00 | 2025-07-20 19:00 | 1188 | 12.58d | 0d |
| 1190 | 1.4.2.2.1.3 | VENTILACION | 24eh | 2025-07-20 19:00 | 2025-07-21 19:00 | 1189 | 12.58d | 0d |
| 1191 | 1.4.2.2.1.4 | DESMONTAR TORRETA | 36eh | 2025-07-21 19:00 | 2025-07-23 07:00 | 1190 | 12.58d | 0d |
| 1192 | 1.4.2.2.1.5 | DESCARGAR RELLENO | 24eh | 2025-07-23 07:00 | 2025-07-24 07:00 | 1191 | 12.58d | 0d |
| 1193 | 1.4.2.2.1.6 | LIMPIEZA RELLENO | 24eh | 2025-07-24 07:00 | 2025-07-25 07:00 | 1192 | 16.08d | 0d |
| 1194 | 1.4.2.2.1.7 | CAMBIO DE EQUIPO | 24eh | 2025-07-25 07:00 | 2025-07-26 07:00 | 1193 | 16.08d | 0d |
| 1195 | 1.4.2.2.1.8 | CARGAR TORRETA | 24eh | 2025-07-26 07:00 | 2025-07-27 07:00 | 1194 | 16.08d | 0d |
| 1196 | 1.4.2.2.1.9 | DESARME DE PLATAFORMAS Y LINEAS | 24eh | 2025-07-23 07:00 | 2025-07-24 07:00 | 1191 | 16.75d | 0d |
| 1197 | 1.4.2.2.1.10 | REEMPLAZO DE EQUIPO | 8eh | 2025-07-24 07:00 | 2025-07-24 15:00 | 1196 | 16.75d | 0d |
| 1198 | 1.4.2.2.1.11 | MONTAJE DE LINEAS Y PLATAFORMAS | 48eh | 2025-07-24 15:00 | 2025-07-26 15:00 | 1197 | 16.75d | 0.67d |
| 1199 | 1.4.2.2.1.12 | MONTAR TORRETA | 12eh | 2025-07-27 07:00 | 2025-07-27 19:00 | 1195, 1198 | 16.08d | 0d |
| 1200 | 1.4.2.2.1.13 | CONECTAR INSTRUMENTAL | 36eh | 2025-07-27 19:00 | 2025-07-29 07:00 | 1199 | 16.08d | 0d |
| 1201 | 1.4.2.2.1.14 | RETIRO DE BC | 24eh | 2025-07-29 07:00 | 2025-07-30 07:00 | 1200 | 16.08d | 3.5d |
| 1202 | 1.4.2.2.2 | **F-803** | 5d | 2025-07-24 07:00 | 2025-07-29 07:00 |  | 12.58d |  |
| 1203 | 1.4.2.2.2.1 | CLOCAR BC | 12eh | 2025-07-24 07:00 | 2025-07-24 19:00 | 1192 | 12.58d | 0d |
| 1204 | 1.4.2.2.2.2 | DESBRIDAR BOCA DE LIMPIEZA | 12eh | 2025-07-24 19:00 | 2025-07-25 07:00 | 1203 | 12.58d | 0d |
| 1205 | 1.4.2.2.2.3 | REALIZAR LIMPIEZA | 60eh | 2025-07-25 07:00 | 2025-07-27 19:00 | 1203, 1204 | 12.58d | 0d |
| 1206 | 1.4.2.2.2.4 | INSPECCION | 12eh | 2025-07-27 19:00 | 2025-07-28 07:00 | 1205 | 17.08d | 0d |
| 1207 | 1.4.2.2.2.5 | BRIDAR Y RETIRAR BC | 24eh | 2025-07-28 07:00 | 2025-07-29 07:00 | 1206 | 17.08d | 4.5d |
| 1208 | 1.4.2.2.3 | **F-802** | 12.16d | 2025-07-20 01:00 | 2025-08-01 05:00 |  | 14.16d |  |
| 1209 | 1.4.2.2.3.1 | INSTALAR DISCOS CIEGOS | 24eh | 2025-07-20 01:00 | 2025-07-21 01:00 | 1131 | 14.17d | 0d |
| 1210 | 1.4.2.2.3.2 | DESTAPAR P.H. 18"-300# - 20" 300#(2) | 12eh | 2025-07-21 01:00 | 2025-07-21 13:00 | 1209 | 14.17d | 0d |
| 1211 | 1.4.2.2.3.3 | DESCARGAR ARENA (45 TAMB.) | 60eh | 2025-07-21 13:00 | 2025-07-24 01:00 | 1210 | 14.17d | 0d |
| 1212 | 1.4.2.2.3.4 | VENTILACION | 24eh | 2025-07-24 01:00 | 2025-07-25 01:00 | 1211 | 14.17d | 0d |
| 1213 | 1.4.2.2.3.5 | MONTAR ACCESO | 12eh | 2025-07-25 01:00 | 2025-07-25 13:00 | 1212 | 14.17d | 0d |
| 1214 | 1.4.2.2.3.6 | DESMONTAR DISTRIBUIDOR | 12eh | 2025-07-25 13:00 | 2025-07-26 01:00 | 1213 | 14.17d | 0d |
| 1215 | 1.4.2.2.3.7 | DESMONTAR GRILLA | 12eh | 2025-07-26 01:00 | 2025-07-26 13:00 | 1214 | 14.17d | 0d |
| 1216 | 1.4.2.2.3.8 | LAVAR EQUIPO COMPLETO | 24eh | 2025-07-26 13:00 | 2025-07-27 13:00 | 1215 | 14.17d | 0d |
| 1217 | 1.4.2.2.3.9 | LIMPIEZA DE GRILLA | 12eh | 2025-07-27 13:00 | 2025-07-28 01:00 | 1216 | 14.17d | 0d |
| 1218 | 1.4.2.2.3.10 | INSPECCION DE GRILLA | 6eh | 2025-07-28 01:00 | 2025-07-28 07:00 | 1217 | 14.17d | 0d |
| 1219 | 1.4.2.2.3.11 | REPARACION DE GRILLA | 24eh | 2025-07-28 07:00 | 2025-07-29 07:00 | 1218 | 14.17d | 0d |
| 1220 | 1.4.2.2.3.12 | MONTAR GRILLA | 20eh | 2025-07-29 07:00 | 2025-07-30 03:00 | 1219 | 14.17d | 0d |
| 1221 | 1.4.2.2.3.13 | CARGAR LECHO DE ARENA | 26eh | 2025-07-30 03:00 | 2025-07-31 05:00 | 1220 | 14.17d | 0d |
| 1222 | 1.4.2.2.3.14 | MONTAR DISTRIBUIDOR | 8eh | 2025-07-31 05:00 | 2025-07-31 13:00 | 1221 | 14.17d | 0d |
| 1223 | 1.4.2.2.3.15 | RETIRAR ILUMINACION Y TAPAR P.H. | 8eh | 2025-07-31 13:00 | 2025-07-31 21:00 | 1222 | 14.17d | 0d |
| 1224 | 1.4.2.2.3.16 | RETIRAR DISCOS CIEGOS | 8eh | 2025-07-31 21:00 | 2025-08-01 05:00 | 1223 | 14.17d | 1.58d |

Notes:
- 1187: ACUMULADOR CON TORRETA 16" / ACUMULADOR PH 18" / DIA. 1.050 / LARGO 4400 / LECHO DE ANTRACITA 1 M3 / 2 mallas de 0.8 m2 c/una
- 1202: 8" p.mano / 1500 X 0.6 DE DIAMETRO
- 1208: 2280 de Ø / h 5700 / distribuidores 1 / lecho 8 m3

| ID | WBS | Task | Duration | Start | Finish | Predecessors | Total slack | Free slack |
| --- | --- | --- | --- | --- | --- | --- | --- | --- |
| 1225 | 1.4.2.2.4 | **F-801** | 5.29d | 2025-07-24 01:00 | 2025-07-29 08:00 |  | 17.03d |  |
| 1226 | 1.4.2.2.4.1 | INSTALAR DISCOS CIEGOS | 12eh | 2025-07-24 01:00 | 2025-07-24 13:00 | 1211 | 17.04d | 0d |
| 1227 | 1.4.2.2.4.2 | DESTAPAR P-H. 18"-150# | 6eh | 2025-07-24 13:00 | 2025-07-24 19:00 | 1226 | 17.04d | 0d |
| 1228 | 1.4.2.2.4.3 | VENTILACION | 36eh | 2025-07-24 19:00 | 2025-07-26 07:00 | 1227 | 17.04d | 0d |
| 1229 | 1.4.2.2.4.4 | MONTAR ACCESO | 6eh | 2025-07-26 07:00 | 2025-07-26 13:00 | 1228 | 17.04d | 0d |
| 1230 | 1.4.2.2.4.5 | LIMPIEZA INTERNA COMPLETA | 48eh | 2025-07-26 13:00 | 2025-07-28 13:00 | 1229 | 17.04d | 0d |
| 1231 | 1.4.2.2.4.6 | INSPECCION FINAL | 4eh | 2025-07-28 13:00 | 2025-07-28 17:00 | 1230 | 17.04d | 0d |
| 1232 | 1.4.2.2.4.7 | DESMONTAR ACCESO | 3eh | 2025-07-28 17:00 | 2025-07-28 20:00 | 1231 | 17.04d | 0d |
| 1233 | 1.4.2.2.4.8 | TAPAR PASAHOMBRE 30" | 6eh | 2025-07-28 20:00 | 2025-07-29 02:00 | 1232 | 17.04d | 0d |
| 1234 | 1.4.2.2.4.9 | RETIRAR CIEGOS | 6eh | 2025-07-29 02:00 | 2025-07-29 08:00 | 1233 | 17.04d | 4.46d |
| 1235 | 1.4.2.2.5 | **F806** | 6d | 2025-07-27 19:00 | 2025-08-02 19:00 |  | 12.58d |  |
| 1236 | 1.4.2.2.5.1 | COLOCAR BC | 12eh | 2025-07-27 19:00 | 2025-07-28 07:00 | 1205 | 12.58d | 0d |
| 1237 | 1.4.2.2.5.2 | ABRIR PH | 6eh | 2025-07-28 07:00 | 2025-07-28 13:00 | 1236 | 12.58d | 0d |
| 1238 | 1.4.2.2.5.3 | VENTILACION | 24eh | 2025-07-28 13:00 | 2025-07-29 13:00 | 1237 | 12.58d | 0d |
| 1239 | 1.4.2.2.5.4 | DESARME DE INTERNOS | 16eh | 2025-07-29 13:00 | 2025-07-30 05:00 | 1238 | 12.58d | 0d |
| 1240 | 1.4.2.2.5.5 | MONTAR ACCESO | 8eh | 2025-07-30 05:00 | 2025-07-30 13:00 | 1239 | 12.58d | 0d |
| 1241 | 1.4.2.2.5.6 | LIMPIEZA | 24eh | 2025-07-30 13:00 | 2025-07-31 13:00 | 1240 | 12.58d | 0d |
| 1242 | 1.4.2.2.5.7 | INSPECCION | 8eh | 2025-07-31 13:00 | 2025-07-31 21:00 | 1241 | 12.58d | 0d |
| 1243 | 1.4.2.2.5.8 | RETIRO DE ACCESO | 6eh | 2025-07-31 21:00 | 2025-08-01 03:00 | 1242 | 12.58d | 0d |
| 1244 | 1.4.2.2.5.9 | DESTAPAR TOMAS | 4eh | 2025-08-01 03:00 | 2025-08-01 07:00 | 1243 | 12.58d | 0d |
| 1245 | 1.4.2.2.5.10 | ARMAR INTERNOS | 12eh | 2025-08-01 07:00 | 2025-08-01 19:00 | 1244 | 12.58d | 0d |
| 1246 | 1.4.2.2.5.11 | TAPAR PH | 12eh | 2025-08-01 19:00 | 2025-08-02 07:00 | 1245 | 12.58d | 0d |
| 1247 | 1.4.2.2.5.12 | RETIRO DE BC | 12eh | 2025-08-02 07:00 | 2025-08-02 19:00 | 1246 | 12.58d | 0d |
| 1248 | 1.4.2.3 | **INTERCAMBIADORES** | 3.66d | 2025-07-20 01:00 | 2025-07-23 17:00 |  | 22.65d |  |
| 1249 | 1.4.2.3.1 | **C-801 ( 1 -U -3/4)-BFT** | 3.66d | 2025-07-20 01:00 | 2025-07-23 17:00 |  | 22.65d |  |
| 1250 | 1.4.2.3.1.1 | COLOCAR DISCOS CIEGOS | 8eh | 2025-07-20 01:00 | 2025-07-20 09:00 | 1131 | 22.67d | 0d |
| 1251 | 1.4.2.3.1.2 | DESMONTAR TAPA Y CAB.FIJO | 8eh | 2025-07-20 09:00 | 2025-07-20 17:00 | 1250 | 22.67d | 0d |
| 1252 | 1.4.2.3.1.3 | DESMONTAR HAZ EN U | 6eh | 2025-07-20 17:00 | 2025-07-20 23:00 | 1251 | 22.67d | 0d |
| 1253 | 1.4.2.3.1.4 | LIMPIEZA DE ENV. Y CAB. | 4eh | 2025-07-20 23:00 | 2025-07-21 03:00 | 1252 | 22.67d | 0d |
| 1254 | 1.4.2.3.1.5 | LIMPIEZA DE HAZ | 8eh | 2025-07-21 03:00 | 2025-07-21 11:00 | 1253 | 22.67d | 0d |
| 1255 | 1.4.2.3.1.6 | INSPECCION | 2eh | 2025-07-21 11:00 | 2025-07-21 13:00 | 1254 | 22.67d | 0d |
| 1256 | 1.4.2.3.1.7 | REPARACIÓN DE CABEZALES | 26eh | 2025-07-21 13:00 | 2025-07-22 15:00 | 1255 | 22.67d | 0d |
| 1257 | 1.4.2.3.1.8 | MONTAR HAZ | 8eh | 2025-07-22 15:00 | 2025-07-22 23:00 | 1254, 1256 | 22.67d | 0d |
| 1258 | 1.4.2.3.1.9 | MONTAR CABEZAL FIJO Y TAPA | 4eh | 2025-07-22 23:00 | 2025-07-23 03:00 | 1257 | 22.67d | 0d |
| 1259 | 1.4.2.3.1.10 | PROBAR POR ENVOLV. | 4eh | 2025-07-23 03:00 | 2025-07-23 07:00 | 1258 | 22.67d | 0d |
| 1260 | 1.4.2.3.1.11 | TAPAR CAB.FIJO | 4eh | 2025-07-23 07:00 | 2025-07-23 11:00 | 1259 | 22.67d | 0d |
| 1261 | 1.4.2.3.1.12 | BRIDAR Y RET.B.C. | 6eh | 2025-07-23 11:00 | 2025-07-23 17:00 | 1260 | 22.67d | 10.08d |

Notes:
- 1225: 8000X 2000 H / vacio horizontal

| ID | WBS | Task | Duration | Start | Finish | Predecessors | Total slack |
| --- | --- | --- | --- | --- | --- | --- | --- |
| 1262 | 1.4.2.4 | **VARIOS DE CAÑERIAS** | 8d | 2025-07-20 01:00 | 2025-07-28 01:08 |  | 19.9d |
| 1263 | 1.4.2.4.1 | CAMBIO VALVULAS SOLDADAS | 8d | 2025-07-20 01:00 | 2025-07-28 01:08 | 1131 | 19.9d |
| 1264 | 1.4.2.4.2 | VALVULAS DE SEGURIDAD | 8d | 2025-07-20 01:00 | 2025-07-28 01:08 | 1131 | 19.9d |
| 1265 | 1.5 | PEM | 38eh | 2025-08-02 19:00 | 2025-08-04 09:00 | 1152, 1167, 1185, 1201, 1207, 1224, 1234, 1247, 1261 | 12.58d |
